# SAR Passengers Security Checking - HHR, EWR, NSR (14 stations)

Schedule from Primavera P6, 2026-11-01 to 2029-10-31, data date 2026-11-01, costs in SAR.
Must finish by 2029-10-31

## Calendars

- KSA Sun-Thu 8h (official holidays): Mon-Thu 08:00-12:00, 13:00-17:00; Fri-Sat off; Sun 08:00-12:00, 13:00-17:00. Exceptions (off unless hours are given): 2027-02-22, 2027-03-07 to 2027-03-11, 2027-05-16 to 2027-05-20, 2027-09-23, 2028-02-20 to 2028-02-24, 2028-04-30 to 2028-05-04, 2029-02-11 to 2029-02-15, 2029-02-22, 2029-04-22 to 2029-04-26, 2029-09-23.

## Resources

| Resource | Group | Unit | Rate |
| --- | --- | --- | --- |
| Contract cost (BOQ x payment milestones) | material | SAR |  |
| Progress weight (fair EPC distribution, SAR value) | equipment | SAR | 1 |

## Schedule

| ID | WBS | Activity | Type | Duration | Start | Finish | Predecessors | Total float | Free float | Resources | Cost | EPC phase | Area | Station | Railway | Discipline | Responsibility | Payment milestone | Design stage | Submittal or approval | Priority |
| --- | --- | --- | --- | --- | --- | --- | --- | --- | --- | --- | --- | --- | --- | --- | --- | --- | --- | --- | --- | --- | --- |
|  | PM | **Project Management and Mobilization** |  |  | 2026-11-01 | 2029-10-31 |  |  |  |  |  |  |  |  |  |  |  |  |  |  |  |
|  | MOB | **Mobilization and baseline programme** |  |  | 2026-11-01 | 2027-02-18 |  |  |  |  |  |  |  |  |  |  |  |  |  |  |  |
| PRJ-A1010 |  | Performance security, insurance and key personnel approval |  | 10d | 2026-11-01 | 2026-11-12 | PRJ-M0000 | 42d | 20d | Contract cost (BOQ x payment milestones) [1859999 SAR]; Progress weight (fair EPC distribution, SAR value) [248000 h] | 248,000 | PMG | PRJ | PRJ | ALL | PM | ETECHS | MS1 | - | - | Standard |
| PRJ-A1020 |  | Initial baseline programme (Primavera) covering mobilization and survey |  | 7d | 2026-11-01 | 2026-11-09 | PRJ-M0000 | 30d | 0d | Contract cost (BOQ x payment milestones) [1240000 SAR]; Progress weight (fair EPC distribution, SAR value) [124000 h] | 124,000 | PMG | PRJ | PRJ | ALL | PM | ETECHS | MS1 | - | - | Standard |
| PRJ-A1040 |  | Mobilization: site establishment, offices, personnel and tools |  | 25d | 2026-11-08 | 2026-12-10 | PRJ-M0000 FS+5d | 22d | 0d | Contract cost (BOQ x payment milestones) [5579999 SAR]; Progress weight (fair EPC distribution, SAR value) [496000 h] | 496,000 | PMG | PRJ | PRJ | ALL | PM | ETECHS | MS1 | - | - | Standard |
| PRJ-A1050 |  | Mobilization submittals: QC programme and ITP, HSE, security, procurement and shipping plan |  | 20d | 2026-11-08 | 2026-12-03 | PRJ-M0000 FS+5d | 27d | 5d | Contract cost (BOQ x payment milestones) [3719999 SAR]; Progress weight (fair EPC distribution, SAR value) [372000 h] | 372,000 | PMG | PRJ | PRJ | ALL | PM | ETECHS | MS1 | - | Submittal | Standard |
| PRJ-A1030 |  | SAR review and approval of initial baseline |  | 15d | 2026-11-10 | 2026-11-30 | PRJ-A1020 | 30d | 8d | Contract cost (BOQ x payment milestones); Progress weight (fair EPC distribution, SAR value) [124000 h] | 124,000 | PMG | PRJ | PRJ | ALL | PM | SAR | MS1 | - | Approval | Standard |
| PRJ-A2010 |  | Detailed baseline programme (within 21 days after survey) |  | 15d | 2027-01-10 | 2027-01-28 | NRY-E1010, ERY-E1010 | 22d | 0d | Contract cost (BOQ x payment milestones); Progress weight (fair EPC distribution, SAR value) [186000 h] | 186,000 | PMG | PRJ | PRJ | ALL | PM | ETECHS | - | - | Submittal | Standard |
| PRJ-A2020 |  | SAR review and approval of detailed baseline |  | 15d | 2027-01-31 | 2027-02-18 | PRJ-A2010 | 22d | 0d | Contract cost (BOQ x payment milestones); Progress weight (fair EPC distribution, SAR value) [124000 h] | 124,000 | PMG | PRJ | PRJ | ALL | PM | SAR | - | - | Approval | Standard |
|  | MST | **Contract milestones** |  |  | 2026-11-01 | 2029-10-31 |  |  |  |  |  |  |  |  |  |  |  |  |  |  |  |
| PRJ-M0000 |  | Notice to Proceed - project start (1 Nov 2026, editable) | milestone | 0d | 2026-11-01 | 2026-11-01 |  | 0d |  |  |  | MS | PRJ | PRJ | ALL | PM | SAR | - | - | - | Standard |
| PRJ-M1100 |  | MS1 Mobilization complete (payment milestone 20%) | milestone | 0d | 2026-12-10 | 2026-12-10 | PRJ-A1010, PRJ-A1030, PRJ-A1040, PRJ-A1050 | 22d | 0d |  |  | MS | PRJ | PRJ | ALL | PM | SAR | MS1 | - | - | Standard |
| PRJ-M2100 |  | Detailed baseline programme approved | milestone | 0d | 2027-02-18 | 2027-02-18 | PRJ-A2020 | 22d | 0d |  |  | MS | PRJ | PRJ | ALL | PM | SAR | - | - | - | Standard |
| PRJ-MX99 |  | Contract completion - end of 36-month term | milestone | 0d | 2029-10-31 | 2029-10-31 | PRJ-C1010, PRJ-M0000 FS+750d | 0d |  |  |  | MS | PRJ | PRJ | ALL | PM | SAR | - | - | - | Standard |
|  | CLO | **Closeout** |  |  | 2029-09-17 | 2029-10-01 |  |  |  |  |  |  |  |  |  |  |  |  |  |  |  |
| PRJ-C1010 |  | Contract closeout pack and handover documentation |  | 10d | 2029-09-17 | 2029-10-01 | NRY-T3100, ERY-T3100, HJD-T3100, EDM-T3100, NQS-T3100, EHF-T3100, NMJ-T3100, HMK-T3100, HKA-T3100, HMD-T3100, EAB-T3100, NHL-T3100, NJF-T3100, NQR-T3100 | 22d |  | Contract cost (BOQ x payment milestones); Progress weight (fair EPC distribution, SAR value) [806620 h] | 806,620 | PMG | PRJ | PRJ | ALL | PM | ETECHS | - | - | Submittal | Standard |
|  | ENG | **Engineering** |  |  | 2026-12-13 | 2029-09-02 |  |  |  |  |  |  |  |  |  |  |  |  |  |  |  |
|  | RYD | **Riyadh priority stations (NSR + EWR)** |  |  | 2026-12-13 | 2027-11-29 |  |  |  |  |  |  |  |  |  |  |  |  |  |  |  |
|  | NRY | **Riyadh (Thumamah) (NSR)** |  |  | 2026-12-13 | 2027-11-23 |  |  |  |  |  |  |  |  |  |  |  |  |  |  |  |
| NRY-E1200 |  | MS2 Engineering submittal complete (10%) - Riyadh (Thumamah) | milestone | 0d | 2027-02-04 | 2027-02-04 | NRY-E1090, NRY-E1110 | 479d | 15d |  |  | MS | RYD | NRY | NSR | DOCS | ETECHS | MS2 | - | - | Riyadh priority |
| NRY-E1210 |  | MS3 Engineering approved by SAR (10%) - Riyadh (Thumamah) | milestone | 0d | 2027-02-28 | 2027-02-28 | NRY-E1020, NRY-E1040, NRY-E1060, NRY-E1080, NRY-E1100, NRY-E1120, NRY-E1200 | 464d | 0d |  |  | MS | RYD | NRY | NSR | DOCS | SAR | MS3 | - | - | Riyadh priority |
|  | SRV | **Site survey and as-found verification** |  |  | 2026-12-13 | 2026-12-31 |  |  |  |  |  |  |  |  |  |  |  |  |  |  |  |
|  | SUB | **Submittal** |  |  | 2026-12-13 | 2026-12-24 |  |  |  |  |  |  |  |  |  |  |  |  |  |  |  |
| NRY-E1010 |  | Survey: submittal of site survey and as-found report - Riyadh (Thumamah) |  | 10d | 2026-12-13 | 2026-12-24 | PRJ-M1100 | 32d | 0d | Contract cost (BOQ x payment milestones) [17404 SAR]; Progress weight (fair EPC distribution, SAR value) [21080 h] | 21,080 | ENG | RYD | NRY | NSR | DOCS | ETECHS | MS2 | Survey | Submittal | Riyadh priority |

| ID | WBS | Activity | Duration | Start | Finish | Predecessors | Total float | Free float | Resources | Cost | Area | Station | Railway | Priority | Responsibility | Design stage | Submittal or approval | EPC phase | Discipline | Payment milestone |
| --- | --- | --- | --- | --- | --- | --- | --- | --- | --- | --- | --- | --- | --- | --- | --- | --- | --- | --- | --- | --- |
|  | APR | **Approval** |  | 2026-12-27 | 2026-12-31 |  |  |  |  |  |  |  |  |  |  |  |  |  |  |  |
| NRY-E1020 |  | Survey: SAR approval of survey report - Riyadh (Thumamah) | 5d | 2026-12-27 | 2026-12-31 | NRY-E1010 | 504d | 40d | Contract cost (BOQ x payment milestones) [17404 SAR]; Progress weight (fair EPC distribution, SAR value) [10540 h] | 10,540 | RYD | NRY | NSR | Riyadh priority | SAR | Survey | Approval | ENG | DOCS | MS3 |
|  | CNC | **Concept design** |  | 2026-12-27 | 2027-01-21 |  |  |  |  |  |  |  |  |  |  |  |  |  |  |  |
|  | SUB | **Submittal** |  | 2026-12-27 | 2026-12-31 |  |  |  |  |  |  |  |  |  |  |  |  |  |  |  |
| NRY-E1030 |  | Concept design: submittal - Riyadh (Thumamah) | 5d | 2026-12-27 | 2026-12-31 | NRY-E1010 | 464d | 0d | Contract cost (BOQ x payment milestones) [34808 SAR]; Progress weight (fair EPC distribution, SAR value) [9920 h] | 9,920 | RYD | NRY | NSR | Riyadh priority | ETECHS | Concept | Submittal | ENG | DOCS | MS2 |
|  | APR | **Approval** |  | 2027-01-03 | 2027-01-21 |  |  |  |  |  |  |  |  |  |  |  |  |  |  |  |
| NRY-E1040 |  | Concept design: SAR review and approval - Riyadh (Thumamah) | 15d | 2027-01-03 | 2027-01-21 | NRY-E1030 | 489d | 25d | Contract cost (BOQ x payment milestones) [34808 SAR]; Progress weight (fair EPC distribution, SAR value) [30380 h] | 30,380 | RYD | NRY | NSR | Riyadh priority | SAR | Concept | Approval | ENG | DOCS | MS3 |
|  | PRE | **Preliminary (schematic) design** |  | 2027-01-03 | 2027-02-02 |  |  |  |  |  |  |  |  |  |  |  |  |  |  |  |
|  | SUB | **Submittal** |  | 2027-01-03 | 2027-01-12 |  |  |  |  |  |  |  |  |  |  |  |  |  |  |  |
| NRY-E1050 |  | Preliminary design: submittal - Riyadh (Thumamah) | 8d | 2027-01-03 | 2027-01-12 | NRY-E1030 | 464d | 0d | Contract cost (BOQ x payment milestones) [69616 SAR]; Progress weight (fair EPC distribution, SAR value) [24800 h] | 24,800 | RYD | NRY | NSR | Riyadh priority | ETECHS | Preliminary | Submittal | ENG | DOCS | MS2 |
|  | APR | **Approval** |  | 2027-01-13 | 2027-02-02 |  |  |  |  |  |  |  |  |  |  |  |  |  |  |  |
| NRY-E1060 |  | Preliminary design: SAR review and approval - Riyadh (Thumamah) | 15d | 2027-01-13 | 2027-02-02 | NRY-E1050 | 481d | 17d | Contract cost (BOQ x payment milestones) [69616 SAR]; Progress weight (fair EPC distribution, SAR value) [47120 h] | 47,120 | RYD | NRY | NSR | Riyadh priority | SAR | Preliminary | Approval | ENG | DOCS | MS3 |
|  | DET | **Detailed design** |  | 2027-01-13 | 2027-02-18 |  |  |  |  |  |  |  |  |  |  |  |  |  |  |  |
|  | SUB | **Submittal** |  | 2027-01-13 | 2027-01-28 |  |  |  |  |  |  |  |  |  |  |  |  |  |  |  |
| NRY-E1070 |  | Detailed design: submittal (drawings, BOQ, data sheets) - Riyadh (Thumamah) | 12d | 2027-01-13 | 2027-01-28 | NRY-E1050 | 464d | 0d | Contract cost (BOQ x payment milestones) [139231 SAR]; Progress weight (fair EPC distribution, SAR value) [53320 h] | 53,320 | RYD | NRY | NSR | Riyadh priority | ETECHS | Detailed | Submittal | ENG | DOCS | MS2 |
|  | APR | **Approval** |  | 2027-01-31 | 2027-02-18 |  |  |  |  |  |  |  |  |  |  |  |  |  |  |  |
| NRY-E1080 |  | Detailed design: SAR review and approval - Riyadh (Thumamah) | 15d | 2027-01-31 | 2027-02-18 | NRY-E1070 | 469d | 5d | Contract cost (BOQ x payment milestones) [139231 SAR]; Progress weight (fair EPC distribution, SAR value) [66960 h] | 66,960 | RYD | NRY | NSR | Riyadh priority | SAR | Detailed | Approval | ENG | DOCS | MS3 |
|  | IFC | **IFC and shop drawings** |  | 2027-01-31 | 2027-02-28 |  |  |  |  |  |  |  |  |  |  |  |  |  |  |  |
|  | SUB | **Submittal** |  | 2027-01-31 | 2027-02-04 |  |  |  |  |  |  |  |  |  |  |  |  |  |  |  |
| NRY-E1090 |  | IFC and shop drawings: submittal - Riyadh (Thumamah) | 5d | 2027-01-31 | 2027-02-04 | NRY-E1070 | 464d | 0d | Contract cost (BOQ x payment milestones) [69616 SAR]; Progress weight (fair EPC distribution, SAR value) [17980 h] | 17,980 | RYD | NRY | NSR | Riyadh priority | ETECHS | IFC | Submittal | ENG | DOCS | MS2 |
|  | APR | **Approval** |  | 2027-02-07 | 2027-02-28 |  |  |  |  |  |  |  |  |  |  |  |  |  |  |  |
| NRY-E1100 |  | IFC and shop drawings: SAR approval and release - Riyadh (Thumamah) | 15d | 2027-02-07 | 2027-02-28 | NRY-E1090 | 464d | 0d | Contract cost (BOQ x payment milestones) [69616 SAR]; Progress weight (fair EPC distribution, SAR value) [53940 h] | 53,940 | RYD | NRY | NSR | Riyadh priority | SAR | IFC | Approval | ENG | DOCS | MS3 |
|  | HCS | **HCIS documentation (Stage 3 and 4)** |  | 2027-01-20 | 2027-02-28 |  |  |  |  |  |  |  |  |  |  |  |  |  |  |  |
|  | SUB | **Submittal** |  | 2027-01-20 | 2027-02-04 |  |  |  |  |  |  |  |  |  |  |  |  |  |  |  |
| NRY-E1110 |  | HCIS Stage 3 and 4 documents: preparation - Riyadh (Thumamah) | 12d | 2027-01-20 | 2027-02-04 | NRY-E1050 FS+5d, NRY-E1090 FF | 464d | 0d | Contract cost (BOQ x payment milestones) [17404 SAR]; Progress weight (fair EPC distribution, SAR value) [10540 h] | 10,540 | RYD | NRY | NSR | Riyadh priority | ETECHS | HCIS | Submittal | ENG | DOCS | MS2 |

| ID | WBS | Activity | Type | Duration | Start | Finish | Predecessors | Total float | Free float | Resources | Cost | Area | Station | Railway | Priority | Responsibility | Design stage | Submittal or approval | EPC phase | Discipline | Payment milestone |
| --- | --- | --- | --- | --- | --- | --- | --- | --- | --- | --- | --- | --- | --- | --- | --- | --- | --- | --- | --- | --- | --- |
|  | APR | **Approval** |  |  | 2027-02-07 | 2027-02-28 |  |  |  |  |  |  |  |  |  |  |  |  |  |  |  |
| NRY-E1120 |  | HCIS Stage 3 and 4 documents: SAR final review and HCIS submission - Riyadh (Thumamah) |  | 15d | 2027-02-07 | 2027-02-28 | NRY-E1110 | 464d | 0d | Contract cost (BOQ x payment milestones) [17404 SAR]; Progress weight (fair EPC distribution, SAR value) [13640 h] | 13,640 | RYD | NRY | NSR | Riyadh priority | SAR/HCIS | HCIS | Approval | ENG | DOCS | MS3 |
|  | ASB | **As-built and O&M documentation** |  |  | 2027-09-21 | 2027-11-23 |  |  |  |  |  |  |  |  |  |  |  |  |  |  |  |
|  | SUB | **Submittal** |  |  | 2027-09-21 | 2027-11-02 |  |  |  |  |  |  |  |  |  |  |  |  |  |  |  |
| NRY-E1130 |  | As-built and O&M documentation: submittal - Riyadh (Thumamah) |  | 30d | 2027-09-21 | 2027-11-02 | NRY-C2100 | 464d | 0d | Contract cost (BOQ x payment milestones) [52212 SAR]; Progress weight (fair EPC distribution, SAR value) [26660 h] | 26,660 | RYD | NRY | NSR | Riyadh priority | ETECHS | As-built | Submittal | ENG | DOCS | MS7 |
|  | APR | **Approval** |  |  | 2027-11-03 | 2027-11-23 |  |  |  |  |  |  |  |  |  |  |  |  |  |  |  |
| NRY-E1140 |  | As-built and O&M documentation: SAR review and approval - Riyadh (Thumamah) |  | 15d | 2027-11-03 | 2027-11-23 | NRY-E1130 | 464d | 0d | Contract cost (BOQ x payment milestones) [17404 SAR]; Progress weight (fair EPC distribution, SAR value) [13640 h] | 13,640 | RYD | NRY | NSR | Riyadh priority | SAR | As-built | Approval | ENG | DOCS | MS7 |
|  | ERY | **Riyadh (Malaz) (EWR)** |  |  | 2026-12-27 | 2027-11-29 |  |  |  |  |  |  |  |  |  |  |  |  |  |  |  |
| ERY-E1200 |  | MS2 Engineering submittal complete (10%) - Riyadh (Malaz) | milestone | 0d | 2027-02-18 | 2027-02-18 | ERY-E1090, ERY-E1110 | 475d | 15d |  |  | RYD | ERY | EWR | Riyadh priority | ETECHS | - | - | MS | DOCS | MS2 |
| ERY-E1210 |  | MS3 Engineering approved by SAR (10%) - Riyadh (Malaz) | milestone | 0d | 2027-03-21 | 2027-03-21 | ERY-E1020, ERY-E1040, ERY-E1060, ERY-E1080, ERY-E1100, ERY-E1120, ERY-E1200 | 460d | 0d |  |  | RYD | ERY | EWR | Riyadh priority | SAR | - | - | MS | DOCS | MS3 |
|  | SRV | **Site survey and as-found verification** |  |  | 2026-12-27 | 2027-01-14 |  |  |  |  |  |  |  |  |  |  |  |  |  |  |  |
|  | SUB | **Submittal** |  |  | 2026-12-27 | 2027-01-07 |  |  |  |  |  |  |  |  |  |  |  |  |  |  |  |
| ERY-E1010 |  | Survey: submittal of site survey and as-found report - Riyadh (Malaz) |  | 10d | 2026-12-27 | 2027-01-07 | PRJ-M1100 FS+10d | 22d | 0d | Contract cost (BOQ x payment milestones) [15458 SAR]; Progress weight (fair EPC distribution, SAR value) [19220 h] | 19,220 | RYD | ERY | EWR | Riyadh priority | ETECHS | Survey | Submittal | ENG | DOCS | MS2 |
|  | APR | **Approval** |  |  | 2027-01-10 | 2027-01-14 |  |  |  |  |  |  |  |  |  |  |  |  |  |  |  |
| ERY-E1020 |  | Survey: SAR approval of survey report - Riyadh (Malaz) |  | 5d | 2027-01-10 | 2027-01-14 | ERY-E1010 | 500d | 40d | Contract cost (BOQ x payment milestones) [15458 SAR]; Progress weight (fair EPC distribution, SAR value) [9300 h] | 9,300 | RYD | ERY | EWR | Riyadh priority | SAR | Survey | Approval | ENG | DOCS | MS3 |
|  | CNC | **Concept design** |  |  | 2027-01-10 | 2027-02-04 |  |  |  |  |  |  |  |  |  |  |  |  |  |  |  |
|  | SUB | **Submittal** |  |  | 2027-01-10 | 2027-01-14 |  |  |  |  |  |  |  |  |  |  |  |  |  |  |  |
| ERY-E1030 |  | Concept design: submittal - Riyadh (Malaz) |  | 5d | 2027-01-10 | 2027-01-14 | ERY-E1010 | 460d | 0d | Contract cost (BOQ x payment milestones) [30915 SAR]; Progress weight (fair EPC distribution, SAR value) [8680 h] | 8,680 | RYD | ERY | EWR | Riyadh priority | ETECHS | Concept | Submittal | ENG | DOCS | MS2 |
|  | APR | **Approval** |  |  | 2027-01-17 | 2027-02-04 |  |  |  |  |  |  |  |  |  |  |  |  |  |  |  |
| ERY-E1040 |  | Concept design: SAR review and approval - Riyadh (Malaz) |  | 15d | 2027-01-17 | 2027-02-04 | ERY-E1030 | 485d | 25d | Contract cost (BOQ x payment milestones) [30915 SAR]; Progress weight (fair EPC distribution, SAR value) [26660 h] | 26,660 | RYD | ERY | EWR | Riyadh priority | SAR | Concept | Approval | ENG | DOCS | MS3 |
|  | PRE | **Preliminary (schematic) design** |  |  | 2027-01-17 | 2027-02-16 |  |  |  |  |  |  |  |  |  |  |  |  |  |  |  |
|  | SUB | **Submittal** |  |  | 2027-01-17 | 2027-01-26 |  |  |  |  |  |  |  |  |  |  |  |  |  |  |  |
| ERY-E1050 |  | Preliminary design: submittal - Riyadh (Malaz) |  | 8d | 2027-01-17 | 2027-01-26 | ERY-E1030 | 460d | 0d | Contract cost (BOQ x payment milestones) [61830 SAR]; Progress weight (fair EPC distribution, SAR value) [22320 h] | 22,320 | RYD | ERY | EWR | Riyadh priority | ETECHS | Preliminary | Submittal | ENG | DOCS | MS2 |
|  | APR | **Approval** |  |  | 2027-01-27 | 2027-02-16 |  |  |  |  |  |  |  |  |  |  |  |  |  |  |  |
| ERY-E1060 |  | Preliminary design: SAR review and approval - Riyadh (Malaz) |  | 15d | 2027-01-27 | 2027-02-16 | ERY-E1050 | 477d | 17d | Contract cost (BOQ x payment milestones) [61830 SAR]; Progress weight (fair EPC distribution, SAR value) [41540 h] | 41,540 | RYD | ERY | EWR | Riyadh priority | SAR | Preliminary | Approval | ENG | DOCS | MS3 |

| ID | WBS | Activity | Type | Duration | Start | Finish | Predecessors | Total float | Free float | Resources | Cost | Area | Station | Railway | Priority | Responsibility | Design stage | Submittal or approval | EPC phase | Discipline | Payment milestone |
| --- | --- | --- | --- | --- | --- | --- | --- | --- | --- | --- | --- | --- | --- | --- | --- | --- | --- | --- | --- | --- | --- |
|  | DET | **Detailed design** |  |  | 2027-01-27 | 2027-03-14 |  |  |  |  |  |  |  |  |  |  |  |  |  |  |  |
|  | SUB | **Submittal** |  |  | 2027-01-27 | 2027-02-11 |  |  |  |  |  |  |  |  |  |  |  |  |  |  |  |
| ERY-E1070 |  | Detailed design: submittal (drawings, BOQ, data sheets) - Riyadh (Malaz) |  | 12d | 2027-01-27 | 2027-02-11 | ERY-E1050 | 460d | 0d | Contract cost (BOQ x payment milestones) [123661 SAR]; Progress weight (fair EPC distribution, SAR value) [47740 h] | 47,740 | RYD | ERY | EWR | Riyadh priority | ETECHS | Detailed | Submittal | ENG | DOCS | MS2 |
|  | APR | **Approval** |  |  | 2027-02-14 | 2027-03-14 |  |  |  |  |  |  |  |  |  |  |  |  |  |  |  |
| ERY-E1080 |  | Detailed design: SAR review and approval - Riyadh (Malaz) |  | 15d | 2027-02-14 | 2027-03-14 | ERY-E1070 | 465d | 5d | Contract cost (BOQ x payment milestones) [123661 SAR]; Progress weight (fair EPC distribution, SAR value) [59520 h] | 59,520 | RYD | ERY | EWR | Riyadh priority | SAR | Detailed | Approval | ENG | DOCS | MS3 |
|  | IFC | **IFC and shop drawings** |  |  | 2027-02-14 | 2027-03-21 |  |  |  |  |  |  |  |  |  |  |  |  |  |  |  |
|  | SUB | **Submittal** |  |  | 2027-02-14 | 2027-02-18 |  |  |  |  |  |  |  |  |  |  |  |  |  |  |  |
| ERY-E1090 |  | IFC and shop drawings: submittal - Riyadh (Malaz) |  | 5d | 2027-02-14 | 2027-02-18 | ERY-E1070 | 460d | 0d | Contract cost (BOQ x payment milestones) [61830 SAR]; Progress weight (fair EPC distribution, SAR value) [16120 h] | 16,120 | RYD | ERY | EWR | Riyadh priority | ETECHS | IFC | Submittal | ENG | DOCS | MS2 |
|  | APR | **Approval** |  |  | 2027-02-21 | 2027-03-21 |  |  |  |  |  |  |  |  |  |  |  |  |  |  |  |
| ERY-E1100 |  | IFC and shop drawings: SAR approval and release - Riyadh (Malaz) |  | 15d | 2027-02-21 | 2027-03-21 | ERY-E1090 | 460d | 0d | Contract cost (BOQ x payment milestones) [61830 SAR]; Progress weight (fair EPC distribution, SAR value) [48360 h] | 48,360 | RYD | ERY | EWR | Riyadh priority | SAR | IFC | Approval | ENG | DOCS | MS3 |
|  | HCS | **HCIS documentation (Stage 3 and 4)** |  |  | 2027-02-03 | 2027-03-21 |  |  |  |  |  |  |  |  |  |  |  |  |  |  |  |
|  | SUB | **Submittal** |  |  | 2027-02-03 | 2027-02-18 |  |  |  |  |  |  |  |  |  |  |  |  |  |  |  |
| ERY-E1110 |  | HCIS Stage 3 and 4 documents: preparation - Riyadh (Malaz) |  | 12d | 2027-02-03 | 2027-02-18 | ERY-E1050 FS+5d, ERY-E1090 FF | 460d | 0d | Contract cost (BOQ x payment milestones) [15458 SAR]; Progress weight (fair EPC distribution, SAR value) [9300 h] | 9,300 | RYD | ERY | EWR | Riyadh priority | ETECHS | HCIS | Submittal | ENG | DOCS | MS2 |
|  | APR | **Approval** |  |  | 2027-02-21 | 2027-03-21 |  |  |  |  |  |  |  |  |  |  |  |  |  |  |  |
| ERY-E1120 |  | HCIS Stage 3 and 4 documents: SAR final review and HCIS submission - Riyadh (Malaz) |  | 15d | 2027-02-21 | 2027-03-21 | ERY-E1110 | 460d | 0d | Contract cost (BOQ x payment milestones) [15458 SAR]; Progress weight (fair EPC distribution, SAR value) [11780 h] | 11,780 | RYD | ERY | EWR | Riyadh priority | SAR/HCIS | HCIS | Approval | ENG | DOCS | MS3 |
|  | ASB | **As-built and O&M documentation** |  |  | 2027-09-28 | 2027-11-29 |  |  |  |  |  |  |  |  |  |  |  |  |  |  |  |
|  | SUB | **Submittal** |  |  | 2027-09-28 | 2027-11-08 |  |  |  |  |  |  |  |  |  |  |  |  |  |  |  |
| ERY-E1130 |  | As-built and O&M documentation: submittal - Riyadh (Malaz) |  | 30d | 2027-09-28 | 2027-11-08 | ERY-C2100 | 460d | 0d | Contract cost (BOQ x payment milestones) [46373 SAR]; Progress weight (fair EPC distribution, SAR value) [23560 h] | 23,560 | RYD | ERY | EWR | Riyadh priority | ETECHS | As-built | Submittal | ENG | DOCS | MS7 |
|  | APR | **Approval** |  |  | 2027-11-09 | 2027-11-29 |  |  |  |  |  |  |  |  |  |  |  |  |  |  |  |
| ERY-E1140 |  | As-built and O&M documentation: SAR review and approval - Riyadh (Malaz) |  | 15d | 2027-11-09 | 2027-11-29 | ERY-E1130 | 460d | 0d | Contract cost (BOQ x payment milestones) [15458 SAR]; Progress weight (fair EPC distribution, SAR value) [11780 h] | 11,780 | RYD | ERY | EWR | Riyadh priority | SAR | As-built | Approval | ENG | DOCS | MS7 |
|  | NSR | **NSR - North South Railway** |  |  | 2027-08-19 | 2029-09-02 |  |  |  |  |  |  |  |  |  |  |  |  |  |  |  |
|  | NQS | **Al Qassim (NSR)** |  |  | 2027-08-19 | 2028-08-13 |  |  |  |  |  |  |  |  |  |  |  |  |  |  |  |
| NQS-E1200 |  | MS2 Engineering submittal complete (10%) - Al Qassim | milestone | 0d | 2027-10-14 | 2027-10-14 | NQS-E1090, NQS-E1110 | 301d | 15d |  |  | NSR | NQS | NSR | Standard | ETECHS | - | - | MS | DOCS | MS2 |
| NQS-E1210 |  | MS3 Engineering approved by SAR (10%) - Al Qassim | milestone | 0d | 2027-11-04 | 2027-11-04 | NQS-E1020, NQS-E1040, NQS-E1060, NQS-E1080, NQS-E1100, NQS-E1120, NQS-E1200 | 286d | 0d |  |  | NSR | NQS | NSR | Standard | SAR | - | - | MS | DOCS | MS3 |

| ID | WBS | Activity | Duration | Start | Finish | Predecessors | Total float | Free float | Resources | Cost | Area | Station | Railway | Priority | Responsibility | Design stage | Submittal or approval | EPC phase | Discipline | Payment milestone |
| --- | --- | --- | --- | --- | --- | --- | --- | --- | --- | --- | --- | --- | --- | --- | --- | --- | --- | --- | --- | --- |
|  | SRV | **Site survey and as-found verification** |  | 2027-08-19 | 2027-09-08 |  |  |  |  |  |  |  |  |  |  |  |  |  |  |  |
|  | SUB | **Submittal** |  | 2027-08-19 | 2027-09-01 |  |  |  |  |  |  |  |  |  |  |  |  |  |  |  |
| NQS-E1010 |  | Survey: submittal of site survey and as-found report - Al Qassim | 10d | 2027-08-19 | 2027-09-01 | PRJ-M2100 FS+118d | 286d | 0d | Contract cost (BOQ x payment milestones) [16995 SAR]; Progress weight (fair EPC distribution, SAR value) [21080 h] | 21,080 | NSR | NQS | NSR | Standard | ETECHS | Survey | Submittal | ENG | DOCS | MS2 |
|  | APR | **Approval** |  | 2027-09-02 | 2027-09-08 |  |  |  |  |  |  |  |  |  |  |  |  |  |  |  |
| NQS-E1020 |  | Survey: SAR approval of survey report - Al Qassim | 5d | 2027-09-02 | 2027-09-08 | NQS-E1010 | 326d | 40d | Contract cost (BOQ x payment milestones) [16995 SAR]; Progress weight (fair EPC distribution, SAR value) [10540 h] | 10,540 | NSR | NQS | NSR | Standard | SAR | Survey | Approval | ENG | DOCS | MS3 |
|  | CNC | **Concept design** |  | 2027-09-02 | 2027-09-30 |  |  |  |  |  |  |  |  |  |  |  |  |  |  |  |
|  | SUB | **Submittal** |  | 2027-09-02 | 2027-09-08 |  |  |  |  |  |  |  |  |  |  |  |  |  |  |  |
| NQS-E1030 |  | Concept design: submittal - Al Qassim | 5d | 2027-09-02 | 2027-09-08 | NQS-E1010 | 286d | 0d | Contract cost (BOQ x payment milestones) [33989 SAR]; Progress weight (fair EPC distribution, SAR value) [9920 h] | 9,920 | NSR | NQS | NSR | Standard | ETECHS | Concept | Submittal | ENG | DOCS | MS2 |
|  | APR | **Approval** |  | 2027-09-09 | 2027-09-30 |  |  |  |  |  |  |  |  |  |  |  |  |  |  |  |
| NQS-E1040 |  | Concept design: SAR review and approval - Al Qassim | 15d | 2027-09-09 | 2027-09-30 | NQS-E1030 | 311d | 25d | Contract cost (BOQ x payment milestones) [33989 SAR]; Progress weight (fair EPC distribution, SAR value) [29140 h] | 29,140 | NSR | NQS | NSR | Standard | SAR | Concept | Approval | ENG | DOCS | MS3 |
|  | PRE | **Preliminary (schematic) design** |  | 2027-09-09 | 2027-10-12 |  |  |  |  |  |  |  |  |  |  |  |  |  |  |  |
|  | SUB | **Submittal** |  | 2027-09-09 | 2027-09-20 |  |  |  |  |  |  |  |  |  |  |  |  |  |  |  |
| NQS-E1050 |  | Preliminary design: submittal - Al Qassim | 8d | 2027-09-09 | 2027-09-20 | NQS-E1030 | 286d | 0d | Contract cost (BOQ x payment milestones) [67978 SAR]; Progress weight (fair EPC distribution, SAR value) [24800 h] | 24,800 | NSR | NQS | NSR | Standard | ETECHS | Preliminary | Submittal | ENG | DOCS | MS2 |
|  | APR | **Approval** |  | 2027-09-21 | 2027-10-12 |  |  |  |  |  |  |  |  |  |  |  |  |  |  |  |
| NQS-E1060 |  | Preliminary design: SAR review and approval - Al Qassim | 15d | 2027-09-21 | 2027-10-12 | NQS-E1050 | 303d | 17d | Contract cost (BOQ x payment milestones) [67978 SAR]; Progress weight (fair EPC distribution, SAR value) [45880 h] | 45,880 | NSR | NQS | NSR | Standard | SAR | Preliminary | Approval | ENG | DOCS | MS3 |
|  | DET | **Detailed design** |  | 2027-09-21 | 2027-10-28 |  |  |  |  |  |  |  |  |  |  |  |  |  |  |  |
|  | SUB | **Submittal** |  | 2027-09-21 | 2027-10-07 |  |  |  |  |  |  |  |  |  |  |  |  |  |  |  |
| NQS-E1070 |  | Detailed design: submittal (drawings, BOQ, data sheets) - Al Qassim | 12d | 2027-09-21 | 2027-10-07 | NQS-E1050 | 286d | 0d | Contract cost (BOQ x payment milestones) [135957 SAR]; Progress weight (fair EPC distribution, SAR value) [52080 h] | 52,080 | NSR | NQS | NSR | Standard | ETECHS | Detailed | Submittal | ENG | DOCS | MS2 |
|  | APR | **Approval** |  | 2027-10-10 | 2027-10-28 |  |  |  |  |  |  |  |  |  |  |  |  |  |  |  |
| NQS-E1080 |  | Detailed design: SAR review and approval - Al Qassim | 15d | 2027-10-10 | 2027-10-28 | NQS-E1070 | 291d | 5d | Contract cost (BOQ x payment milestones) [135957 SAR]; Progress weight (fair EPC distribution, SAR value) [65100 h] | 65,100 | NSR | NQS | NSR | Standard | SAR | Detailed | Approval | ENG | DOCS | MS3 |
|  | IFC | **IFC and shop drawings** |  | 2027-10-10 | 2027-11-04 |  |  |  |  |  |  |  |  |  |  |  |  |  |  |  |
|  | SUB | **Submittal** |  | 2027-10-10 | 2027-10-14 |  |  |  |  |  |  |  |  |  |  |  |  |  |  |  |
| NQS-E1090 |  | IFC and shop drawings: submittal - Al Qassim | 5d | 2027-10-10 | 2027-10-14 | NQS-E1070 | 286d | 0d | Contract cost (BOQ x payment milestones) [67978 SAR]; Progress weight (fair EPC distribution, SAR value) [17360 h] | 17,360 | NSR | NQS | NSR | Standard | ETECHS | IFC | Submittal | ENG | DOCS | MS2 |
|  | APR | **Approval** |  | 2027-10-17 | 2027-11-04 |  |  |  |  |  |  |  |  |  |  |  |  |  |  |  |
| NQS-E1100 |  | IFC and shop drawings: SAR approval and release - Al Qassim | 15d | 2027-10-17 | 2027-11-04 | NQS-E1090 | 286d | 0d | Contract cost (BOQ x payment milestones) [67978 SAR]; Progress weight (fair EPC distribution, SAR value) [52700 h] | 52,700 | NSR | NQS | NSR | Standard | SAR | IFC | Approval | ENG | DOCS | MS3 |

| ID | WBS | Activity | Type | Duration | Start | Finish | Predecessors | Total float | Free float | Resources | Cost | Area | Station | Railway | Priority | Responsibility | Design stage | Submittal or approval | EPC phase | Discipline | Payment milestone |
| --- | --- | --- | --- | --- | --- | --- | --- | --- | --- | --- | --- | --- | --- | --- | --- | --- | --- | --- | --- | --- | --- |
|  | HCS | **HCIS documentation (Stage 3 and 4)** |  |  | 2027-09-29 | 2027-11-04 |  |  |  |  |  |  |  |  |  |  |  |  |  |  |  |
|  | SUB | **Submittal** |  |  | 2027-09-29 | 2027-10-14 |  |  |  |  |  |  |  |  |  |  |  |  |  |  |  |
| NQS-E1110 |  | HCIS Stage 3 and 4 documents: preparation - Al Qassim |  | 12d | 2027-09-29 | 2027-10-14 | NQS-E1050 FS+5d, NQS-E1090 FF | 286d | 0d | Contract cost (BOQ x payment milestones) [16995 SAR]; Progress weight (fair EPC distribution, SAR value) [10540 h] | 10,540 | NSR | NQS | NSR | Standard | ETECHS | HCIS | Submittal | ENG | DOCS | MS2 |
|  | APR | **Approval** |  |  | 2027-10-17 | 2027-11-04 |  |  |  |  |  |  |  |  |  |  |  |  |  |  |  |
| NQS-E1120 |  | HCIS Stage 3 and 4 documents: SAR final review and HCIS submission - Al Qassim |  | 15d | 2027-10-17 | 2027-11-04 | NQS-E1110 | 286d | 0d | Contract cost (BOQ x payment milestones) [16995 SAR]; Progress weight (fair EPC distribution, SAR value) [13020 h] | 13,020 | NSR | NQS | NSR | Standard | SAR/HCIS | HCIS | Approval | ENG | DOCS | MS3 |
|  | ASB | **As-built and O&M documentation** |  |  | 2028-06-12 | 2028-08-13 |  |  |  |  |  |  |  |  |  |  |  |  |  |  |  |
|  | SUB | **Submittal** |  |  | 2028-06-12 | 2028-07-23 |  |  |  |  |  |  |  |  |  |  |  |  |  |  |  |
| NQS-E1130 |  | As-built and O&M documentation: submittal - Al Qassim |  | 30d | 2028-06-12 | 2028-07-23 | NQS-C2100 | 286d | 0d | Contract cost (BOQ x payment milestones) [50984 SAR]; Progress weight (fair EPC distribution, SAR value) [26040 h] | 26,040 | NSR | NQS | NSR | Standard | ETECHS | As-built | Submittal | ENG | DOCS | MS7 |
|  | APR | **Approval** |  |  | 2028-07-24 | 2028-08-13 |  |  |  |  |  |  |  |  |  |  |  |  |  |  |  |
| NQS-E1140 |  | As-built and O&M documentation: SAR review and approval - Al Qassim |  | 15d | 2028-07-24 | 2028-08-13 | NQS-E1130 | 286d | 0d | Contract cost (BOQ x payment milestones) [16995 SAR]; Progress weight (fair EPC distribution, SAR value) [13020 h] | 13,020 | NSR | NQS | NSR | Standard | SAR | As-built | Approval | ENG | DOCS | MS7 |
|  | NMJ | **Al Majma'ah (NSR)** |  |  | 2027-10-10 | 2028-10-01 |  |  |  |  |  |  |  |  |  |  |  |  |  |  |  |
| NMJ-E1200 |  | MS2 Engineering submittal complete (10%) - Al Majma'ah | milestone | 0d | 2027-12-02 | 2027-12-02 | NMJ-E1090, NMJ-E1110 | 266d | 15d |  |  | NSR | NMJ | NSR | Standard | ETECHS | - | - | MS | DOCS | MS2 |
| NMJ-E1210 |  | MS3 Engineering approved by SAR (10%) - Al Majma'ah | milestone | 0d | 2027-12-23 | 2027-12-23 | NMJ-E1020, NMJ-E1040, NMJ-E1060, NMJ-E1080, NMJ-E1100, NMJ-E1120, NMJ-E1200 | 251d | 0d |  |  | NSR | NMJ | NSR | Standard | SAR | - | - | MS | DOCS | MS3 |
|  | SRV | **Site survey and as-found verification** |  |  | 2027-10-10 | 2027-10-28 |  |  |  |  |  |  |  |  |  |  |  |  |  |  |  |
|  | SUB | **Submittal** |  |  | 2027-10-10 | 2027-10-21 |  |  |  |  |  |  |  |  |  |  |  |  |  |  |  |
| NMJ-E1010 |  | Survey: submittal of site survey and as-found report - Al Majma'ah |  | 10d | 2027-10-10 | 2027-10-21 | PRJ-M2100 FS+153d | 251d | 0d | Contract cost (BOQ x payment milestones) [16995 SAR]; Progress weight (fair EPC distribution, SAR value) [21080 h] | 21,080 | NSR | NMJ | NSR | Standard | ETECHS | Survey | Submittal | ENG | DOCS | MS2 |
|  | APR | **Approval** |  |  | 2027-10-24 | 2027-10-28 |  |  |  |  |  |  |  |  |  |  |  |  |  |  |  |
| NMJ-E1020 |  | Survey: SAR approval of survey report - Al Majma'ah |  | 5d | 2027-10-24 | 2027-10-28 | NMJ-E1010 | 291d | 40d | Contract cost (BOQ x payment milestones) [16995 SAR]; Progress weight (fair EPC distribution, SAR value) [10540 h] | 10,540 | NSR | NMJ | NSR | Standard | SAR | Survey | Approval | ENG | DOCS | MS3 |
|  | CNC | **Concept design** |  |  | 2027-10-24 | 2027-11-18 |  |  |  |  |  |  |  |  |  |  |  |  |  |  |  |
|  | SUB | **Submittal** |  |  | 2027-10-24 | 2027-10-28 |  |  |  |  |  |  |  |  |  |  |  |  |  |  |  |
| NMJ-E1030 |  | Concept design: submittal - Al Majma'ah |  | 5d | 2027-10-24 | 2027-10-28 | NMJ-E1010 | 251d | 0d | Contract cost (BOQ x payment milestones) [33989 SAR]; Progress weight (fair EPC distribution, SAR value) [9920 h] | 9,920 | NSR | NMJ | NSR | Standard | ETECHS | Concept | Submittal | ENG | DOCS | MS2 |
|  | APR | **Approval** |  |  | 2027-10-31 | 2027-11-18 |  |  |  |  |  |  |  |  |  |  |  |  |  |  |  |
| NMJ-E1040 |  | Concept design: SAR review and approval - Al Majma'ah |  | 15d | 2027-10-31 | 2027-11-18 | NMJ-E1030 | 276d | 25d | Contract cost (BOQ x payment milestones) [33989 SAR]; Progress weight (fair EPC distribution, SAR value) [29140 h] | 29,140 | NSR | NMJ | NSR | Standard | SAR | Concept | Approval | ENG | DOCS | MS3 |
|  | PRE | **Preliminary (schematic) design** |  |  | 2027-10-31 | 2027-11-30 |  |  |  |  |  |  |  |  |  |  |  |  |  |  |  |
|  | SUB | **Submittal** |  |  | 2027-10-31 | 2027-11-09 |  |  |  |  |  |  |  |  |  |  |  |  |  |  |  |
| NMJ-E1050 |  | Preliminary design: submittal - Al Majma'ah |  | 8d | 2027-10-31 | 2027-11-09 | NMJ-E1030 | 251d | 0d | Contract cost (BOQ x payment milestones) [67978 SAR]; Progress weight (fair EPC distribution, SAR value) [24800 h] | 24,800 | NSR | NMJ | NSR | Standard | ETECHS | Preliminary | Submittal | ENG | DOCS | MS2 |

| ID | WBS | Activity | Type | Duration | Start | Finish | Predecessors | Total float | Free float | Resources | Cost | Area | Station | Railway | Priority | Responsibility | Design stage | Submittal or approval | EPC phase | Discipline | Payment milestone |
| --- | --- | --- | --- | --- | --- | --- | --- | --- | --- | --- | --- | --- | --- | --- | --- | --- | --- | --- | --- | --- | --- |
|  | APR | **Approval** |  |  | 2027-11-10 | 2027-11-30 |  |  |  |  |  |  |  |  |  |  |  |  |  |  |  |
| NMJ-E1060 |  | Preliminary design: SAR review and approval - Al Majma'ah |  | 15d | 2027-11-10 | 2027-11-30 | NMJ-E1050 | 268d | 17d | Contract cost (BOQ x payment milestones) [67978 SAR]; Progress weight (fair EPC distribution, SAR value) [45880 h] | 45,880 | NSR | NMJ | NSR | Standard | SAR | Preliminary | Approval | ENG | DOCS | MS3 |
|  | DET | **Detailed design** |  |  | 2027-11-10 | 2027-12-16 |  |  |  |  |  |  |  |  |  |  |  |  |  |  |  |
|  | SUB | **Submittal** |  |  | 2027-11-10 | 2027-11-25 |  |  |  |  |  |  |  |  |  |  |  |  |  |  |  |
| NMJ-E1070 |  | Detailed design: submittal (drawings, BOQ, data sheets) - Al Majma'ah |  | 12d | 2027-11-10 | 2027-11-25 | NMJ-E1050 | 251d | 0d | Contract cost (BOQ x payment milestones) [135957 SAR]; Progress weight (fair EPC distribution, SAR value) [52080 h] | 52,080 | NSR | NMJ | NSR | Standard | ETECHS | Detailed | Submittal | ENG | DOCS | MS2 |
|  | APR | **Approval** |  |  | 2027-11-28 | 2027-12-16 |  |  |  |  |  |  |  |  |  |  |  |  |  |  |  |
| NMJ-E1080 |  | Detailed design: SAR review and approval - Al Majma'ah |  | 15d | 2027-11-28 | 2027-12-16 | NMJ-E1070 | 256d | 5d | Contract cost (BOQ x payment milestones) [135957 SAR]; Progress weight (fair EPC distribution, SAR value) [65100 h] | 65,100 | NSR | NMJ | NSR | Standard | SAR | Detailed | Approval | ENG | DOCS | MS3 |
|  | IFC | **IFC and shop drawings** |  |  | 2027-11-28 | 2027-12-23 |  |  |  |  |  |  |  |  |  |  |  |  |  |  |  |
|  | SUB | **Submittal** |  |  | 2027-11-28 | 2027-12-02 |  |  |  |  |  |  |  |  |  |  |  |  |  |  |  |
| NMJ-E1090 |  | IFC and shop drawings: submittal - Al Majma'ah |  | 5d | 2027-11-28 | 2027-12-02 | NMJ-E1070 | 251d | 0d | Contract cost (BOQ x payment milestones) [67978 SAR]; Progress weight (fair EPC distribution, SAR value) [17360 h] | 17,360 | NSR | NMJ | NSR | Standard | ETECHS | IFC | Submittal | ENG | DOCS | MS2 |
|  | APR | **Approval** |  |  | 2027-12-05 | 2027-12-23 |  |  |  |  |  |  |  |  |  |  |  |  |  |  |  |
| NMJ-E1100 |  | IFC and shop drawings: SAR approval and release - Al Majma'ah |  | 15d | 2027-12-05 | 2027-12-23 | NMJ-E1090 | 251d | 0d | Contract cost (BOQ x payment milestones) [67978 SAR]; Progress weight (fair EPC distribution, SAR value) [52700 h] | 52,700 | NSR | NMJ | NSR | Standard | SAR | IFC | Approval | ENG | DOCS | MS3 |
|  | HCS | **HCIS documentation (Stage 3 and 4)** |  |  | 2027-11-17 | 2027-12-23 |  |  |  |  |  |  |  |  |  |  |  |  |  |  |  |
|  | SUB | **Submittal** |  |  | 2027-11-17 | 2027-12-02 |  |  |  |  |  |  |  |  |  |  |  |  |  |  |  |
| NMJ-E1110 |  | HCIS Stage 3 and 4 documents: preparation - Al Majma'ah |  | 12d | 2027-11-17 | 2027-12-02 | NMJ-E1050 FS+5d, NMJ-E1090 FF | 251d | 0d | Contract cost (BOQ x payment milestones) [16995 SAR]; Progress weight (fair EPC distribution, SAR value) [10540 h] | 10,540 | NSR | NMJ | NSR | Standard | ETECHS | HCIS | Submittal | ENG | DOCS | MS2 |
|  | APR | **Approval** |  |  | 2027-12-05 | 2027-12-23 |  |  |  |  |  |  |  |  |  |  |  |  |  |  |  |
| NMJ-E1120 |  | HCIS Stage 3 and 4 documents: SAR final review and HCIS submission - Al Majma'ah |  | 15d | 2027-12-05 | 2027-12-23 | NMJ-E1110 | 251d | 0d | Contract cost (BOQ x payment milestones) [16995 SAR]; Progress weight (fair EPC distribution, SAR value) [13020 h] | 13,020 | NSR | NMJ | NSR | Standard | SAR/HCIS | HCIS | Approval | ENG | DOCS | MS3 |
|  | ASB | **As-built and O&M documentation** |  |  | 2028-07-31 | 2028-10-01 |  |  |  |  |  |  |  |  |  |  |  |  |  |  |  |
|  | SUB | **Submittal** |  |  | 2028-07-31 | 2028-09-10 |  |  |  |  |  |  |  |  |  |  |  |  |  |  |  |
| NMJ-E1130 |  | As-built and O&M documentation: submittal - Al Majma'ah |  | 30d | 2028-07-31 | 2028-09-10 | NMJ-C2100 | 251d | 0d | Contract cost (BOQ x payment milestones) [50984 SAR]; Progress weight (fair EPC distribution, SAR value) [26040 h] | 26,040 | NSR | NMJ | NSR | Standard | ETECHS | As-built | Submittal | ENG | DOCS | MS7 |
|  | APR | **Approval** |  |  | 2028-09-11 | 2028-10-01 |  |  |  |  |  |  |  |  |  |  |  |  |  |  |  |
| NMJ-E1140 |  | As-built and O&M documentation: SAR review and approval - Al Majma'ah |  | 15d | 2028-09-11 | 2028-10-01 | NMJ-E1130 | 251d | 0d | Contract cost (BOQ x payment milestones) [16995 SAR]; Progress weight (fair EPC distribution, SAR value) [13020 h] | 13,020 | NSR | NMJ | NSR | Standard | SAR | As-built | Approval | ENG | DOCS | MS7 |
|  | NHL | **Hail (NSR)** |  |  | 2028-05-08 | 2029-05-01 |  |  |  |  |  |  |  |  |  |  |  |  |  |  |  |
| NHL-E1200 |  | MS2 Engineering submittal complete (10%) - Hail | milestone | 0d | 2028-07-02 | 2028-07-02 | NHL-E1090, NHL-E1110 | 125d | 15d |  |  | NSR | NHL | NSR | Standard | ETECHS | - | - | MS | DOCS | MS2 |
| NHL-E1210 |  | MS3 Engineering approved by SAR (10%) - Hail | milestone | 0d | 2028-07-23 | 2028-07-23 | NHL-E1020, NHL-E1040, NHL-E1060, NHL-E1080, NHL-E1100, NHL-E1120, NHL-E1200 | 110d | 0d |  |  | NSR | NHL | NSR | Standard | SAR | - | - | MS | DOCS | MS3 |

| ID | WBS | Activity | Duration | Start | Finish | Predecessors | Total float | Free float | Resources | Cost | Area | Station | Railway | Priority | Responsibility | Design stage | Submittal or approval | EPC phase | Discipline | Payment milestone |
| --- | --- | --- | --- | --- | --- | --- | --- | --- | --- | --- | --- | --- | --- | --- | --- | --- | --- | --- | --- | --- |
|  | SRV | **Site survey and as-found verification** |  | 2028-05-08 | 2028-05-28 |  |  |  |  |  |  |  |  |  |  |  |  |  |  |  |
|  | SUB | **Submittal** |  | 2028-05-08 | 2028-05-21 |  |  |  |  |  |  |  |  |  |  |  |  |  |  |  |
| NHL-E1010 |  | Survey: submittal of site survey and as-found report - Hail | 10d | 2028-05-08 | 2028-05-21 | PRJ-M2100 FS+294d | 110d | 0d | Contract cost (BOQ x payment milestones) [16995 SAR]; Progress weight (fair EPC distribution, SAR value) [21080 h] | 21,080 | NSR | NHL | NSR | Standard | ETECHS | Survey | Submittal | ENG | DOCS | MS2 |
|  | APR | **Approval** |  | 2028-05-22 | 2028-05-28 |  |  |  |  |  |  |  |  |  |  |  |  |  |  |  |
| NHL-E1020 |  | Survey: SAR approval of survey report - Hail | 5d | 2028-05-22 | 2028-05-28 | NHL-E1010 | 150d | 40d | Contract cost (BOQ x payment milestones) [16995 SAR]; Progress weight (fair EPC distribution, SAR value) [10540 h] | 10,540 | NSR | NHL | NSR | Standard | SAR | Survey | Approval | ENG | DOCS | MS3 |
|  | CNC | **Concept design** |  | 2028-05-22 | 2028-06-18 |  |  |  |  |  |  |  |  |  |  |  |  |  |  |  |
|  | SUB | **Submittal** |  | 2028-05-22 | 2028-05-28 |  |  |  |  |  |  |  |  |  |  |  |  |  |  |  |
| NHL-E1030 |  | Concept design: submittal - Hail | 5d | 2028-05-22 | 2028-05-28 | NHL-E1010 | 110d | 0d | Contract cost (BOQ x payment milestones) [33989 SAR]; Progress weight (fair EPC distribution, SAR value) [9920 h] | 9,920 | NSR | NHL | NSR | Standard | ETECHS | Concept | Submittal | ENG | DOCS | MS2 |
|  | APR | **Approval** |  | 2028-05-29 | 2028-06-18 |  |  |  |  |  |  |  |  |  |  |  |  |  |  |  |
| NHL-E1040 |  | Concept design: SAR review and approval - Hail | 15d | 2028-05-29 | 2028-06-18 | NHL-E1030 | 135d | 25d | Contract cost (BOQ x payment milestones) [33989 SAR]; Progress weight (fair EPC distribution, SAR value) [29140 h] | 29,140 | NSR | NHL | NSR | Standard | SAR | Concept | Approval | ENG | DOCS | MS3 |
|  | PRE | **Preliminary (schematic) design** |  | 2028-05-29 | 2028-06-28 |  |  |  |  |  |  |  |  |  |  |  |  |  |  |  |
|  | SUB | **Submittal** |  | 2028-05-29 | 2028-06-07 |  |  |  |  |  |  |  |  |  |  |  |  |  |  |  |
| NHL-E1050 |  | Preliminary design: submittal - Hail | 8d | 2028-05-29 | 2028-06-07 | NHL-E1030 | 110d | 0d | Contract cost (BOQ x payment milestones) [67978 SAR]; Progress weight (fair EPC distribution, SAR value) [24800 h] | 24,800 | NSR | NHL | NSR | Standard | ETECHS | Preliminary | Submittal | ENG | DOCS | MS2 |
|  | APR | **Approval** |  | 2028-06-08 | 2028-06-28 |  |  |  |  |  |  |  |  |  |  |  |  |  |  |  |
| NHL-E1060 |  | Preliminary design: SAR review and approval - Hail | 15d | 2028-06-08 | 2028-06-28 | NHL-E1050 | 127d | 17d | Contract cost (BOQ x payment milestones) [67978 SAR]; Progress weight (fair EPC distribution, SAR value) [45880 h] | 45,880 | NSR | NHL | NSR | Standard | SAR | Preliminary | Approval | ENG | DOCS | MS3 |
|  | DET | **Detailed design** |  | 2028-06-08 | 2028-07-16 |  |  |  |  |  |  |  |  |  |  |  |  |  |  |  |
|  | SUB | **Submittal** |  | 2028-06-08 | 2028-06-25 |  |  |  |  |  |  |  |  |  |  |  |  |  |  |  |
| NHL-E1070 |  | Detailed design: submittal (drawings, BOQ, data sheets) - Hail | 12d | 2028-06-08 | 2028-06-25 | NHL-E1050 | 110d | 0d | Contract cost (BOQ x payment milestones) [135957 SAR]; Progress weight (fair EPC distribution, SAR value) [52080 h] | 52,080 | NSR | NHL | NSR | Standard | ETECHS | Detailed | Submittal | ENG | DOCS | MS2 |
|  | APR | **Approval** |  | 2028-06-26 | 2028-07-16 |  |  |  |  |  |  |  |  |  |  |  |  |  |  |  |
| NHL-E1080 |  | Detailed design: SAR review and approval - Hail | 15d | 2028-06-26 | 2028-07-16 | NHL-E1070 | 115d | 5d | Contract cost (BOQ x payment milestones) [135957 SAR]; Progress weight (fair EPC distribution, SAR value) [65100 h] | 65,100 | NSR | NHL | NSR | Standard | SAR | Detailed | Approval | ENG | DOCS | MS3 |
|  | IFC | **IFC and shop drawings** |  | 2028-06-26 | 2028-07-23 |  |  |  |  |  |  |  |  |  |  |  |  |  |  |  |
|  | SUB | **Submittal** |  | 2028-06-26 | 2028-07-02 |  |  |  |  |  |  |  |  |  |  |  |  |  |  |  |
| NHL-E1090 |  | IFC and shop drawings: submittal - Hail | 5d | 2028-06-26 | 2028-07-02 | NHL-E1070 | 110d | 0d | Contract cost (BOQ x payment milestones) [67978 SAR]; Progress weight (fair EPC distribution, SAR value) [17360 h] | 17,360 | NSR | NHL | NSR | Standard | ETECHS | IFC | Submittal | ENG | DOCS | MS2 |
|  | APR | **Approval** |  | 2028-07-03 | 2028-07-23 |  |  |  |  |  |  |  |  |  |  |  |  |  |  |  |
| NHL-E1100 |  | IFC and shop drawings: SAR approval and release - Hail | 15d | 2028-07-03 | 2028-07-23 | NHL-E1090 | 110d | 0d | Contract cost (BOQ x payment milestones) [67978 SAR]; Progress weight (fair EPC distribution, SAR value) [52700 h] | 52,700 | NSR | NHL | NSR | Standard | SAR | IFC | Approval | ENG | DOCS | MS3 |

| ID | WBS | Activity | Type | Duration | Start | Finish | Predecessors | Total float | Free float | Resources | Cost | Area | Station | Railway | Priority | Responsibility | Design stage | Submittal or approval | EPC phase | Discipline | Payment milestone |
| --- | --- | --- | --- | --- | --- | --- | --- | --- | --- | --- | --- | --- | --- | --- | --- | --- | --- | --- | --- | --- | --- |
|  | HCS | **HCIS documentation (Stage 3 and 4)** |  |  | 2028-06-15 | 2028-07-23 |  |  |  |  |  |  |  |  |  |  |  |  |  |  |  |
|  | SUB | **Submittal** |  |  | 2028-06-15 | 2028-07-02 |  |  |  |  |  |  |  |  |  |  |  |  |  |  |  |
| NHL-E1110 |  | HCIS Stage 3 and 4 documents: preparation - Hail |  | 12d | 2028-06-15 | 2028-07-02 | NHL-E1050 FS+5d, NHL-E1090 FF | 110d | 0d | Contract cost (BOQ x payment milestones) [16995 SAR]; Progress weight (fair EPC distribution, SAR value) [10540 h] | 10,540 | NSR | NHL | NSR | Standard | ETECHS | HCIS | Submittal | ENG | DOCS | MS2 |
|  | APR | **Approval** |  |  | 2028-07-03 | 2028-07-23 |  |  |  |  |  |  |  |  |  |  |  |  |  |  |  |
| NHL-E1120 |  | HCIS Stage 3 and 4 documents: SAR final review and HCIS submission - Hail |  | 15d | 2028-07-03 | 2028-07-23 | NHL-E1110 | 110d | 0d | Contract cost (BOQ x payment milestones) [16995 SAR]; Progress weight (fair EPC distribution, SAR value) [13020 h] | 13,020 | NSR | NHL | NSR | Standard | SAR/HCIS | HCIS | Approval | ENG | DOCS | MS3 |
|  | ASB | **As-built and O&M documentation** |  |  | 2029-02-20 | 2029-05-01 |  |  |  |  |  |  |  |  |  |  |  |  |  |  |  |
|  | SUB | **Submittal** |  |  | 2029-02-20 | 2029-04-03 |  |  |  |  |  |  |  |  |  |  |  |  |  |  |  |
| NHL-E1130 |  | As-built and O&M documentation: submittal - Hail |  | 30d | 2029-02-20 | 2029-04-03 | NHL-C2100 | 110d | 0d | Contract cost (BOQ x payment milestones) [50984 SAR]; Progress weight (fair EPC distribution, SAR value) [26040 h] | 26,040 | NSR | NHL | NSR | Standard | ETECHS | As-built | Submittal | ENG | DOCS | MS7 |
|  | APR | **Approval** |  |  | 2029-04-04 | 2029-05-01 |  |  |  |  |  |  |  |  |  |  |  |  |  |  |  |
| NHL-E1140 |  | As-built and O&M documentation: SAR review and approval - Hail |  | 15d | 2029-04-04 | 2029-05-01 | NHL-E1130 | 110d | 0d | Contract cost (BOQ x payment milestones) [16995 SAR]; Progress weight (fair EPC distribution, SAR value) [13020 h] | 13,020 | NSR | NHL | NSR | Standard | SAR | As-built | Approval | ENG | DOCS | MS7 |
|  | NJF | **Al Jouf (NSR)** |  |  | 2028-07-20 | 2029-07-15 |  |  |  |  |  |  |  |  |  |  |  |  |  |  |  |
| NJF-E1200 |  | MS2 Engineering submittal complete (10%) - Al Jouf | milestone | 0d | 2028-09-13 | 2028-09-13 | NJF-E1090, NJF-E1110 | 72d | 15d |  |  | NSR | NJF | NSR | Standard | ETECHS | - | - | MS | DOCS | MS2 |
| NJF-E1210 |  | MS3 Engineering approved by SAR (10%) - Al Jouf | milestone | 0d | 2028-10-04 | 2028-10-04 | NJF-E1020, NJF-E1040, NJF-E1060, NJF-E1080, NJF-E1100, NJF-E1120, NJF-E1200 | 57d | 0d |  |  | NSR | NJF | NSR | Standard | SAR | - | - | MS | DOCS | MS3 |
|  | SRV | **Site survey and as-found verification** |  |  | 2028-07-20 | 2028-08-09 |  |  |  |  |  |  |  |  |  |  |  |  |  |  |  |
|  | SUB | **Submittal** |  |  | 2028-07-20 | 2028-08-02 |  |  |  |  |  |  |  |  |  |  |  |  |  |  |  |
| NJF-E1010 |  | Survey: submittal of site survey and as-found report - Al Jouf |  | 10d | 2028-07-20 | 2028-08-02 | PRJ-M2100 FS+347d | 57d | 0d | Contract cost (BOQ x payment milestones) [17114 SAR]; Progress weight (fair EPC distribution, SAR value) [21080 h] | 21,080 | NSR | NJF | NSR | Standard | ETECHS | Survey | Submittal | ENG | DOCS | MS2 |
|  | APR | **Approval** |  |  | 2028-08-03 | 2028-08-09 |  |  |  |  |  |  |  |  |  |  |  |  |  |  |  |
| NJF-E1020 |  | Survey: SAR approval of survey report - Al Jouf |  | 5d | 2028-08-03 | 2028-08-09 | NJF-E1010 | 97d | 40d | Contract cost (BOQ x payment milestones) [17114 SAR]; Progress weight (fair EPC distribution, SAR value) [10540 h] | 10,540 | NSR | NJF | NSR | Standard | SAR | Survey | Approval | ENG | DOCS | MS3 |
|  | CNC | **Concept design** |  |  | 2028-08-03 | 2028-08-30 |  |  |  |  |  |  |  |  |  |  |  |  |  |  |  |
|  | SUB | **Submittal** |  |  | 2028-08-03 | 2028-08-09 |  |  |  |  |  |  |  |  |  |  |  |  |  |  |  |
| NJF-E1030 |  | Concept design: submittal - Al Jouf |  | 5d | 2028-08-03 | 2028-08-09 | NJF-E1010 | 57d | 0d | Contract cost (BOQ x payment milestones) [34228 SAR]; Progress weight (fair EPC distribution, SAR value) [9920 h] | 9,920 | NSR | NJF | NSR | Standard | ETECHS | Concept | Submittal | ENG | DOCS | MS2 |
|  | APR | **Approval** |  |  | 2028-08-10 | 2028-08-30 |  |  |  |  |  |  |  |  |  |  |  |  |  |  |  |
| NJF-E1040 |  | Concept design: SAR review and approval - Al Jouf |  | 15d | 2028-08-10 | 2028-08-30 | NJF-E1030 | 82d | 25d | Contract cost (BOQ x payment milestones) [34228 SAR]; Progress weight (fair EPC distribution, SAR value) [29760 h] | 29,760 | NSR | NJF | NSR | Standard | SAR | Concept | Approval | ENG | DOCS | MS3 |
|  | PRE | **Preliminary (schematic) design** |  |  | 2028-08-10 | 2028-09-11 |  |  |  |  |  |  |  |  |  |  |  |  |  |  |  |
|  | SUB | **Submittal** |  |  | 2028-08-10 | 2028-08-21 |  |  |  |  |  |  |  |  |  |  |  |  |  |  |  |
| NJF-E1050 |  | Preliminary design: submittal - Al Jouf |  | 8d | 2028-08-10 | 2028-08-21 | NJF-E1030 | 57d | 0d | Contract cost (BOQ x payment milestones) [68457 SAR]; Progress weight (fair EPC distribution, SAR value) [24800 h] | 24,800 | NSR | NJF | NSR | Standard | ETECHS | Preliminary | Submittal | ENG | DOCS | MS2 |

| ID | WBS | Activity | Type | Duration | Start | Finish | Predecessors | Total float | Free float | Resources | Cost | Area | Station | Railway | Priority | Responsibility | Design stage | Submittal or approval | EPC phase | Discipline | Payment milestone |
| --- | --- | --- | --- | --- | --- | --- | --- | --- | --- | --- | --- | --- | --- | --- | --- | --- | --- | --- | --- | --- | --- |
|  | APR | **Approval** |  |  | 2028-08-22 | 2028-09-11 |  |  |  |  |  |  |  |  |  |  |  |  |  |  |  |
| NJF-E1060 |  | Preliminary design: SAR review and approval - Al Jouf |  | 15d | 2028-08-22 | 2028-09-11 | NJF-E1050 | 74d | 17d | Contract cost (BOQ x payment milestones) [68457 SAR]; Progress weight (fair EPC distribution, SAR value) [46500 h] | 46,500 | NSR | NJF | NSR | Standard | SAR | Preliminary | Approval | ENG | DOCS | MS3 |
|  | DET | **Detailed design** |  |  | 2028-08-22 | 2028-09-27 |  |  |  |  |  |  |  |  |  |  |  |  |  |  |  |
|  | SUB | **Submittal** |  |  | 2028-08-22 | 2028-09-06 |  |  |  |  |  |  |  |  |  |  |  |  |  |  |  |
| NJF-E1070 |  | Detailed design: submittal (drawings, BOQ, data sheets) - Al Jouf |  | 12d | 2028-08-22 | 2028-09-06 | NJF-E1050 | 57d | 0d | Contract cost (BOQ x payment milestones) [136914 SAR]; Progress weight (fair EPC distribution, SAR value) [52700 h] | 52,700 | NSR | NJF | NSR | Standard | ETECHS | Detailed | Submittal | ENG | DOCS | MS2 |
|  | APR | **Approval** |  |  | 2028-09-07 | 2028-09-27 |  |  |  |  |  |  |  |  |  |  |  |  |  |  |  |
| NJF-E1080 |  | Detailed design: SAR review and approval - Al Jouf |  | 15d | 2028-09-07 | 2028-09-27 | NJF-E1070 | 62d | 5d | Contract cost (BOQ x payment milestones) [136914 SAR]; Progress weight (fair EPC distribution, SAR value) [65720 h] | 65,720 | NSR | NJF | NSR | Standard | SAR | Detailed | Approval | ENG | DOCS | MS3 |
|  | IFC | **IFC and shop drawings** |  |  | 2028-09-07 | 2028-10-04 |  |  |  |  |  |  |  |  |  |  |  |  |  |  |  |
|  | SUB | **Submittal** |  |  | 2028-09-07 | 2028-09-13 |  |  |  |  |  |  |  |  |  |  |  |  |  |  |  |
| NJF-E1090 |  | IFC and shop drawings: submittal - Al Jouf |  | 5d | 2028-09-07 | 2028-09-13 | NJF-E1070 | 57d | 0d | Contract cost (BOQ x payment milestones) [68457 SAR]; Progress weight (fair EPC distribution, SAR value) [17980 h] | 17,980 | NSR | NJF | NSR | Standard | ETECHS | IFC | Submittal | ENG | DOCS | MS2 |
|  | APR | **Approval** |  |  | 2028-09-14 | 2028-10-04 |  |  |  |  |  |  |  |  |  |  |  |  |  |  |  |
| NJF-E1100 |  | IFC and shop drawings: SAR approval and release - Al Jouf |  | 15d | 2028-09-14 | 2028-10-04 | NJF-E1090 | 57d | 0d | Contract cost (BOQ x payment milestones) [68457 SAR]; Progress weight (fair EPC distribution, SAR value) [53320 h] | 53,320 | NSR | NJF | NSR | Standard | SAR | IFC | Approval | ENG | DOCS | MS3 |
|  | HCS | **HCIS documentation (Stage 3 and 4)** |  |  | 2028-08-29 | 2028-10-04 |  |  |  |  |  |  |  |  |  |  |  |  |  |  |  |
|  | SUB | **Submittal** |  |  | 2028-08-29 | 2028-09-13 |  |  |  |  |  |  |  |  |  |  |  |  |  |  |  |
| NJF-E1110 |  | HCIS Stage 3 and 4 documents: preparation - Al Jouf |  | 12d | 2028-08-29 | 2028-09-13 | NJF-E1050 FS+5d, NJF-E1090 FF | 57d | 0d | Contract cost (BOQ x payment milestones) [17114 SAR]; Progress weight (fair EPC distribution, SAR value) [10540 h] | 10,540 | NSR | NJF | NSR | Standard | ETECHS | HCIS | Submittal | ENG | DOCS | MS2 |
|  | APR | **Approval** |  |  | 2028-09-14 | 2028-10-04 |  |  |  |  |  |  |  |  |  |  |  |  |  |  |  |
| NJF-E1120 |  | HCIS Stage 3 and 4 documents: SAR final review and HCIS submission - Al Jouf |  | 15d | 2028-09-14 | 2028-10-04 | NJF-E1110 | 57d | 0d | Contract cost (BOQ x payment milestones) [17114 SAR]; Progress weight (fair EPC distribution, SAR value) [13020 h] | 13,020 | NSR | NJF | NSR | Standard | SAR/HCIS | HCIS | Approval | ENG | DOCS | MS3 |
|  | ASB | **As-built and O&M documentation** |  |  | 2029-05-14 | 2029-07-15 |  |  |  |  |  |  |  |  |  |  |  |  |  |  |  |
|  | SUB | **Submittal** |  |  | 2029-05-14 | 2029-06-24 |  |  |  |  |  |  |  |  |  |  |  |  |  |  |  |
| NJF-E1130 |  | As-built and O&M documentation: submittal - Al Jouf |  | 30d | 2029-05-14 | 2029-06-24 | NJF-C2100 | 57d | 0d | Contract cost (BOQ x payment milestones) [51343 SAR]; Progress weight (fair EPC distribution, SAR value) [26040 h] | 26,040 | NSR | NJF | NSR | Standard | ETECHS | As-built | Submittal | ENG | DOCS | MS7 |
|  | APR | **Approval** |  |  | 2029-06-25 | 2029-07-15 |  |  |  |  |  |  |  |  |  |  |  |  |  |  |  |
| NJF-E1140 |  | As-built and O&M documentation: SAR review and approval - Al Jouf |  | 15d | 2029-06-25 | 2029-07-15 | NJF-E1130 | 57d | 0d | Contract cost (BOQ x payment milestones) [17114 SAR]; Progress weight (fair EPC distribution, SAR value) [13020 h] | 13,020 | NSR | NJF | NSR | Standard | SAR | As-built | Approval | ENG | DOCS | MS7 |
|  | NQR | **Al Qurayyat (NSR)** |  |  | 2028-09-07 | 2029-09-02 |  |  |  |  |  |  |  |  |  |  |  |  |  |  |  |
| NQR-E1200 |  | MS2 Engineering submittal complete (10%) - Al Qurayyat | milestone | 0d | 2028-11-01 | 2028-11-01 | NQR-E1090, NQR-E1110 | 37d | 15d |  |  | NSR | NQR | NSR | Standard | ETECHS | - | - | MS | DOCS | MS2 |
| NQR-E1210 |  | MS3 Engineering approved by SAR (10%) - Al Qurayyat | milestone | 0d | 2028-11-22 | 2028-11-22 | NQR-E1020, NQR-E1040, NQR-E1060, NQR-E1080, NQR-E1100, NQR-E1120, NQR-E1200 | 22d | 0d |  |  | NSR | NQR | NSR | Standard | SAR | - | - | MS | DOCS | MS3 |

| ID | WBS | Activity | Duration | Start | Finish | Predecessors | Total float | Free float | Resources | Cost | Area | Station | Railway | Priority | Responsibility | Design stage | Submittal or approval | EPC phase | Discipline | Payment milestone |
| --- | --- | --- | --- | --- | --- | --- | --- | --- | --- | --- | --- | --- | --- | --- | --- | --- | --- | --- | --- | --- |
|  | SRV | **Site survey and as-found verification** |  | 2028-09-07 | 2028-09-27 |  |  |  |  |  |  |  |  |  |  |  |  |  |  |  |
|  | SUB | **Submittal** |  | 2028-09-07 | 2028-09-20 |  |  |  |  |  |  |  |  |  |  |  |  |  |  |  |
| NQR-E1010 |  | Survey: submittal of site survey and as-found report - Al Qurayyat | 10d | 2028-09-07 | 2028-09-20 | PRJ-M2100 FS+382d | 22d | 0d | Contract cost (BOQ x payment milestones) [16995 SAR]; Progress weight (fair EPC distribution, SAR value) [21080 h] | 21,080 | NSR | NQR | NSR | Standard | ETECHS | Survey | Submittal | ENG | DOCS | MS2 |
|  | APR | **Approval** |  | 2028-09-21 | 2028-09-27 |  |  |  |  |  |  |  |  |  |  |  |  |  |  |  |
| NQR-E1020 |  | Survey: SAR approval of survey report - Al Qurayyat | 5d | 2028-09-21 | 2028-09-27 | NQR-E1010 | 62d | 40d | Contract cost (BOQ x payment milestones) [16995 SAR]; Progress weight (fair EPC distribution, SAR value) [10540 h] | 10,540 | NSR | NQR | NSR | Standard | SAR | Survey | Approval | ENG | DOCS | MS3 |
|  | CNC | **Concept design** |  | 2028-09-21 | 2028-10-18 |  |  |  |  |  |  |  |  |  |  |  |  |  |  |  |
|  | SUB | **Submittal** |  | 2028-09-21 | 2028-09-27 |  |  |  |  |  |  |  |  |  |  |  |  |  |  |  |
| NQR-E1030 |  | Concept design: submittal - Al Qurayyat | 5d | 2028-09-21 | 2028-09-27 | NQR-E1010 | 22d | 0d | Contract cost (BOQ x payment milestones) [33989 SAR]; Progress weight (fair EPC distribution, SAR value) [9920 h] | 9,920 | NSR | NQR | NSR | Standard | ETECHS | Concept | Submittal | ENG | DOCS | MS2 |
|  | APR | **Approval** |  | 2028-09-28 | 2028-10-18 |  |  |  |  |  |  |  |  |  |  |  |  |  |  |  |
| NQR-E1040 |  | Concept design: SAR review and approval - Al Qurayyat | 15d | 2028-09-28 | 2028-10-18 | NQR-E1030 | 47d | 25d | Contract cost (BOQ x payment milestones) [33989 SAR]; Progress weight (fair EPC distribution, SAR value) [29140 h] | 29,140 | NSR | NQR | NSR | Standard | SAR | Concept | Approval | ENG | DOCS | MS3 |
|  | PRE | **Preliminary (schematic) design** |  | 2028-09-28 | 2028-10-30 |  |  |  |  |  |  |  |  |  |  |  |  |  |  |  |
|  | SUB | **Submittal** |  | 2028-09-28 | 2028-10-09 |  |  |  |  |  |  |  |  |  |  |  |  |  |  |  |
| NQR-E1050 |  | Preliminary design: submittal - Al Qurayyat | 8d | 2028-09-28 | 2028-10-09 | NQR-E1030 | 22d | 0d | Contract cost (BOQ x payment milestones) [67978 SAR]; Progress weight (fair EPC distribution, SAR value) [24800 h] | 24,800 | NSR | NQR | NSR | Standard | ETECHS | Preliminary | Submittal | ENG | DOCS | MS2 |
|  | APR | **Approval** |  | 2028-10-10 | 2028-10-30 |  |  |  |  |  |  |  |  |  |  |  |  |  |  |  |
| NQR-E1060 |  | Preliminary design: SAR review and approval - Al Qurayyat | 15d | 2028-10-10 | 2028-10-30 | NQR-E1050 | 39d | 17d | Contract cost (BOQ x payment milestones) [67978 SAR]; Progress weight (fair EPC distribution, SAR value) [45880 h] | 45,880 | NSR | NQR | NSR | Standard | SAR | Preliminary | Approval | ENG | DOCS | MS3 |
|  | DET | **Detailed design** |  | 2028-10-10 | 2028-11-15 |  |  |  |  |  |  |  |  |  |  |  |  |  |  |  |
|  | SUB | **Submittal** |  | 2028-10-10 | 2028-10-25 |  |  |  |  |  |  |  |  |  |  |  |  |  |  |  |
| NQR-E1070 |  | Detailed design: submittal (drawings, BOQ, data sheets) - Al Qurayyat | 12d | 2028-10-10 | 2028-10-25 | NQR-E1050 | 22d | 0d | Contract cost (BOQ x payment milestones) [135957 SAR]; Progress weight (fair EPC distribution, SAR value) [52080 h] | 52,080 | NSR | NQR | NSR | Standard | ETECHS | Detailed | Submittal | ENG | DOCS | MS2 |
|  | APR | **Approval** |  | 2028-10-26 | 2028-11-15 |  |  |  |  |  |  |  |  |  |  |  |  |  |  |  |
| NQR-E1080 |  | Detailed design: SAR review and approval - Al Qurayyat | 15d | 2028-10-26 | 2028-11-15 | NQR-E1070 | 27d | 5d | Contract cost (BOQ x payment milestones) [135957 SAR]; Progress weight (fair EPC distribution, SAR value) [65100 h] | 65,100 | NSR | NQR | NSR | Standard | SAR | Detailed | Approval | ENG | DOCS | MS3 |
|  | IFC | **IFC and shop drawings** |  | 2028-10-26 | 2028-11-22 |  |  |  |  |  |  |  |  |  |  |  |  |  |  |  |
|  | SUB | **Submittal** |  | 2028-10-26 | 2028-11-01 |  |  |  |  |  |  |  |  |  |  |  |  |  |  |  |
| NQR-E1090 |  | IFC and shop drawings: submittal - Al Qurayyat | 5d | 2028-10-26 | 2028-11-01 | NQR-E1070 | 22d | 0d | Contract cost (BOQ x payment milestones) [67978 SAR]; Progress weight (fair EPC distribution, SAR value) [17360 h] | 17,360 | NSR | NQR | NSR | Standard | ETECHS | IFC | Submittal | ENG | DOCS | MS2 |
|  | APR | **Approval** |  | 2028-11-02 | 2028-11-22 |  |  |  |  |  |  |  |  |  |  |  |  |  |  |  |
| NQR-E1100 |  | IFC and shop drawings: SAR approval and release - Al Qurayyat | 15d | 2028-11-02 | 2028-11-22 | NQR-E1090 | 22d | 0d | Contract cost (BOQ x payment milestones) [67978 SAR]; Progress weight (fair EPC distribution, SAR value) [52700 h] | 52,700 | NSR | NQR | NSR | Standard | SAR | IFC | Approval | ENG | DOCS | MS3 |

| ID | WBS | Activity | Type | Duration | Start | Finish | Predecessors | Total float | Free float | Resources | Cost | Area | Station | Railway | Priority | Responsibility | Design stage | Submittal or approval | EPC phase | Discipline | Payment milestone |
| --- | --- | --- | --- | --- | --- | --- | --- | --- | --- | --- | --- | --- | --- | --- | --- | --- | --- | --- | --- | --- | --- |
|  | HCS | **HCIS documentation (Stage 3 and 4)** |  |  | 2028-10-17 | 2028-11-22 |  |  |  |  |  |  |  |  |  |  |  |  |  |  |  |
|  | SUB | **Submittal** |  |  | 2028-10-17 | 2028-11-01 |  |  |  |  |  |  |  |  |  |  |  |  |  |  |  |
| NQR-E1110 |  | HCIS Stage 3 and 4 documents: preparation - Al Qurayyat |  | 12d | 2028-10-17 | 2028-11-01 | NQR-E1050 FS+5d, NQR-E1090 FF | 22d | 0d | Contract cost (BOQ x payment milestones) [16995 SAR]; Progress weight (fair EPC distribution, SAR value) [10540 h] | 10,540 | NSR | NQR | NSR | Standard | ETECHS | HCIS | Submittal | ENG | DOCS | MS2 |
|  | APR | **Approval** |  |  | 2028-11-02 | 2028-11-22 |  |  |  |  |  |  |  |  |  |  |  |  |  |  |  |
| NQR-E1120 |  | HCIS Stage 3 and 4 documents: SAR final review and HCIS submission - Al Qurayyat |  | 15d | 2028-11-02 | 2028-11-22 | NQR-E1110 | 22d | 0d | Contract cost (BOQ x payment milestones) [16995 SAR]; Progress weight (fair EPC distribution, SAR value) [13020 h] | 13,020 | NSR | NQR | NSR | Standard | SAR/HCIS | HCIS | Approval | ENG | DOCS | MS3 |
|  | ASB | **As-built and O&M documentation** |  |  | 2029-07-02 | 2029-09-02 |  |  |  |  |  |  |  |  |  |  |  |  |  |  |  |
|  | SUB | **Submittal** |  |  | 2029-07-02 | 2029-08-12 |  |  |  |  |  |  |  |  |  |  |  |  |  |  |  |
| NQR-E1130 |  | As-built and O&M documentation: submittal - Al Qurayyat |  | 30d | 2029-07-02 | 2029-08-12 | NQR-C2100 | 22d | 0d | Contract cost (BOQ x payment milestones) [50984 SAR]; Progress weight (fair EPC distribution, SAR value) [26040 h] | 26,040 | NSR | NQR | NSR | Standard | ETECHS | As-built | Submittal | ENG | DOCS | MS7 |
|  | APR | **Approval** |  |  | 2029-08-13 | 2029-09-02 |  |  |  |  |  |  |  |  |  |  |  |  |  |  |  |
| NQR-E1140 |  | As-built and O&M documentation: SAR review and approval - Al Qurayyat |  | 15d | 2029-08-13 | 2029-09-02 | NQR-E1130 | 22d | 0d | Contract cost (BOQ x payment milestones) [16995 SAR]; Progress weight (fair EPC distribution, SAR value) [13020 h] | 13,020 | NSR | NQR | NSR | Standard | SAR | As-built | Approval | ENG | DOCS | MS7 |
|  | EWR | **EWR - East West Railway** |  |  | 2027-06-24 | 2029-03-15 |  |  |  |  |  |  |  |  |  |  |  |  |  |  |  |
|  | EDM | **Dammam (EWR)** |  |  | 2027-06-24 | 2028-06-08 |  |  |  |  |  |  |  |  |  |  |  |  |  |  |  |
| EDM-E1200 |  | MS2 Engineering submittal complete (10%) - Dammam | milestone | 0d | 2027-08-18 | 2027-08-18 | EDM-E1090, EDM-E1110 | 347d | 15d |  |  | EWR | EDM | EWR | Standard | ETECHS | - | - | MS | DOCS | MS2 |
| EDM-E1210 |  | MS3 Engineering approved by SAR (10%) - Dammam | milestone | 0d | 2027-09-08 | 2027-09-08 | EDM-E1020, EDM-E1040, EDM-E1060, EDM-E1080, EDM-E1100, EDM-E1120, EDM-E1200 | 332d | 0d |  |  | EWR | EDM | EWR | Standard | SAR | - | - | MS | DOCS | MS3 |
|  | SRV | **Site survey and as-found verification** |  |  | 2027-06-24 | 2027-07-14 |  |  |  |  |  |  |  |  |  |  |  |  |  |  |  |
|  | SUB | **Submittal** |  |  | 2027-06-24 | 2027-07-07 |  |  |  |  |  |  |  |  |  |  |  |  |  |  |  |
| EDM-E1010 |  | Survey: submittal of site survey and as-found report - Dammam |  | 10d | 2027-06-24 | 2027-07-07 | PRJ-M2100 FS+78d | 332d | 0d | Contract cost (BOQ x payment milestones) [15938 SAR]; Progress weight (fair EPC distribution, SAR value) [19840 h] | 19,840 | EWR | EDM | EWR | Standard | ETECHS | Survey | Submittal | ENG | DOCS | MS2 |
|  | APR | **Approval** |  |  | 2027-07-08 | 2027-07-14 |  |  |  |  |  |  |  |  |  |  |  |  |  |  |  |
| EDM-E1020 |  | Survey: SAR approval of survey report - Dammam |  | 5d | 2027-07-08 | 2027-07-14 | EDM-E1010 | 372d | 40d | Contract cost (BOQ x payment milestones) [15938 SAR]; Progress weight (fair EPC distribution, SAR value) [9920 h] | 9,920 | EWR | EDM | EWR | Standard | SAR | Survey | Approval | ENG | DOCS | MS3 |
|  | CNC | **Concept design** |  |  | 2027-07-08 | 2027-08-04 |  |  |  |  |  |  |  |  |  |  |  |  |  |  |  |
|  | SUB | **Submittal** |  |  | 2027-07-08 | 2027-07-14 |  |  |  |  |  |  |  |  |  |  |  |  |  |  |  |
| EDM-E1030 |  | Concept design: submittal - Dammam |  | 5d | 2027-07-08 | 2027-07-14 | EDM-E1010 | 332d | 0d | Contract cost (BOQ x payment milestones) [31875 SAR]; Progress weight (fair EPC distribution, SAR value) [9300 h] | 9,300 | EWR | EDM | EWR | Standard | ETECHS | Concept | Submittal | ENG | DOCS | MS2 |
|  | APR | **Approval** |  |  | 2027-07-15 | 2027-08-04 |  |  |  |  |  |  |  |  |  |  |  |  |  |  |  |
| EDM-E1040 |  | Concept design: SAR review and approval - Dammam |  | 15d | 2027-07-15 | 2027-08-04 | EDM-E1030 | 357d | 25d | Contract cost (BOQ x payment milestones) [31875 SAR]; Progress weight (fair EPC distribution, SAR value) [27280 h] | 27,280 | EWR | EDM | EWR | Standard | SAR | Concept | Approval | ENG | DOCS | MS3 |

| ID | WBS | Activity | Duration | Start | Finish | Predecessors | Total float | Free float | Resources | Cost | Area | Station | Railway | Priority | Responsibility | Design stage | Submittal or approval | EPC phase | Discipline | Payment milestone |
| --- | --- | --- | --- | --- | --- | --- | --- | --- | --- | --- | --- | --- | --- | --- | --- | --- | --- | --- | --- | --- |
|  | PRE | **Preliminary (schematic) design** |  | 2027-07-15 | 2027-08-16 |  |  |  |  |  |  |  |  |  |  |  |  |  |  |  |
|  | SUB | **Submittal** |  | 2027-07-15 | 2027-07-26 |  |  |  |  |  |  |  |  |  |  |  |  |  |  |  |
| EDM-E1050 |  | Preliminary design: submittal - Dammam | 8d | 2027-07-15 | 2027-07-26 | EDM-E1030 | 332d | 0d | Contract cost (BOQ x payment milestones) [63750 SAR]; Progress weight (fair EPC distribution, SAR value) [22940 h] | 22,940 | EWR | EDM | EWR | Standard | ETECHS | Preliminary | Submittal | ENG | DOCS | MS2 |
|  | APR | **Approval** |  | 2027-07-27 | 2027-08-16 |  |  |  |  |  |  |  |  |  |  |  |  |  |  |  |
| EDM-E1060 |  | Preliminary design: SAR review and approval - Dammam | 15d | 2027-07-27 | 2027-08-16 | EDM-E1050 | 349d | 17d | Contract cost (BOQ x payment milestones) [63750 SAR]; Progress weight (fair EPC distribution, SAR value) [43400 h] | 43,400 | EWR | EDM | EWR | Standard | SAR | Preliminary | Approval | ENG | DOCS | MS3 |
|  | DET | **Detailed design** |  | 2027-07-27 | 2027-09-01 |  |  |  |  |  |  |  |  |  |  |  |  |  |  |  |
|  | SUB | **Submittal** |  | 2027-07-27 | 2027-08-11 |  |  |  |  |  |  |  |  |  |  |  |  |  |  |  |
| EDM-E1070 |  | Detailed design: submittal (drawings, BOQ, data sheets) - Dammam | 12d | 2027-07-27 | 2027-08-11 | EDM-E1050 | 332d | 0d | Contract cost (BOQ x payment milestones) [127500 SAR]; Progress weight (fair EPC distribution, SAR value) [48980 h] | 48,980 | EWR | EDM | EWR | Standard | ETECHS | Detailed | Submittal | ENG | DOCS | MS2 |
|  | APR | **Approval** |  | 2027-08-12 | 2027-09-01 |  |  |  |  |  |  |  |  |  |  |  |  |  |  |  |
| EDM-E1080 |  | Detailed design: SAR review and approval - Dammam | 15d | 2027-08-12 | 2027-09-01 | EDM-E1070 | 337d | 5d | Contract cost (BOQ x payment milestones) [127500 SAR]; Progress weight (fair EPC distribution, SAR value) [61380 h] | 61,380 | EWR | EDM | EWR | Standard | SAR | Detailed | Approval | ENG | DOCS | MS3 |
|  | IFC | **IFC and shop drawings** |  | 2027-08-12 | 2027-09-08 |  |  |  |  |  |  |  |  |  |  |  |  |  |  |  |
|  | SUB | **Submittal** |  | 2027-08-12 | 2027-08-18 |  |  |  |  |  |  |  |  |  |  |  |  |  |  |  |
| EDM-E1090 |  | IFC and shop drawings: submittal - Dammam | 5d | 2027-08-12 | 2027-08-18 | EDM-E1070 | 332d | 0d | Contract cost (BOQ x payment milestones) [63750 SAR]; Progress weight (fair EPC distribution, SAR value) [16740 h] | 16,740 | EWR | EDM | EWR | Standard | ETECHS | IFC | Submittal | ENG | DOCS | MS2 |
|  | APR | **Approval** |  | 2027-08-19 | 2027-09-08 |  |  |  |  |  |  |  |  |  |  |  |  |  |  |  |
| EDM-E1100 |  | IFC and shop drawings: SAR approval and release - Dammam | 15d | 2027-08-19 | 2027-09-08 | EDM-E1090 | 332d | 0d | Contract cost (BOQ x payment milestones) [63750 SAR]; Progress weight (fair EPC distribution, SAR value) [49600 h] | 49,600 | EWR | EDM | EWR | Standard | SAR | IFC | Approval | ENG | DOCS | MS3 |
|  | HCS | **HCIS documentation (Stage 3 and 4)** |  | 2027-08-03 | 2027-09-08 |  |  |  |  |  |  |  |  |  |  |  |  |  |  |  |
|  | SUB | **Submittal** |  | 2027-08-03 | 2027-08-18 |  |  |  |  |  |  |  |  |  |  |  |  |  |  |  |
| EDM-E1110 |  | HCIS Stage 3 and 4 documents: preparation - Dammam | 12d | 2027-08-03 | 2027-08-18 | EDM-E1050 FS+5d, EDM-E1090 FF | 332d | 0d | Contract cost (BOQ x payment milestones) [15938 SAR]; Progress weight (fair EPC distribution, SAR value) [9920 h] | 9,920 | EWR | EDM | EWR | Standard | ETECHS | HCIS | Submittal | ENG | DOCS | MS2 |
|  | APR | **Approval** |  | 2027-08-19 | 2027-09-08 |  |  |  |  |  |  |  |  |  |  |  |  |  |  |  |
| EDM-E1120 |  | HCIS Stage 3 and 4 documents: SAR final review and HCIS submission - Dammam | 15d | 2027-08-19 | 2027-09-08 | EDM-E1110 | 332d | 0d | Contract cost (BOQ x payment milestones) [15938 SAR]; Progress weight (fair EPC distribution, SAR value) [12400 h] | 12,400 | EWR | EDM | EWR | Standard | SAR/HCIS | HCIS | Approval | ENG | DOCS | MS3 |
|  | ASB | **As-built and O&M documentation** |  | 2028-04-02 | 2028-06-08 |  |  |  |  |  |  |  |  |  |  |  |  |  |  |  |
|  | SUB | **Submittal** |  | 2028-04-02 | 2028-05-18 |  |  |  |  |  |  |  |  |  |  |  |  |  |  |  |
| EDM-E1130 |  | As-built and O&M documentation: submittal - Dammam | 30d | 2028-04-02 | 2028-05-18 | EDM-C2100 | 332d | 0d | Contract cost (BOQ x payment milestones) [47813 SAR]; Progress weight (fair EPC distribution, SAR value) [24180 h] | 24,180 | EWR | EDM | EWR | Standard | ETECHS | As-built | Submittal | ENG | DOCS | MS7 |
|  | APR | **Approval** |  | 2028-05-21 | 2028-06-08 |  |  |  |  |  |  |  |  |  |  |  |  |  |  |  |
| EDM-E1140 |  | As-built and O&M documentation: SAR review and approval - Dammam | 15d | 2028-05-21 | 2028-06-08 | EDM-E1130 | 332d | 0d | Contract cost (BOQ x payment milestones) [15938 SAR]; Progress weight (fair EPC distribution, SAR value) [12400 h] | 12,400 | EWR | EDM | EWR | Standard | SAR | As-built | Approval | ENG | DOCS | MS7 |

| ID | WBS | Activity | Type | Duration | Start | Finish | Predecessors | Total float | Free float | Resources | Cost | Area | Station | Railway | Priority | EPC phase | Discipline | Responsibility | Design stage | Submittal or approval | Payment milestone |
| --- | --- | --- | --- | --- | --- | --- | --- | --- | --- | --- | --- | --- | --- | --- | --- | --- | --- | --- | --- | --- | --- |
|  | EHF | **Hufuf (EWR)** |  |  | 2027-08-19 | 2028-08-03 |  |  |  |  |  |  |  |  |  |  |  |  |  |  |  |
| EHF-E1200 |  | MS2 Engineering submittal complete (10%) - Hufuf | milestone | 0d | 2027-10-14 | 2027-10-14 | EHF-E1090, EHF-E1110 | 307d | 15d |  |  | EWR | EHF | EWR | Standard | MS | DOCS | ETECHS | - | - | MS2 |
| EHF-E1210 |  | MS3 Engineering approved by SAR (10%) - Hufuf | milestone | 0d | 2027-11-04 | 2027-11-04 | EHF-E1020, EHF-E1040, EHF-E1060, EHF-E1080, EHF-E1100, EHF-E1120, EHF-E1200 | 292d | 0d |  |  | EWR | EHF | EWR | Standard | MS | DOCS | SAR | - | - | MS3 |
|  | SRV | **Site survey and as-found verification** |  |  | 2027-08-19 | 2027-09-08 |  |  |  |  |  |  |  |  |  |  |  |  |  |  |  |
|  | SUB | **Submittal** |  |  | 2027-08-19 | 2027-09-01 |  |  |  |  |  |  |  |  |  |  |  |  |  |  |  |
| EHF-E1010 |  | Survey: submittal of site survey and as-found report - Hufuf |  | 10d | 2027-08-19 | 2027-09-01 | PRJ-M2100 FS+118d | 292d | 0d | Contract cost (BOQ x payment milestones) [14143 SAR]; Progress weight (fair EPC distribution, SAR value) [17360 h] | 17,360 | EWR | EHF | EWR | Standard | ENG | DOCS | ETECHS | Survey | Submittal | MS2 |
|  | APR | **Approval** |  |  | 2027-09-02 | 2027-09-08 |  |  |  |  |  |  |  |  |  |  |  |  |  |  |  |
| EHF-E1020 |  | Survey: SAR approval of survey report - Hufuf |  | 5d | 2027-09-02 | 2027-09-08 | EHF-E1010 | 332d | 40d | Contract cost (BOQ x payment milestones) [14143 SAR]; Progress weight (fair EPC distribution, SAR value) [8680 h] | 8,680 | EWR | EHF | EWR | Standard | ENG | DOCS | SAR | Survey | Approval | MS3 |
|  | CNC | **Concept design** |  |  | 2027-09-02 | 2027-09-30 |  |  |  |  |  |  |  |  |  |  |  |  |  |  |  |
|  | SUB | **Submittal** |  |  | 2027-09-02 | 2027-09-08 |  |  |  |  |  |  |  |  |  |  |  |  |  |  |  |
| EHF-E1030 |  | Concept design: submittal - Hufuf |  | 5d | 2027-09-02 | 2027-09-08 | EHF-E1010 | 292d | 0d | Contract cost (BOQ x payment milestones) [28285 SAR]; Progress weight (fair EPC distribution, SAR value) [8060 h] | 8,060 | EWR | EHF | EWR | Standard | ENG | DOCS | ETECHS | Concept | Submittal | MS2 |
|  | APR | **Approval** |  |  | 2027-09-09 | 2027-09-30 |  |  |  |  |  |  |  |  |  |  |  |  |  |  |  |
| EHF-E1040 |  | Concept design: SAR review and approval - Hufuf |  | 15d | 2027-09-09 | 2027-09-30 | EHF-E1030 | 317d | 25d | Contract cost (BOQ x payment milestones) [28285 SAR]; Progress weight (fair EPC distribution, SAR value) [24180 h] | 24,180 | EWR | EHF | EWR | Standard | ENG | DOCS | SAR | Concept | Approval | MS3 |
|  | PRE | **Preliminary (schematic) design** |  |  | 2027-09-09 | 2027-10-12 |  |  |  |  |  |  |  |  |  |  |  |  |  |  |  |
|  | SUB | **Submittal** |  |  | 2027-09-09 | 2027-09-20 |  |  |  |  |  |  |  |  |  |  |  |  |  |  |  |
| EHF-E1050 |  | Preliminary design: submittal - Hufuf |  | 8d | 2027-09-09 | 2027-09-20 | EHF-E1030 | 292d | 0d | Contract cost (BOQ x payment milestones) [56570 SAR]; Progress weight (fair EPC distribution, SAR value) [20460 h] | 20,460 | EWR | EHF | EWR | Standard | ENG | DOCS | ETECHS | Preliminary | Submittal | MS2 |
|  | APR | **Approval** |  |  | 2027-09-21 | 2027-10-12 |  |  |  |  |  |  |  |  |  |  |  |  |  |  |  |
| EHF-E1060 |  | Preliminary design: SAR review and approval - Hufuf |  | 15d | 2027-09-21 | 2027-10-12 | EHF-E1050 | 309d | 17d | Contract cost (BOQ x payment milestones) [56570 SAR]; Progress weight (fair EPC distribution, SAR value) [38440 h] | 38,440 | EWR | EHF | EWR | Standard | ENG | DOCS | SAR | Preliminary | Approval | MS3 |
|  | DET | **Detailed design** |  |  | 2027-09-21 | 2027-10-28 |  |  |  |  |  |  |  |  |  |  |  |  |  |  |  |
|  | SUB | **Submittal** |  |  | 2027-09-21 | 2027-10-07 |  |  |  |  |  |  |  |  |  |  |  |  |  |  |  |
| EHF-E1070 |  | Detailed design: submittal (drawings, BOQ, data sheets) - Hufuf |  | 12d | 2027-09-21 | 2027-10-07 | EHF-E1050 | 292d | 0d | Contract cost (BOQ x payment milestones) [113140 SAR]; Progress weight (fair EPC distribution, SAR value) [43400 h] | 43,400 | EWR | EHF | EWR | Standard | ENG | DOCS | ETECHS | Detailed | Submittal | MS2 |
|  | APR | **Approval** |  |  | 2027-10-10 | 2027-10-28 |  |  |  |  |  |  |  |  |  |  |  |  |  |  |  |
| EHF-E1080 |  | Detailed design: SAR review and approval - Hufuf |  | 15d | 2027-10-10 | 2027-10-28 | EHF-E1070 | 297d | 5d | Contract cost (BOQ x payment milestones) [113140 SAR]; Progress weight (fair EPC distribution, SAR value) [54560 h] | 54,560 | EWR | EHF | EWR | Standard | ENG | DOCS | SAR | Detailed | Approval | MS3 |
|  | IFC | **IFC and shop drawings** |  |  | 2027-10-10 | 2027-11-04 |  |  |  |  |  |  |  |  |  |  |  |  |  |  |  |
|  | SUB | **Submittal** |  |  | 2027-10-10 | 2027-10-14 |  |  |  |  |  |  |  |  |  |  |  |  |  |  |  |
| EHF-E1090 |  | IFC and shop drawings: submittal - Hufuf |  | 5d | 2027-10-10 | 2027-10-14 | EHF-E1070 | 292d | 0d | Contract cost (BOQ x payment milestones) [56570 SAR]; Progress weight (fair EPC distribution, SAR value) [14880 h] | 14,880 | EWR | EHF | EWR | Standard | ENG | DOCS | ETECHS | IFC | Submittal | MS2 |

| ID | WBS | Activity | Type | Duration | Start | Finish | Predecessors | Total float | Free float | Resources | Cost | Area | Station | Railway | Priority | Responsibility | Design stage | Submittal or approval | EPC phase | Discipline | Payment milestone |
| --- | --- | --- | --- | --- | --- | --- | --- | --- | --- | --- | --- | --- | --- | --- | --- | --- | --- | --- | --- | --- | --- |
|  | APR | **Approval** |  |  | 2027-10-17 | 2027-11-04 |  |  |  |  |  |  |  |  |  |  |  |  |  |  |  |
| EHF-E1100 |  | IFC and shop drawings: SAR approval and release - Hufuf |  | 15d | 2027-10-17 | 2027-11-04 | EHF-E1090 | 292d | 0d | Contract cost (BOQ x payment milestones) [56570 SAR]; Progress weight (fair EPC distribution, SAR value) [44020 h] | 44,020 | EWR | EHF | EWR | Standard | SAR | IFC | Approval | ENG | DOCS | MS3 |
|  | HCS | **HCIS documentation (Stage 3 and 4)** |  |  | 2027-09-29 | 2027-11-04 |  |  |  |  |  |  |  |  |  |  |  |  |  |  |  |
|  | SUB | **Submittal** |  |  | 2027-09-29 | 2027-10-14 |  |  |  |  |  |  |  |  |  |  |  |  |  |  |  |
| EHF-E1110 |  | HCIS Stage 3 and 4 documents: preparation - Hufuf |  | 12d | 2027-09-29 | 2027-10-14 | EHF-E1050 FS+5d, EHF-E1090 FF | 292d | 0d | Contract cost (BOQ x payment milestones) [14143 SAR]; Progress weight (fair EPC distribution, SAR value) [8680 h] | 8,680 | EWR | EHF | EWR | Standard | ETECHS | HCIS | Submittal | ENG | DOCS | MS2 |
|  | APR | **Approval** |  |  | 2027-10-17 | 2027-11-04 |  |  |  |  |  |  |  |  |  |  |  |  |  |  |  |
| EHF-E1120 |  | HCIS Stage 3 and 4 documents: SAR final review and HCIS submission - Hufuf |  | 15d | 2027-10-17 | 2027-11-04 | EHF-E1110 | 292d | 0d | Contract cost (BOQ x payment milestones) [14143 SAR]; Progress weight (fair EPC distribution, SAR value) [11160 h] | 11,160 | EWR | EHF | EWR | Standard | SAR/HCIS | HCIS | Approval | ENG | DOCS | MS3 |
|  | ASB | **As-built and O&M documentation** |  |  | 2028-06-04 | 2028-08-03 |  |  |  |  |  |  |  |  |  |  |  |  |  |  |  |
|  | SUB | **Submittal** |  |  | 2028-06-04 | 2028-07-13 |  |  |  |  |  |  |  |  |  |  |  |  |  |  |  |
| EHF-E1130 |  | As-built and O&M documentation: submittal - Hufuf |  | 30d | 2028-06-04 | 2028-07-13 | EHF-C2100 | 292d | 0d | Contract cost (BOQ x payment milestones) [42428 SAR]; Progress weight (fair EPC distribution, SAR value) [21700 h] | 21,700 | EWR | EHF | EWR | Standard | ETECHS | As-built | Submittal | ENG | DOCS | MS7 |
|  | APR | **Approval** |  |  | 2028-07-16 | 2028-08-03 |  |  |  |  |  |  |  |  |  |  |  |  |  |  |  |
| EHF-E1140 |  | As-built and O&M documentation: SAR review and approval - Hufuf |  | 15d | 2028-07-16 | 2028-08-03 | EHF-E1130 | 292d | 0d | Contract cost (BOQ x payment milestones) [14143 SAR]; Progress weight (fair EPC distribution, SAR value) [11160 h] | 11,160 | EWR | EHF | EWR | Standard | SAR | As-built | Approval | ENG | DOCS | MS7 |
|  | EAB | **Abqaiq (EWR)** |  |  | 2028-04-05 | 2029-03-15 |  |  |  |  |  |  |  |  |  |  |  |  |  |  |  |
| EAB-E1200 |  | MS2 Engineering submittal complete (10%) - Abqaiq | milestone | 0d | 2028-06-06 | 2028-06-06 | EAB-E1090, EAB-E1110 | 153d | 15d |  |  | EWR | EAB | EWR | Standard | ETECHS | - | - | MS | DOCS | MS2 |
| EAB-E1210 |  | MS3 Engineering approved by SAR (10%) - Abqaiq | milestone | 0d | 2028-06-27 | 2028-06-27 | EAB-E1020, EAB-E1040, EAB-E1060, EAB-E1080, EAB-E1100, EAB-E1120, EAB-E1200 | 138d | 0d |  |  | EWR | EAB | EWR | Standard | SAR | - | - | MS | DOCS | MS3 |
|  | SRV | **Site survey and as-found verification** |  |  | 2028-04-05 | 2028-04-25 |  |  |  |  |  |  |  |  |  |  |  |  |  |  |  |
|  | SUB | **Submittal** |  |  | 2028-04-05 | 2028-04-18 |  |  |  |  |  |  |  |  |  |  |  |  |  |  |  |
| EAB-E1010 |  | Survey: submittal of site survey and as-found report - Abqaiq |  | 10d | 2028-04-05 | 2028-04-18 | PRJ-M2100 FS+276d | 138d | 0d | Contract cost (BOQ x payment milestones) [10028 SAR]; Progress weight (fair EPC distribution, SAR value) [12400 h] | 12,400 | EWR | EAB | EWR | Standard | ETECHS | Survey | Submittal | ENG | DOCS | MS2 |
|  | APR | **Approval** |  |  | 2028-04-19 | 2028-04-25 |  |  |  |  |  |  |  |  |  |  |  |  |  |  |  |
| EAB-E1020 |  | Survey: SAR approval of survey report - Abqaiq |  | 5d | 2028-04-19 | 2028-04-25 | EAB-E1010 | 178d | 40d | Contract cost (BOQ x payment milestones) [10028 SAR]; Progress weight (fair EPC distribution, SAR value) [6200 h] | 6,200 | EWR | EAB | EWR | Standard | SAR | Survey | Approval | ENG | DOCS | MS3 |
|  | CNC | **Concept design** |  |  | 2028-04-19 | 2028-05-23 |  |  |  |  |  |  |  |  |  |  |  |  |  |  |  |
|  | SUB | **Submittal** |  |  | 2028-04-19 | 2028-04-25 |  |  |  |  |  |  |  |  |  |  |  |  |  |  |  |
| EAB-E1030 |  | Concept design: submittal - Abqaiq |  | 5d | 2028-04-19 | 2028-04-25 | EAB-E1010 | 138d | 0d | Contract cost (BOQ x payment milestones) [20057 SAR]; Progress weight (fair EPC distribution, SAR value) [5580 h] | 5,580 | EWR | EAB | EWR | Standard | ETECHS | Concept | Submittal | ENG | DOCS | MS2 |
|  | APR | **Approval** |  |  | 2028-04-26 | 2028-05-23 |  |  |  |  |  |  |  |  |  |  |  |  |  |  |  |
| EAB-E1040 |  | Concept design: SAR review and approval - Abqaiq |  | 15d | 2028-04-26 | 2028-05-23 | EAB-E1030 | 163d | 25d | Contract cost (BOQ x payment milestones) [20057 SAR]; Progress weight (fair EPC distribution, SAR value) [17360 h] | 17,360 | EWR | EAB | EWR | Standard | SAR | Concept | Approval | ENG | DOCS | MS3 |

| ID | WBS | Activity | Duration | Start | Finish | Predecessors | Total float | Free float | Resources | Cost | Area | Station | Railway | Priority | Responsibility | Design stage | Submittal or approval | EPC phase | Discipline | Payment milestone |
| --- | --- | --- | --- | --- | --- | --- | --- | --- | --- | --- | --- | --- | --- | --- | --- | --- | --- | --- | --- | --- |
|  | PRE | **Preliminary (schematic) design** |  | 2028-04-26 | 2028-06-04 |  |  |  |  |  |  |  |  |  |  |  |  |  |  |  |
|  | SUB | **Submittal** |  | 2028-04-26 | 2028-05-14 |  |  |  |  |  |  |  |  |  |  |  |  |  |  |  |
| EAB-E1050 |  | Preliminary design: submittal - Abqaiq | 8d | 2028-04-26 | 2028-05-14 | EAB-E1030 | 138d | 0d | Contract cost (BOQ x payment milestones) [40114 SAR]; Progress weight (fair EPC distribution, SAR value) [14260 h] | 14,260 | EWR | EAB | EWR | Standard | ETECHS | Preliminary | Submittal | ENG | DOCS | MS2 |
|  | APR | **Approval** |  | 2028-05-15 | 2028-06-04 |  |  |  |  |  |  |  |  |  |  |  |  |  |  |  |
| EAB-E1060 |  | Preliminary design: SAR review and approval - Abqaiq | 15d | 2028-05-15 | 2028-06-04 | EAB-E1050 | 155d | 17d | Contract cost (BOQ x payment milestones) [40114 SAR]; Progress weight (fair EPC distribution, SAR value) [27280 h] | 27,280 | EWR | EAB | EWR | Standard | SAR | Preliminary | Approval | ENG | DOCS | MS3 |
|  | DET | **Detailed design** |  | 2028-05-15 | 2028-06-20 |  |  |  |  |  |  |  |  |  |  |  |  |  |  |  |
|  | SUB | **Submittal** |  | 2028-05-15 | 2028-05-30 |  |  |  |  |  |  |  |  |  |  |  |  |  |  |  |
| EAB-E1070 |  | Detailed design: submittal (drawings, BOQ, data sheets) - Abqaiq | 12d | 2028-05-15 | 2028-05-30 | EAB-E1050 | 138d | 0d | Contract cost (BOQ x payment milestones) [80227 SAR]; Progress weight (fair EPC distribution, SAR value) [31000 h] | 31,000 | EWR | EAB | EWR | Standard | ETECHS | Detailed | Submittal | ENG | DOCS | MS2 |
|  | APR | **Approval** |  | 2028-05-31 | 2028-06-20 |  |  |  |  |  |  |  |  |  |  |  |  |  |  |  |
| EAB-E1080 |  | Detailed design: SAR review and approval - Abqaiq | 15d | 2028-05-31 | 2028-06-20 | EAB-E1070 | 143d | 5d | Contract cost (BOQ x payment milestones) [80227 SAR]; Progress weight (fair EPC distribution, SAR value) [38440 h] | 38,440 | EWR | EAB | EWR | Standard | SAR | Detailed | Approval | ENG | DOCS | MS3 |
|  | IFC | **IFC and shop drawings** |  | 2028-05-31 | 2028-06-27 |  |  |  |  |  |  |  |  |  |  |  |  |  |  |  |
|  | SUB | **Submittal** |  | 2028-05-31 | 2028-06-06 |  |  |  |  |  |  |  |  |  |  |  |  |  |  |  |
| EAB-E1090 |  | IFC and shop drawings: submittal - Abqaiq | 5d | 2028-05-31 | 2028-06-06 | EAB-E1070 | 138d | 0d | Contract cost (BOQ x payment milestones) [40114 SAR]; Progress weight (fair EPC distribution, SAR value) [10540 h] | 10,540 | EWR | EAB | EWR | Standard | ETECHS | IFC | Submittal | ENG | DOCS | MS2 |
|  | APR | **Approval** |  | 2028-06-07 | 2028-06-27 |  |  |  |  |  |  |  |  |  |  |  |  |  |  |  |
| EAB-E1100 |  | IFC and shop drawings: SAR approval and release - Abqaiq | 15d | 2028-06-07 | 2028-06-27 | EAB-E1090 | 138d | 0d | Contract cost (BOQ x payment milestones) [40114 SAR]; Progress weight (fair EPC distribution, SAR value) [31000 h] | 31,000 | EWR | EAB | EWR | Standard | SAR | IFC | Approval | ENG | DOCS | MS3 |
|  | HCS | **HCIS documentation (Stage 3 and 4)** |  | 2028-05-22 | 2028-06-27 |  |  |  |  |  |  |  |  |  |  |  |  |  |  |  |
|  | SUB | **Submittal** |  | 2028-05-22 | 2028-06-06 |  |  |  |  |  |  |  |  |  |  |  |  |  |  |  |
| EAB-E1110 |  | HCIS Stage 3 and 4 documents: preparation - Abqaiq | 12d | 2028-05-22 | 2028-06-06 | EAB-E1050 FS+5d, EAB-E1090 FF | 138d | 0d | Contract cost (BOQ x payment milestones) [10028 SAR]; Progress weight (fair EPC distribution, SAR value) [6200 h] | 6,200 | EWR | EAB | EWR | Standard | ETECHS | HCIS | Submittal | ENG | DOCS | MS2 |
|  | APR | **Approval** |  | 2028-06-07 | 2028-06-27 |  |  |  |  |  |  |  |  |  |  |  |  |  |  |  |
| EAB-E1120 |  | HCIS Stage 3 and 4 documents: SAR final review and HCIS submission - Abqaiq | 15d | 2028-06-07 | 2028-06-27 | EAB-E1110 | 138d | 0d | Contract cost (BOQ x payment milestones) [10028 SAR]; Progress weight (fair EPC distribution, SAR value) [7440 h] | 7,440 | EWR | EAB | EWR | Standard | SAR/HCIS | HCIS | Approval | ENG | DOCS | MS3 |
|  | ASB | **As-built and O&M documentation** |  | 2029-01-04 | 2029-03-15 |  |  |  |  |  |  |  |  |  |  |  |  |  |  |  |
|  | SUB | **Submittal** |  | 2029-01-04 | 2029-02-21 |  |  |  |  |  |  |  |  |  |  |  |  |  |  |  |
| EAB-E1130 |  | As-built and O&M documentation: submittal - Abqaiq | 30d | 2029-01-04 | 2029-02-21 | EAB-C2100 | 138d | 0d | Contract cost (BOQ x payment milestones) [30085 SAR]; Progress weight (fair EPC distribution, SAR value) [15500 h] | 15,500 | EWR | EAB | EWR | Standard | ETECHS | As-built | Submittal | ENG | DOCS | MS7 |
|  | APR | **Approval** |  | 2029-02-25 | 2029-03-15 |  |  |  |  |  |  |  |  |  |  |  |  |  |  |  |
| EAB-E1140 |  | As-built and O&M documentation: SAR review and approval - Abqaiq | 15d | 2029-02-25 | 2029-03-15 | EAB-E1130 | 138d | 0d | Contract cost (BOQ x payment milestones) [10028 SAR]; Progress weight (fair EPC distribution, SAR value) [7440 h] | 7,440 | EWR | EAB | EWR | Standard | SAR | As-built | Approval | ENG | DOCS | MS7 |

| ID | WBS | Activity | Type | Duration | Start | Finish | Predecessors | Total float | Free float | Resources | Cost | Area | Station | Railway | Priority | EPC phase | Discipline | Responsibility | Design stage | Submittal or approval | Payment milestone |
| --- | --- | --- | --- | --- | --- | --- | --- | --- | --- | --- | --- | --- | --- | --- | --- | --- | --- | --- | --- | --- | --- |
|  | HHR | **HHR - Haramain High Speed Rail** |  |  | 2027-03-04 | 2029-07-11 |  |  |  |  |  |  |  |  |  |  |  |  |  |  |  |
|  | HJD | **Jeddah (HHR)** |  |  | 2027-03-04 | 2028-08-31 |  |  |  |  |  |  |  |  |  |  |  |  |  |  |  |
| HJD-E1200 |  | MS2 Engineering submittal complete (10%) - Jeddah | milestone | 0d | 2027-06-23 | 2027-06-23 | HJD-E1090, HJD-E1110 | 282d | 15d |  |  | HHR | HJD | HHR | Standard | MS | DOCS | ETECHS | - | - | MS2 |
| HJD-E1210 |  | MS3 Engineering approved by SAR (10%) - Jeddah | milestone | 0d | 2027-07-14 | 2027-07-14 | HJD-E1020, HJD-E1040, HJD-E1060, HJD-E1080, HJD-E1100, HJD-E1120, HJD-E1200 | 267d | 0d |  |  | HHR | HJD | HHR | Standard | MS | DOCS | SAR | - | - | MS3 |
|  | SRV | **Site survey and as-found verification** |  |  | 2027-03-04 | 2027-04-14 |  |  |  |  |  |  |  |  |  |  |  |  |  |  |  |
|  | SUB | **Submittal** |  |  | 2027-03-04 | 2027-04-07 |  |  |  |  |  |  |  |  |  |  |  |  |  |  |  |
| HJD-E1010 |  | Survey: submittal of site survey and as-found report - Jeddah |  | 20d | 2027-03-04 | 2027-04-07 | PRJ-M2100 FS+8d | 267d | 0d | Contract cost (BOQ x payment milestones) [47754 SAR]; Progress weight (fair EPC distribution, SAR value) [70680 h] | 70,680 | HHR | HJD | HHR | Standard | ENG | DOCS | ETECHS | Survey | Submittal | MS2 |
|  | APR | **Approval** |  |  | 2027-04-08 | 2027-04-14 |  |  |  |  |  |  |  |  |  |  |  |  |  |  |  |
| HJD-E1020 |  | Survey: SAR approval of survey report - Jeddah |  | 5d | 2027-04-08 | 2027-04-14 | HJD-E1010 | 327d | 60d | Contract cost (BOQ x payment milestones) [47754 SAR]; Progress weight (fair EPC distribution, SAR value) [17360 h] | 17,360 | HHR | HJD | HHR | Standard | ENG | DOCS | SAR | Survey | Approval | MS3 |
|  | CNC | **Concept design** |  |  | 2027-04-08 | 2027-05-10 |  |  |  |  |  |  |  |  |  |  |  |  |  |  |  |
|  | SUB | **Submittal** |  |  | 2027-04-08 | 2027-04-19 |  |  |  |  |  |  |  |  |  |  |  |  |  |  |  |
| HJD-E1030 |  | Concept design: submittal - Jeddah |  | 8d | 2027-04-08 | 2027-04-19 | HJD-E1010 | 267d | 0d | Contract cost (BOQ x payment milestones) [95509 SAR]; Progress weight (fair EPC distribution, SAR value) [38440 h] | 38,440 | HHR | HJD | HHR | Standard | ENG | DOCS | ETECHS | Concept | Submittal | MS2 |
|  | APR | **Approval** |  |  | 2027-04-20 | 2027-05-10 |  |  |  |  |  |  |  |  |  |  |  |  |  |  |  |
| HJD-E1040 |  | Concept design: SAR review and approval - Jeddah |  | 15d | 2027-04-20 | 2027-05-10 | HJD-E1030 | 309d | 42d | Contract cost (BOQ x payment milestones) [95509 SAR]; Progress weight (fair EPC distribution, SAR value) [71920 h] | 71,920 | HHR | HJD | HHR | Standard | ENG | DOCS | SAR | Concept | Approval | MS3 |
|  | PRE | **Preliminary (schematic) design** |  |  | 2027-04-20 | 2027-06-03 |  |  |  |  |  |  |  |  |  |  |  |  |  |  |  |
|  | SUB | **Submittal** |  |  | 2027-04-20 | 2027-05-06 |  |  |  |  |  |  |  |  |  |  |  |  |  |  |  |
| HJD-E1050 |  | Preliminary design: submittal - Jeddah |  | 13d | 2027-04-20 | 2027-05-06 | HJD-E1030 | 267d | 0d | Contract cost (BOQ x payment milestones) [191018 SAR]; Progress weight (fair EPC distribution, SAR value) [91760 h] | 91,760 | HHR | HJD | HHR | Standard | ENG | DOCS | ETECHS | Preliminary | Submittal | MS2 |
|  | APR | **Approval** |  |  | 2027-05-09 | 2027-06-03 |  |  |  |  |  |  |  |  |  |  |  |  |  |  |  |
| HJD-E1060 |  | Preliminary design: SAR review and approval - Jeddah |  | 15d | 2027-05-09 | 2027-06-03 | HJD-E1050 | 296d | 29d | Contract cost (BOQ x payment milestones) [191018 SAR]; Progress weight (fair EPC distribution, SAR value) [106020 h] | 106,020 | HHR | HJD | HHR | Standard | ENG | DOCS | SAR | Preliminary | Approval | MS3 |
|  | DET | **Detailed design** |  |  | 2027-05-09 | 2027-07-01 |  |  |  |  |  |  |  |  |  |  |  |  |  |  |  |
|  | SUB | **Submittal** |  |  | 2027-05-09 | 2027-06-10 |  |  |  |  |  |  |  |  |  |  |  |  |  |  |  |
| HJD-E1070 |  | Detailed design: submittal (drawings, BOQ, data sheets) - Jeddah |  | 20d | 2027-05-09 | 2027-06-10 | HJD-E1050 | 267d | 0d | Contract cost (BOQ x payment milestones) [382035 SAR]; Progress weight (fair EPC distribution, SAR value) [188480 h] | 188,480 | HHR | HJD | HHR | Standard | ENG | DOCS | ETECHS | Detailed | Submittal | MS2 |
|  | APR | **Approval** |  |  | 2027-06-13 | 2027-07-01 |  |  |  |  |  |  |  |  |  |  |  |  |  |  |  |
| HJD-E1080 |  | Detailed design: SAR review and approval - Jeddah |  | 15d | 2027-06-13 | 2027-07-01 | HJD-E1070 | 276d | 9d | Contract cost (BOQ x payment milestones) [382035 SAR]; Progress weight (fair EPC distribution, SAR value) [141360 h] | 141,360 | HHR | HJD | HHR | Standard | ENG | DOCS | SAR | Detailed | Approval | MS3 |

| ID | WBS | Activity | Type | Duration | Start | Finish | Predecessors | Total float | Free float | Resources | Cost | Area | Station | Railway | Priority | Responsibility | Design stage | Submittal or approval | EPC phase | Discipline | Payment milestone |
| --- | --- | --- | --- | --- | --- | --- | --- | --- | --- | --- | --- | --- | --- | --- | --- | --- | --- | --- | --- | --- | --- |
|  | IFC | **IFC and shop drawings** |  |  | 2027-06-13 | 2027-07-14 |  |  |  |  |  |  |  |  |  |  |  |  |  |  |  |
|  | SUB | **Submittal** |  |  | 2027-06-13 | 2027-06-23 |  |  |  |  |  |  |  |  |  |  |  |  |  |  |  |
| HJD-E1090 |  | IFC and shop drawings: submittal - Jeddah |  | 9d | 2027-06-13 | 2027-06-23 | HJD-E1070 | 267d | 0d | Contract cost (BOQ x payment milestones) [191018 SAR]; Progress weight (fair EPC distribution, SAR value) [74400 h] | 74,400 | HHR | HJD | HHR | Standard | ETECHS | IFC | Submittal | ENG | DOCS | MS2 |
|  | APR | **Approval** |  |  | 2027-06-24 | 2027-07-14 |  |  |  |  |  |  |  |  |  |  |  |  |  |  |  |
| HJD-E1100 |  | IFC and shop drawings: SAR approval and release - Jeddah |  | 15d | 2027-06-24 | 2027-07-14 | HJD-E1090 | 267d | 0d | Contract cost (BOQ x payment milestones) [191018 SAR]; Progress weight (fair EPC distribution, SAR value) [124000 h] | 124,000 | HHR | HJD | HHR | Standard | SAR | IFC | Approval | ENG | DOCS | MS3 |
|  | HCS | **HCIS documentation (Stage 3 and 4)** |  |  | 2027-05-26 | 2027-07-14 |  |  |  |  |  |  |  |  |  |  |  |  |  |  |  |
|  | SUB | **Submittal** |  |  | 2027-05-26 | 2027-06-23 |  |  |  |  |  |  |  |  |  |  |  |  |  |  |  |
| HJD-E1110 |  | HCIS Stage 3 and 4 documents: preparation - Jeddah |  | 21d | 2027-05-26 | 2027-06-23 | HJD-E1050 FS+8d, HJD-E1090 FF | 267d | 0d | Contract cost (BOQ x payment milestones) [47754 SAR]; Progress weight (fair EPC distribution, SAR value) [38440 h] | 38,440 | HHR | HJD | HHR | Standard | ETECHS | HCIS | Submittal | ENG | DOCS | MS2 |
|  | APR | **Approval** |  |  | 2027-06-24 | 2027-07-14 |  |  |  |  |  |  |  |  |  |  |  |  |  |  |  |
| HJD-E1120 |  | HCIS Stage 3 and 4 documents: SAR final review and HCIS submission - Jeddah |  | 15d | 2027-06-24 | 2027-07-14 | HJD-E1110 | 267d | 0d | Contract cost (BOQ x payment milestones) [47754 SAR]; Progress weight (fair EPC distribution, SAR value) [27280 h] | 27,280 | HHR | HJD | HHR | Standard | SAR/HCIS | HCIS | Approval | ENG | DOCS | MS3 |
|  | ASB | **As-built and O&M documentation** |  |  | 2028-06-18 | 2028-08-31 |  |  |  |  |  |  |  |  |  |  |  |  |  |  |  |
|  | SUB | **Submittal** |  |  | 2028-06-18 | 2028-08-10 |  |  |  |  |  |  |  |  |  |  |  |  |  |  |  |
| HJD-E1130 |  | As-built and O&M documentation: submittal - Jeddah |  | 40d | 2028-06-18 | 2028-08-10 | HJD-C2100 | 267d | 0d | Contract cost (BOQ x payment milestones) [143263 SAR]; Progress weight (fair EPC distribution, SAR value) [79980 h] | 79,980 | HHR | HJD | HHR | Standard | ETECHS | As-built | Submittal | ENG | DOCS | MS7 |
|  | APR | **Approval** |  |  | 2028-08-13 | 2028-08-31 |  |  |  |  |  |  |  |  |  |  |  |  |  |  |  |
| HJD-E1140 |  | As-built and O&M documentation: SAR review and approval - Jeddah |  | 15d | 2028-08-13 | 2028-08-31 | HJD-E1130 | 267d | 0d | Contract cost (BOQ x payment milestones) [47754 SAR]; Progress weight (fair EPC distribution, SAR value) [29760 h] | 29,760 | HHR | HJD | HHR | Standard | SAR | As-built | Approval | ENG | DOCS | MS7 |
|  | HMK | **Makkah (HHR)** |  |  | 2027-10-10 | 2029-04-30 |  |  |  |  |  |  |  |  |  |  |  |  |  |  |  |
| HMK-E1200 |  | MS2 Engineering submittal complete (10%) - Makkah | milestone | 0d | 2028-01-13 | 2028-01-13 | HMK-E1090, HMK-E1110 | 121d | 15d |  |  | HHR | HMK | HHR | Standard | ETECHS | - | - | MS | DOCS | MS2 |
| HMK-E1210 |  | MS3 Engineering approved by SAR (10%) - Makkah | milestone | 0d | 2028-02-03 | 2028-02-03 | HMK-E1020, HMK-E1040, HMK-E1060, HMK-E1080, HMK-E1100, HMK-E1120, HMK-E1200 | 106d | 0d |  |  | HHR | HMK | HHR | Standard | SAR | - | - | MS | DOCS | MS3 |
|  | SRV | **Site survey and as-found verification** |  |  | 2027-10-10 | 2027-11-11 |  |  |  |  |  |  |  |  |  |  |  |  |  |  |  |
|  | SUB | **Submittal** |  |  | 2027-10-10 | 2027-11-04 |  |  |  |  |  |  |  |  |  |  |  |  |  |  |  |
| HMK-E1010 |  | Survey: submittal of site survey and as-found report - Makkah |  | 20d | 2027-10-10 | 2027-11-04 | PRJ-M2100 FS+153d | 106d | 0d | Contract cost (BOQ x payment milestones) [48550 SAR]; Progress weight (fair EPC distribution, SAR value) [71300 h] | 71,300 | HHR | HMK | HHR | Standard | ETECHS | Survey | Submittal | ENG | DOCS | MS2 |
|  | APR | **Approval** |  |  | 2027-11-07 | 2027-11-11 |  |  |  |  |  |  |  |  |  |  |  |  |  |  |  |
| HMK-E1020 |  | Survey: SAR approval of survey report - Makkah |  | 5d | 2027-11-07 | 2027-11-11 | HMK-E1010 | 166d | 60d | Contract cost (BOQ x payment milestones) [48550 SAR]; Progress weight (fair EPC distribution, SAR value) [17980 h] | 17,980 | HHR | HMK | HHR | Standard | SAR | Survey | Approval | ENG | DOCS | MS3 |
|  | CNC | **Concept design** |  |  | 2027-11-07 | 2027-12-07 |  |  |  |  |  |  |  |  |  |  |  |  |  |  |  |
|  | SUB | **Submittal** |  |  | 2027-11-07 | 2027-11-16 |  |  |  |  |  |  |  |  |  |  |  |  |  |  |  |
| HMK-E1030 |  | Concept design: submittal - Makkah |  | 8d | 2027-11-07 | 2027-11-16 | HMK-E1010 | 106d | 0d | Contract cost (BOQ x payment milestones) [97101 SAR]; Progress weight (fair EPC distribution, SAR value) [39060 h] | 39,060 | HHR | HMK | HHR | Standard | ETECHS | Concept | Submittal | ENG | DOCS | MS2 |

| ID | WBS | Activity | Duration | Start | Finish | Predecessors | Total float | Free float | Resources | Cost | Area | Station | Railway | Priority | Responsibility | Design stage | Submittal or approval | EPC phase | Discipline | Payment milestone |
| --- | --- | --- | --- | --- | --- | --- | --- | --- | --- | --- | --- | --- | --- | --- | --- | --- | --- | --- | --- | --- |
|  | APR | **Approval** |  | 2027-11-17 | 2027-12-07 |  |  |  |  |  |  |  |  |  |  |  |  |  |  |  |
| HMK-E1040 |  | Concept design: SAR review and approval - Makkah | 15d | 2027-11-17 | 2027-12-07 | HMK-E1030 | 148d | 42d | Contract cost (BOQ x payment milestones) [97101 SAR]; Progress weight (fair EPC distribution, SAR value) [73160 h] | 73,160 | HHR | HMK | HHR | Standard | SAR | Concept | Approval | ENG | DOCS | MS3 |
|  | PRE | **Preliminary (schematic) design** |  | 2027-11-17 | 2027-12-26 |  |  |  |  |  |  |  |  |  |  |  |  |  |  |  |
|  | SUB | **Submittal** |  | 2027-11-17 | 2027-12-05 |  |  |  |  |  |  |  |  |  |  |  |  |  |  |  |
| HMK-E1050 |  | Preliminary design: submittal - Makkah | 13d | 2027-11-17 | 2027-12-05 | HMK-E1030 | 106d | 0d | Contract cost (BOQ x payment milestones) [194202 SAR]; Progress weight (fair EPC distribution, SAR value) [93620 h] | 93,620 | HHR | HMK | HHR | Standard | ETECHS | Preliminary | Submittal | ENG | DOCS | MS2 |
|  | APR | **Approval** |  | 2027-12-06 | 2027-12-26 |  |  |  |  |  |  |  |  |  |  |  |  |  |  |  |
| HMK-E1060 |  | Preliminary design: SAR review and approval - Makkah | 15d | 2027-12-06 | 2027-12-26 | HMK-E1050 | 135d | 29d | Contract cost (BOQ x payment milestones) [194202 SAR]; Progress weight (fair EPC distribution, SAR value) [107880 h] | 107,880 | HHR | HMK | HHR | Standard | SAR | Preliminary | Approval | ENG | DOCS | MS3 |
|  | DET | **Detailed design** |  | 2027-12-06 | 2028-01-23 |  |  |  |  |  |  |  |  |  |  |  |  |  |  |  |
|  | SUB | **Submittal** |  | 2027-12-06 | 2028-01-02 |  |  |  |  |  |  |  |  |  |  |  |  |  |  |  |
| HMK-E1070 |  | Detailed design: submittal (drawings, BOQ, data sheets) - Makkah | 20d | 2027-12-06 | 2028-01-02 | HMK-E1050 | 106d | 0d | Contract cost (BOQ x payment milestones) [388404 SAR]; Progress weight (fair EPC distribution, SAR value) [191580 h] | 191,580 | HHR | HMK | HHR | Standard | ETECHS | Detailed | Submittal | ENG | DOCS | MS2 |
|  | APR | **Approval** |  | 2028-01-03 | 2028-01-23 |  |  |  |  |  |  |  |  |  |  |  |  |  |  |  |
| HMK-E1080 |  | Detailed design: SAR review and approval - Makkah | 15d | 2028-01-03 | 2028-01-23 | HMK-E1070 | 115d | 9d | Contract cost (BOQ x payment milestones) [388404 SAR]; Progress weight (fair EPC distribution, SAR value) [143840 h] | 143,840 | HHR | HMK | HHR | Standard | SAR | Detailed | Approval | ENG | DOCS | MS3 |
|  | IFC | **IFC and shop drawings** |  | 2028-01-03 | 2028-02-03 |  |  |  |  |  |  |  |  |  |  |  |  |  |  |  |
|  | SUB | **Submittal** |  | 2028-01-03 | 2028-01-13 |  |  |  |  |  |  |  |  |  |  |  |  |  |  |  |
| HMK-E1090 |  | IFC and shop drawings: submittal - Makkah | 9d | 2028-01-03 | 2028-01-13 | HMK-E1070 | 106d | 0d | Contract cost (BOQ x payment milestones) [194202 SAR]; Progress weight (fair EPC distribution, SAR value) [75640 h] | 75,640 | HHR | HMK | HHR | Standard | ETECHS | IFC | Submittal | ENG | DOCS | MS2 |
|  | APR | **Approval** |  | 2028-01-16 | 2028-02-03 |  |  |  |  |  |  |  |  |  |  |  |  |  |  |  |
| HMK-E1100 |  | IFC and shop drawings: SAR approval and release - Makkah | 15d | 2028-01-16 | 2028-02-03 | HMK-E1090 | 106d | 0d | Contract cost (BOQ x payment milestones) [194202 SAR]; Progress weight (fair EPC distribution, SAR value) [125860 h] | 125,860 | HHR | HMK | HHR | Standard | SAR | IFC | Approval | ENG | DOCS | MS3 |
|  | HCS | **HCIS documentation (Stage 3 and 4)** |  | 2027-12-16 | 2028-02-03 |  |  |  |  |  |  |  |  |  |  |  |  |  |  |  |
|  | SUB | **Submittal** |  | 2027-12-16 | 2028-01-13 |  |  |  |  |  |  |  |  |  |  |  |  |  |  |  |
| HMK-E1110 |  | HCIS Stage 3 and 4 documents: preparation - Makkah | 21d | 2027-12-16 | 2028-01-13 | HMK-E1050 FS+8d, HMK-E1090 FF | 106d | 0d | Contract cost (BOQ x payment milestones) [48550 SAR]; Progress weight (fair EPC distribution, SAR value) [39060 h] | 39,060 | HHR | HMK | HHR | Standard | ETECHS | HCIS | Submittal | ENG | DOCS | MS2 |
|  | APR | **Approval** |  | 2028-01-16 | 2028-02-03 |  |  |  |  |  |  |  |  |  |  |  |  |  |  |  |
| HMK-E1120 |  | HCIS Stage 3 and 4 documents: SAR final review and HCIS submission - Makkah | 15d | 2028-01-16 | 2028-02-03 | HMK-E1110 | 106d | 0d | Contract cost (BOQ x payment milestones) [48550 SAR]; Progress weight (fair EPC distribution, SAR value) [27900 h] | 27,900 | HHR | HMK | HHR | Standard | SAR/HCIS | HCIS | Approval | ENG | DOCS | MS3 |
|  | ASB | **As-built and O&M documentation** |  | 2029-01-29 | 2029-04-30 |  |  |  |  |  |  |  |  |  |  |  |  |  |  |  |
|  | SUB | **Submittal** |  | 2029-01-29 | 2029-04-02 |  |  |  |  |  |  |  |  |  |  |  |  |  |  |  |
| HMK-E1130 |  | As-built and O&M documentation: submittal - Makkah | 40d | 2029-01-29 | 2029-04-02 | HMK-C2100 | 106d | 0d | Contract cost (BOQ x payment milestones) [145651 SAR]; Progress weight (fair EPC distribution, SAR value) [81220 h] | 81,220 | HHR | HMK | HHR | Standard | ETECHS | As-built | Submittal | ENG | DOCS | MS7 |

| ID | WBS | Activity | Type | Duration | Start | Finish | Predecessors | Total float | Free float | Resources | Cost | Area | Station | Railway | Priority | Responsibility | Design stage | Submittal or approval | EPC phase | Discipline | Payment milestone |
| --- | --- | --- | --- | --- | --- | --- | --- | --- | --- | --- | --- | --- | --- | --- | --- | --- | --- | --- | --- | --- | --- |
|  | APR | **Approval** |  |  | 2029-04-03 | 2029-04-30 |  |  |  |  |  |  |  |  |  |  |  |  |  |  |  |
| HMK-E1140 |  | As-built and O&M documentation: SAR review and approval - Makkah |  | 15d | 2029-04-03 | 2029-04-30 | HMK-E1130 | 106d | 0d | Contract cost (BOQ x payment milestones) [48550 SAR]; Progress weight (fair EPC distribution, SAR value) [30380 h] | 30,380 | HHR | HMK | HHR | Standard | SAR | As-built | Approval | ENG | DOCS | MS7 |
|  | HKA | **KAEC (HHR)** |  |  | 2028-02-09 | 2029-07-05 |  |  |  |  |  |  |  |  |  |  |  |  |  |  |  |
| HKA-E1200 |  | MS2 Engineering submittal complete (10%) - KAEC | milestone | 0d | 2028-05-30 | 2028-05-30 | HKA-E1090, HKA-E1110 | 73d | 15d |  |  | HHR | HKA | HHR | Standard | ETECHS | - | - | MS | DOCS | MS2 |
| HKA-E1210 |  | MS3 Engineering approved by SAR (10%) - KAEC | milestone | 0d | 2028-06-20 | 2028-06-20 | HKA-E1020, HKA-E1040, HKA-E1060, HKA-E1080, HKA-E1100, HKA-E1120, HKA-E1200 | 58d | 0d |  |  | HHR | HKA | HHR | Standard | SAR | - | - | MS | DOCS | MS3 |
|  | SRV | **Site survey and as-found verification** |  |  | 2028-02-09 | 2028-03-21 |  |  |  |  |  |  |  |  |  |  |  |  |  |  |  |
|  | SUB | **Submittal** |  |  | 2028-02-09 | 2028-03-14 |  |  |  |  |  |  |  |  |  |  |  |  |  |  |  |
| HKA-E1010 |  | Survey: submittal of site survey and as-found report - KAEC |  | 20d | 2028-02-09 | 2028-03-14 | PRJ-M2100 FS+241d | 58d | 0d | Contract cost (BOQ x payment milestones) [27822 SAR]; Progress weight (fair EPC distribution, SAR value) [40920 h] | 40,920 | HHR | HKA | HHR | Standard | ETECHS | Survey | Submittal | ENG | DOCS | MS2 |
|  | APR | **Approval** |  |  | 2028-03-15 | 2028-03-21 |  |  |  |  |  |  |  |  |  |  |  |  |  |  |  |
| HKA-E1020 |  | Survey: SAR approval of survey report - KAEC |  | 5d | 2028-03-15 | 2028-03-21 | HKA-E1010 | 118d | 60d | Contract cost (BOQ x payment milestones) [27822 SAR]; Progress weight (fair EPC distribution, SAR value) [10540 h] | 10,540 | HHR | HKA | HHR | Standard | SAR | Survey | Approval | ENG | DOCS | MS3 |
|  | CNC | **Concept design** |  |  | 2028-03-15 | 2028-04-16 |  |  |  |  |  |  |  |  |  |  |  |  |  |  |  |
|  | SUB | **Submittal** |  |  | 2028-03-15 | 2028-03-26 |  |  |  |  |  |  |  |  |  |  |  |  |  |  |  |
| HKA-E1030 |  | Concept design: submittal - KAEC |  | 8d | 2028-03-15 | 2028-03-26 | HKA-E1010 | 58d | 0d | Contract cost (BOQ x payment milestones) [55644 SAR]; Progress weight (fair EPC distribution, SAR value) [22320 h] | 22,320 | HHR | HKA | HHR | Standard | ETECHS | Concept | Submittal | ENG | DOCS | MS2 |
|  | APR | **Approval** |  |  | 2028-03-27 | 2028-04-16 |  |  |  |  |  |  |  |  |  |  |  |  |  |  |  |
| HKA-E1040 |  | Concept design: SAR review and approval - KAEC |  | 15d | 2028-03-27 | 2028-04-16 | HKA-E1030 | 100d | 42d | Contract cost (BOQ x payment milestones) [55644 SAR]; Progress weight (fair EPC distribution, SAR value) [41540 h] | 41,540 | HHR | HKA | HHR | Standard | SAR | Concept | Approval | ENG | DOCS | MS3 |
|  | PRE | **Preliminary (schematic) design** |  |  | 2028-03-27 | 2028-05-10 |  |  |  |  |  |  |  |  |  |  |  |  |  |  |  |
|  | SUB | **Submittal** |  |  | 2028-03-27 | 2028-04-12 |  |  |  |  |  |  |  |  |  |  |  |  |  |  |  |
| HKA-E1050 |  | Preliminary design: submittal - KAEC |  | 13d | 2028-03-27 | 2028-04-12 | HKA-E1030 | 58d | 0d | Contract cost (BOQ x payment milestones) [111288 SAR]; Progress weight (fair EPC distribution, SAR value) [53320 h] | 53,320 | HHR | HKA | HHR | Standard | ETECHS | Preliminary | Submittal | ENG | DOCS | MS2 |
|  | APR | **Approval** |  |  | 2028-04-13 | 2028-05-10 |  |  |  |  |  |  |  |  |  |  |  |  |  |  |  |
| HKA-E1060 |  | Preliminary design: SAR review and approval - KAEC |  | 15d | 2028-04-13 | 2028-05-10 | HKA-E1050 | 87d | 29d | Contract cost (BOQ x payment milestones) [111288 SAR]; Progress weight (fair EPC distribution, SAR value) [62000 h] | 62,000 | HHR | HKA | HHR | Standard | SAR | Preliminary | Approval | ENG | DOCS | MS3 |
|  | DET | **Detailed design** |  |  | 2028-04-13 | 2028-06-07 |  |  |  |  |  |  |  |  |  |  |  |  |  |  |  |
|  | SUB | **Submittal** |  |  | 2028-04-13 | 2028-05-17 |  |  |  |  |  |  |  |  |  |  |  |  |  |  |  |
| HKA-E1070 |  | Detailed design: submittal (drawings, BOQ, data sheets) - KAEC |  | 20d | 2028-04-13 | 2028-05-17 | HKA-E1050 | 58d | 0d | Contract cost (BOQ x payment milestones) [222575 SAR]; Progress weight (fair EPC distribution, SAR value) [109740 h] | 109,740 | HHR | HKA | HHR | Standard | ETECHS | Detailed | Submittal | ENG | DOCS | MS2 |
|  | APR | **Approval** |  |  | 2028-05-18 | 2028-06-07 |  |  |  |  |  |  |  |  |  |  |  |  |  |  |  |
| HKA-E1080 |  | Detailed design: SAR review and approval - KAEC |  | 15d | 2028-05-18 | 2028-06-07 | HKA-E1070 | 67d | 9d | Contract cost (BOQ x payment milestones) [222575 SAR]; Progress weight (fair EPC distribution, SAR value) [82460 h] | 82,460 | HHR | HKA | HHR | Standard | SAR | Detailed | Approval | ENG | DOCS | MS3 |

| ID | WBS | Activity | Type | Duration | Start | Finish | Predecessors | Total float | Free float | Resources | Cost | Area | Station | Railway | Priority | Responsibility | Design stage | Submittal or approval | EPC phase | Discipline | Payment milestone |
| --- | --- | --- | --- | --- | --- | --- | --- | --- | --- | --- | --- | --- | --- | --- | --- | --- | --- | --- | --- | --- | --- |
|  | IFC | **IFC and shop drawings** |  |  | 2028-05-18 | 2028-06-20 |  |  |  |  |  |  |  |  |  |  |  |  |  |  |  |
|  | SUB | **Submittal** |  |  | 2028-05-18 | 2028-05-30 |  |  |  |  |  |  |  |  |  |  |  |  |  |  |  |
| HKA-E1090 |  | IFC and shop drawings: submittal - KAEC |  | 9d | 2028-05-18 | 2028-05-30 | HKA-E1070 | 58d | 0d | Contract cost (BOQ x payment milestones) [111288 SAR]; Progress weight (fair EPC distribution, SAR value) [43400 h] | 43,400 | HHR | HKA | HHR | Standard | ETECHS | IFC | Submittal | ENG | DOCS | MS2 |
|  | APR | **Approval** |  |  | 2028-05-31 | 2028-06-20 |  |  |  |  |  |  |  |  |  |  |  |  |  |  |  |
| HKA-E1100 |  | IFC and shop drawings: SAR approval and release - KAEC |  | 15d | 2028-05-31 | 2028-06-20 | HKA-E1090 | 58d | 0d | Contract cost (BOQ x payment milestones) [111288 SAR]; Progress weight (fair EPC distribution, SAR value) [71920 h] | 71,920 | HHR | HKA | HHR | Standard | SAR | IFC | Approval | ENG | DOCS | MS3 |
|  | HCS | **HCIS documentation (Stage 3 and 4)** |  |  | 2028-04-25 | 2028-06-20 |  |  |  |  |  |  |  |  |  |  |  |  |  |  |  |
|  | SUB | **Submittal** |  |  | 2028-04-25 | 2028-05-30 |  |  |  |  |  |  |  |  |  |  |  |  |  |  |  |
| HKA-E1110 |  | HCIS Stage 3 and 4 documents: preparation - KAEC |  | 21d | 2028-04-25 | 2028-05-30 | HKA-E1050 FS+8d, HKA-E1090 FF | 58d | 0d | Contract cost (BOQ x payment milestones) [27822 SAR]; Progress weight (fair EPC distribution, SAR value) [22320 h] | 22,320 | HHR | HKA | HHR | Standard | ETECHS | HCIS | Submittal | ENG | DOCS | MS2 |
|  | APR | **Approval** |  |  | 2028-05-31 | 2028-06-20 |  |  |  |  |  |  |  |  |  |  |  |  |  |  |  |
| HKA-E1120 |  | HCIS Stage 3 and 4 documents: SAR final review and HCIS submission - KAEC |  | 15d | 2028-05-31 | 2028-06-20 | HKA-E1110 | 58d | 0d | Contract cost (BOQ x payment milestones) [27822 SAR]; Progress weight (fair EPC distribution, SAR value) [16120 h] | 16,120 | HHR | HKA | HHR | Standard | SAR/HCIS | HCIS | Approval | ENG | DOCS | MS3 |
|  | ASB | **As-built and O&M documentation** |  |  | 2029-04-15 | 2029-07-05 |  |  |  |  |  |  |  |  |  |  |  |  |  |  |  |
|  | SUB | **Submittal** |  |  | 2029-04-15 | 2029-06-14 |  |  |  |  |  |  |  |  |  |  |  |  |  |  |  |
| HKA-E1130 |  | As-built and O&M documentation: submittal - KAEC |  | 40d | 2029-04-15 | 2029-06-14 | HKA-C2100 | 58d | 0d | Contract cost (BOQ x payment milestones) [83466 SAR]; Progress weight (fair EPC distribution, SAR value) [46500 h] | 46,500 | HHR | HKA | HHR | Standard | ETECHS | As-built | Submittal | ENG | DOCS | MS7 |
|  | APR | **Approval** |  |  | 2029-06-17 | 2029-07-05 |  |  |  |  |  |  |  |  |  |  |  |  |  |  |  |
| HKA-E1140 |  | As-built and O&M documentation: SAR review and approval - KAEC |  | 15d | 2029-06-17 | 2029-07-05 | HKA-E1130 | 58d | 0d | Contract cost (BOQ x payment milestones) [27822 SAR]; Progress weight (fair EPC distribution, SAR value) [17360 h] | 17,360 | HHR | HKA | HHR | Standard | SAR | As-built | Approval | ENG | DOCS | MS7 |
|  | HMD | **Madinah (HHR)** |  |  | 2028-02-09 | 2029-07-11 |  |  |  |  |  |  |  |  |  |  |  |  |  |  |  |
| HMD-E1200 |  | MS2 Engineering submittal complete (10%) - Madinah | milestone | 0d | 2028-05-30 | 2028-05-30 | HMD-E1090, HMD-E1110 | 69d | 15d |  |  | HHR | HMD | HHR | Standard | ETECHS | - | - | MS | DOCS | MS2 |
| HMD-E1210 |  | MS3 Engineering approved by SAR (10%) - Madinah | milestone | 0d | 2028-06-20 | 2028-06-20 | HMD-E1020, HMD-E1040, HMD-E1060, HMD-E1080, HMD-E1100, HMD-E1120, HMD-E1200 | 54d | 0d |  |  | HHR | HMD | HHR | Standard | SAR | - | - | MS | DOCS | MS3 |
|  | SRV | **Site survey and as-found verification** |  |  | 2028-02-09 | 2028-03-21 |  |  |  |  |  |  |  |  |  |  |  |  |  |  |  |
|  | SUB | **Submittal** |  |  | 2028-02-09 | 2028-03-14 |  |  |  |  |  |  |  |  |  |  |  |  |  |  |  |
| HMD-E1010 |  | Survey: submittal of site survey and as-found report - Madinah |  | 20d | 2028-02-09 | 2028-03-14 | PRJ-M2100 FS+241d | 54d | 0d | Contract cost (BOQ x payment milestones) [27811 SAR]; Progress weight (fair EPC distribution, SAR value) [40920 h] | 40,920 | HHR | HMD | HHR | Standard | ETECHS | Survey | Submittal | ENG | DOCS | MS2 |
|  | APR | **Approval** |  |  | 2028-03-15 | 2028-03-21 |  |  |  |  |  |  |  |  |  |  |  |  |  |  |  |
| HMD-E1020 |  | Survey: SAR approval of survey report - Madinah |  | 5d | 2028-03-15 | 2028-03-21 | HMD-E1010 | 114d | 60d | Contract cost (BOQ x payment milestones) [27811 SAR]; Progress weight (fair EPC distribution, SAR value) [10540 h] | 10,540 | HHR | HMD | HHR | Standard | SAR | Survey | Approval | ENG | DOCS | MS3 |
|  | CNC | **Concept design** |  |  | 2028-03-15 | 2028-04-16 |  |  |  |  |  |  |  |  |  |  |  |  |  |  |  |
|  | SUB | **Submittal** |  |  | 2028-03-15 | 2028-03-26 |  |  |  |  |  |  |  |  |  |  |  |  |  |  |  |
| HMD-E1030 |  | Concept design: submittal - Madinah |  | 8d | 2028-03-15 | 2028-03-26 | HMD-E1010 | 54d | 0d | Contract cost (BOQ x payment milestones) [55621 SAR]; Progress weight (fair EPC distribution, SAR value) [22320 h] | 22,320 | HHR | HMD | HHR | Standard | ETECHS | Concept | Submittal | ENG | DOCS | MS2 |

| ID | WBS | Activity | Duration | Start | Finish | Predecessors | Total float | Free float | Resources | Cost | Area | Station | Railway | Priority | Responsibility | Design stage | Submittal or approval | EPC phase | Discipline | Payment milestone |
| --- | --- | --- | --- | --- | --- | --- | --- | --- | --- | --- | --- | --- | --- | --- | --- | --- | --- | --- | --- | --- |
|  | APR | **Approval** |  | 2028-03-27 | 2028-04-16 |  |  |  |  |  |  |  |  |  |  |  |  |  |  |  |
| HMD-E1040 |  | Concept design: SAR review and approval - Madinah | 15d | 2028-03-27 | 2028-04-16 | HMD-E1030 | 96d | 42d | Contract cost (BOQ x payment milestones) [55621 SAR]; Progress weight (fair EPC distribution, SAR value) [41540 h] | 41,540 | HHR | HMD | HHR | Standard | SAR | Concept | Approval | ENG | DOCS | MS3 |
|  | PRE | **Preliminary (schematic) design** |  | 2028-03-27 | 2028-05-10 |  |  |  |  |  |  |  |  |  |  |  |  |  |  |  |
|  | SUB | **Submittal** |  | 2028-03-27 | 2028-04-12 |  |  |  |  |  |  |  |  |  |  |  |  |  |  |  |
| HMD-E1050 |  | Preliminary design: submittal - Madinah | 13d | 2028-03-27 | 2028-04-12 | HMD-E1030 | 54d | 0d | Contract cost (BOQ x payment milestones) [111243 SAR]; Progress weight (fair EPC distribution, SAR value) [53320 h] | 53,320 | HHR | HMD | HHR | Standard | ETECHS | Preliminary | Submittal | ENG | DOCS | MS2 |
|  | APR | **Approval** |  | 2028-04-13 | 2028-05-10 |  |  |  |  |  |  |  |  |  |  |  |  |  |  |  |
| HMD-E1060 |  | Preliminary design: SAR review and approval - Madinah | 15d | 2028-04-13 | 2028-05-10 | HMD-E1050 | 83d | 29d | Contract cost (BOQ x payment milestones) [111243 SAR]; Progress weight (fair EPC distribution, SAR value) [62000 h] | 62,000 | HHR | HMD | HHR | Standard | SAR | Preliminary | Approval | ENG | DOCS | MS3 |
|  | DET | **Detailed design** |  | 2028-04-13 | 2028-06-07 |  |  |  |  |  |  |  |  |  |  |  |  |  |  |  |
|  | SUB | **Submittal** |  | 2028-04-13 | 2028-05-17 |  |  |  |  |  |  |  |  |  |  |  |  |  |  |  |
| HMD-E1070 |  | Detailed design: submittal (drawings, BOQ, data sheets) - Madinah | 20d | 2028-04-13 | 2028-05-17 | HMD-E1050 | 54d | 0d | Contract cost (BOQ x payment milestones) [222485 SAR]; Progress weight (fair EPC distribution, SAR value) [109740 h] | 109,740 | HHR | HMD | HHR | Standard | ETECHS | Detailed | Submittal | ENG | DOCS | MS2 |
|  | APR | **Approval** |  | 2028-05-18 | 2028-06-07 |  |  |  |  |  |  |  |  |  |  |  |  |  |  |  |
| HMD-E1080 |  | Detailed design: SAR review and approval - Madinah | 15d | 2028-05-18 | 2028-06-07 | HMD-E1070 | 63d | 9d | Contract cost (BOQ x payment milestones) [222485 SAR]; Progress weight (fair EPC distribution, SAR value) [82460 h] | 82,460 | HHR | HMD | HHR | Standard | SAR | Detailed | Approval | ENG | DOCS | MS3 |
|  | IFC | **IFC and shop drawings** |  | 2028-05-18 | 2028-06-20 |  |  |  |  |  |  |  |  |  |  |  |  |  |  |  |
|  | SUB | **Submittal** |  | 2028-05-18 | 2028-05-30 |  |  |  |  |  |  |  |  |  |  |  |  |  |  |  |
| HMD-E1090 |  | IFC and shop drawings: submittal - Madinah | 9d | 2028-05-18 | 2028-05-30 | HMD-E1070 | 54d | 0d | Contract cost (BOQ x payment milestones) [111243 SAR]; Progress weight (fair EPC distribution, SAR value) [43400 h] | 43,400 | HHR | HMD | HHR | Standard | ETECHS | IFC | Submittal | ENG | DOCS | MS2 |
|  | APR | **Approval** |  | 2028-05-31 | 2028-06-20 |  |  |  |  |  |  |  |  |  |  |  |  |  |  |  |
| HMD-E1100 |  | IFC and shop drawings: SAR approval and release - Madinah | 15d | 2028-05-31 | 2028-06-20 | HMD-E1090 | 54d | 0d | Contract cost (BOQ x payment milestones) [111243 SAR]; Progress weight (fair EPC distribution, SAR value) [71920 h] | 71,920 | HHR | HMD | HHR | Standard | SAR | IFC | Approval | ENG | DOCS | MS3 |
|  | HCS | **HCIS documentation (Stage 3 and 4)** |  | 2028-04-25 | 2028-06-20 |  |  |  |  |  |  |  |  |  |  |  |  |  |  |  |
|  | SUB | **Submittal** |  | 2028-04-25 | 2028-05-30 |  |  |  |  |  |  |  |  |  |  |  |  |  |  |  |
| HMD-E1110 |  | HCIS Stage 3 and 4 documents: preparation - Madinah | 21d | 2028-04-25 | 2028-05-30 | HMD-E1050 FS+8d, HMD-E1090 FF | 54d | 0d | Contract cost (BOQ x payment milestones) [27811 SAR]; Progress weight (fair EPC distribution, SAR value) [22320 h] | 22,320 | HHR | HMD | HHR | Standard | ETECHS | HCIS | Submittal | ENG | DOCS | MS2 |
|  | APR | **Approval** |  | 2028-05-31 | 2028-06-20 |  |  |  |  |  |  |  |  |  |  |  |  |  |  |  |
| HMD-E1120 |  | HCIS Stage 3 and 4 documents: SAR final review and HCIS submission - Madinah | 15d | 2028-05-31 | 2028-06-20 | HMD-E1110 | 54d | 0d | Contract cost (BOQ x payment milestones) [27811 SAR]; Progress weight (fair EPC distribution, SAR value) [16120 h] | 16,120 | HHR | HMD | HHR | Standard | SAR/HCIS | HCIS | Approval | ENG | DOCS | MS3 |
|  | ASB | **As-built and O&M documentation** |  | 2029-04-19 | 2029-07-11 |  |  |  |  |  |  |  |  |  |  |  |  |  |  |  |
|  | SUB | **Submittal** |  | 2029-04-19 | 2029-06-20 |  |  |  |  |  |  |  |  |  |  |  |  |  |  |  |
| HMD-E1130 |  | As-built and O&M documentation: submittal - Madinah | 40d | 2029-04-19 | 2029-06-20 | HMD-C2100 | 54d | 0d | Contract cost (BOQ x payment milestones) [83432 SAR]; Progress weight (fair EPC distribution, SAR value) [46500 h] | 46,500 | HHR | HMD | HHR | Standard | ETECHS | As-built | Submittal | ENG | DOCS | MS7 |

| ID | WBS | Activity | Type | Duration | Start | Finish | Predecessors | Total float | Free float | Resources | Cost | Area | Station | Railway | Priority | Responsibility | Design stage | Submittal or approval | EPC phase | Discipline | Payment milestone |
| --- | --- | --- | --- | --- | --- | --- | --- | --- | --- | --- | --- | --- | --- | --- | --- | --- | --- | --- | --- | --- | --- |
|  | APR | **Approval** |  |  | 2029-06-21 | 2029-07-11 |  |  |  |  |  |  |  |  |  |  |  |  |  |  |  |
| HMD-E1140 |  | As-built and O&M documentation: SAR review and approval - Madinah |  | 15d | 2029-06-21 | 2029-07-11 | HMD-E1130 | 54d | 0d | Contract cost (BOQ x payment milestones) [27811 SAR]; Progress weight (fair EPC distribution, SAR value) [17360 h] | 17,360 | HHR | HMD | HHR | Standard | SAR | As-built | Approval | ENG | DOCS | MS7 |
|  | PRO | **Procurement** |  |  | 2027-03-01 | 2029-05-10 |  |  |  |  |  |  |  |  |  |  |  |  |  |  |  |
|  | RYD | **Riyadh priority stations (NSR + EWR)** |  |  | 2027-03-01 | 2027-08-15 |  |  |  |  |  |  |  |  |  |  |  |  |  |  |  |
|  | NRY | **Riyadh (Thumamah) (NSR)** |  |  | 2027-03-01 | 2027-08-01 |  |  |  |  |  |  |  |  |  |  |  |  |  |  |  |
| NRY-P1100 |  | MS4 Material delivered (20%) - Riyadh (Thumamah) | milestone | 0d | 2027-08-01 | 2027-08-01 | NRY-P1070 | 464d | 0d |  |  | RYD | NRY | NSR | Riyadh priority | ETECHS | - | - | MS | PM | MS4 |
|  | CCT | **CCTV system** |  |  | 2027-03-01 | 2027-06-06 |  |  |  |  |  |  |  |  |  |  |  |  |  |  |  |
| NRY-P1010 |  | Manufacture CCTV cameras and analytics - Riyadh (Thumamah) |  | 60d | 2027-03-01 | 2027-06-06 | NRY-E1210 | 464d | 0d | Contract cost (BOQ x payment milestones) [103080 SAR]; Progress weight (fair EPC distribution, SAR value) [158100 h] | 158,100 | RYD | NRY | NSR | Riyadh priority | Vendor | - | - | PRO | CCTV | MS4 |
|  | VMS | **Video management and video wall** |  |  | 2027-03-01 | 2027-06-06 |  |  |  |  |  |  |  |  |  |  |  |  |  |  |  |
| NRY-P1020 |  | Manufacture video management servers, storage and video wall - Riyadh (Thumamah) |  | 60d | 2027-03-01 | 2027-06-06 | NRY-E1210 | 464d | 0d | Contract cost (BOQ x payment milestones) [126844 SAR]; Progress weight (fair EPC distribution, SAR value) [194680 h] | 194,680 | RYD | NRY | NSR | Riyadh priority | Vendor | - | - | PRO | VMS | MS4 |
|  | ACC | **Access control and intercom** |  |  | 2027-03-01 | 2027-06-06 |  |  |  |  |  |  |  |  |  |  |  |  |  |  |  |
| NRY-P1030 |  | Manufacture access control and intercom equipment - Riyadh (Thumamah) |  | 60d | 2027-03-01 | 2027-06-06 | NRY-E1210 | 464d | 0d | Contract cost (BOQ x payment milestones) [13405 SAR]; Progress weight (fair EPC distribution, SAR value) [20460 h] | 20,460 | RYD | NRY | NSR | Riyadh priority | Vendor | - | - | PRO | ACC | MS4 |
|  | UPN | **UPS, network and cabinets** |  |  | 2027-03-01 | 2027-06-06 |  |  |  |  |  |  |  |  |  |  |  |  |  |  |  |
| NRY-P1040 |  | Manufacture UPS, network switches and field cabinets - Riyadh (Thumamah) |  | 60d | 2027-03-01 | 2027-06-06 | NRY-E1210 | 464d | 0d | Contract cost (BOQ x payment milestones) [278789 SAR]; Progress weight (fair EPC distribution, SAR value) [428420 h] | 428,420 | RYD | NRY | NSR | Riyadh priority | Vendor | - | - | PRO | UPSNET | MS4 |
|  | LOG | **FAT and logistics** |  |  | 2027-06-07 | 2027-08-01 |  |  |  |  |  |  |  |  |  |  |  |  |  |  |  |
| NRY-P1050 |  | Factory acceptance test at vendor premises - Riyadh (Thumamah) |  | 10d | 2027-06-07 | 2027-06-20 | NRY-P1010, NRY-P1020, NRY-P1030, NRY-P1040 | 464d | 0d | Contract cost (BOQ x payment milestones) [34808 SAR]; Progress weight (fair EPC distribution, SAR value) [133920 h] | 133,920 | RYD | NRY | NSR | Riyadh priority | ETECHS | - | - | PRO | PM | MS4 |
| NRY-P1060 |  | Shipping and customs clearance - Riyadh (Thumamah) |  | 25d | 2027-06-21 | 2027-07-25 | NRY-P1050 | 464d | 0d | Contract cost (BOQ x payment milestones) [104424 SAR]; Progress weight (fair EPC distribution, SAR value) [267220 h] | 267,220 | RYD | NRY | NSR | Riyadh priority | Vendor | - | - | PRO | PM | MS4 |
| NRY-P1070 |  | Delivery to station and receiving inspection - Riyadh (Thumamah) |  | 5d | 2027-07-26 | 2027-08-01 | NRY-P1060 | 464d | 0d | Contract cost (BOQ x payment milestones) [34808 SAR]; Progress weight (fair EPC distribution, SAR value) [133920 h] | 133,920 | RYD | NRY | NSR | Riyadh priority | ETECHS | - | - | PRO | PM | MS4 |
|  | ERY | **Riyadh (Malaz) (EWR)** |  |  | 2027-03-22 | 2027-08-15 |  |  |  |  |  |  |  |  |  |  |  |  |  |  |  |
| ERY-P1100 |  | MS4 Material delivered (20%) - Riyadh (Malaz) | milestone | 0d | 2027-08-15 | 2027-08-15 | ERY-P1070 | 460d | 0d |  |  | RYD | ERY | EWR | Riyadh priority | ETECHS | - | - | MS | PM | MS4 |
|  | CCT | **CCTV system** |  |  | 2027-03-22 | 2027-06-20 |  |  |  |  |  |  |  |  |  |  |  |  |  |  |  |
| ERY-P1010 |  | Manufacture CCTV cameras and analytics - Riyadh (Malaz) |  | 60d | 2027-03-22 | 2027-06-20 | ERY-E1210 | 460d | 0d | Contract cost (BOQ x payment milestones) [101092 SAR]; Progress weight (fair EPC distribution, SAR value) [155000 h] | 155,000 | RYD | ERY | EWR | Riyadh priority | Vendor | - | - | PRO | CCTV | MS4 |
|  | VMS | **Video management and video wall** |  |  | 2027-03-22 | 2027-06-20 |  |  |  |  |  |  |  |  |  |  |  |  |  |  |  |
| ERY-P1020 |  | Manufacture video management servers, storage and video wall - Riyadh (Malaz) |  | 60d | 2027-03-22 | 2027-06-20 | ERY-E1210 | 460d | 0d | Contract cost (BOQ x payment milestones) [128120 SAR]; Progress weight (fair EPC distribution, SAR value) [196540 h] | 196,540 | RYD | ERY | EWR | Riyadh priority | Vendor | - | - | PRO | VMS | MS4 |

| ID | WBS | Activity | Type | Duration | Start | Finish | Predecessors | Total float | Free float | Resources | Cost | Area | Station | Railway | Priority | Discipline | Responsibility | EPC phase | Design stage | Submittal or approval | Payment milestone |
| --- | --- | --- | --- | --- | --- | --- | --- | --- | --- | --- | --- | --- | --- | --- | --- | --- | --- | --- | --- | --- | --- |
|  | ACC | **Access control and intercom** |  |  | 2027-03-22 | 2027-06-20 |  |  |  |  |  |  |  |  |  |  |  |  |  |  |  |
| ERY-P1030 |  | Manufacture access control and intercom equipment - Riyadh (Malaz) |  | 60d | 2027-03-22 | 2027-06-20 | ERY-E1210 | 460d | 0d | Contract cost (BOQ x payment milestones) [16098 SAR]; Progress weight (fair EPC distribution, SAR value) [24800 h] | 24,800 | RYD | ERY | EWR | Riyadh priority | ACC | Vendor | PRO | - | - | MS4 |
|  | UPN | **UPS, network and cabinets** |  |  | 2027-03-22 | 2027-06-20 |  |  |  |  |  |  |  |  |  |  |  |  |  |  |  |
| ERY-P1040 |  | Manufacture UPS, network switches and field cabinets - Riyadh (Malaz) |  | 60d | 2027-03-22 | 2027-06-20 | ERY-E1210 | 460d | 0d | Contract cost (BOQ x payment milestones) [218418 SAR]; Progress weight (fair EPC distribution, SAR value) [335420 h] | 335,420 | RYD | ERY | EWR | Riyadh priority | UPSNET | Vendor | PRO | - | - | MS4 |
|  | LOG | **FAT and logistics** |  |  | 2027-06-21 | 2027-08-15 |  |  |  |  |  |  |  |  |  |  |  |  |  |  |  |
| ERY-P1050 |  | Factory acceptance test at vendor premises - Riyadh (Malaz) |  | 10d | 2027-06-21 | 2027-07-04 | ERY-P1010, ERY-P1020, ERY-P1030, ERY-P1040 | 460d | 0d | Contract cost (BOQ x payment milestones) [30915 SAR]; Progress weight (fair EPC distribution, SAR value) [118420 h] | 118,420 | RYD | ERY | EWR | Riyadh priority | PM | ETECHS | PRO | - | - | MS4 |
| ERY-P1060 |  | Shipping and customs clearance - Riyadh (Malaz) |  | 25d | 2027-07-05 | 2027-08-08 | ERY-P1050 | 460d | 0d | Contract cost (BOQ x payment milestones) [92746 SAR]; Progress weight (fair EPC distribution, SAR value) [237460 h] | 237,460 | RYD | ERY | EWR | Riyadh priority | PM | Vendor | PRO | - | - | MS4 |
| ERY-P1070 |  | Delivery to station and receiving inspection - Riyadh (Malaz) |  | 5d | 2027-08-09 | 2027-08-15 | ERY-P1060 | 460d | 0d | Contract cost (BOQ x payment milestones) [30915 SAR]; Progress weight (fair EPC distribution, SAR value) [118420 h] | 118,420 | RYD | ERY | EWR | Riyadh priority | PM | ETECHS | PRO | - | - | MS4 |
|  | NSR | **NSR - North South Railway** |  |  | 2027-11-07 | 2029-05-10 |  |  |  |  |  |  |  |  |  |  |  |  |  |  |  |
|  | NQS | **Al Qassim (NSR)** |  |  | 2027-11-07 | 2028-04-13 |  |  |  |  |  |  |  |  |  |  |  |  |  |  |  |
| NQS-P1100 |  | MS4 Material delivered (20%) - Al Qassim | milestone | 0d | 2028-04-13 | 2028-04-13 | NQS-P1070 | 286d | 0d |  |  | NSR | NQS | NSR | Standard | PM | ETECHS | MS | - | - | MS4 |
|  | CCT | **CCTV system** |  |  | 2027-11-07 | 2028-02-10 |  |  |  |  |  |  |  |  |  |  |  |  |  |  |  |
| NQS-P1010 |  | Manufacture CCTV cameras and analytics - Al Qassim |  | 70d | 2027-11-07 | 2028-02-10 | NQS-E1210 | 286d | 0d | Contract cost (BOQ x payment milestones) [104169 SAR]; Progress weight (fair EPC distribution, SAR value) [159960 h] | 159,960 | NSR | NQS | NSR | Standard | CCTV | Vendor | PRO | - | - | MS4 |
|  | VMS | **Video management and video wall** |  |  | 2027-11-07 | 2028-02-10 |  |  |  |  |  |  |  |  |  |  |  |  |  |  |  |
| NQS-P1020 |  | Manufacture video management servers, storage and video wall - Al Qassim |  | 70d | 2027-11-07 | 2028-02-10 | NQS-E1210 | 286d | 0d | Contract cost (BOQ x payment milestones) [110385 SAR]; Progress weight (fair EPC distribution, SAR value) [169260 h] | 169,260 | NSR | NQS | NSR | Standard | VMS | Vendor | PRO | - | - | MS4 |
|  | ACC | **Access control and intercom** |  |  | 2027-11-07 | 2028-02-10 |  |  |  |  |  |  |  |  |  |  |  |  |  |  |  |
| NQS-P1030 |  | Manufacture access control and intercom equipment - Al Qassim |  | 70d | 2027-11-07 | 2028-02-10 | NQS-E1210 | 286d | 0d | Contract cost (BOQ x payment milestones) [13547 SAR]; Progress weight (fair EPC distribution, SAR value) [21080 h] | 21,080 | NSR | NQS | NSR | Standard | ACC | Vendor | PRO | - | - | MS4 |
|  | UPN | **UPS, network and cabinets** |  |  | 2027-11-07 | 2028-02-10 |  |  |  |  |  |  |  |  |  |  |  |  |  |  |  |
| NQS-P1040 |  | Manufacture UPS, network switches and field cabinets - Al Qassim |  | 70d | 2027-11-07 | 2028-02-10 | NQS-E1210 | 286d | 0d | Contract cost (BOQ x payment milestones) [281736 SAR]; Progress weight (fair EPC distribution, SAR value) [432760 h] | 432,760 | NSR | NQS | NSR | Standard | UPSNET | Vendor | PRO | - | - | MS4 |
|  | LOG | **FAT and logistics** |  |  | 2028-02-13 | 2028-04-13 |  |  |  |  |  |  |  |  |  |  |  |  |  |  |  |
| NQS-P1050 |  | Factory acceptance test at vendor premises - Al Qassim |  | 10d | 2028-02-13 | 2028-03-02 | NQS-P1010, NQS-P1020, NQS-P1030, NQS-P1040 | 286d | 0d | Contract cost (BOQ x payment milestones) [33989 SAR]; Progress weight (fair EPC distribution, SAR value) [130820 h] | 130,820 | NSR | NQS | NSR | Standard | PM | ETECHS | PRO | - | - | MS4 |
| NQS-P1060 |  | Shipping and customs clearance - Al Qassim |  | 25d | 2028-03-05 | 2028-04-06 | NQS-P1050 | 286d | 0d | Contract cost (BOQ x payment milestones) [101967 SAR]; Progress weight (fair EPC distribution, SAR value) [261020 h] | 261,020 | NSR | NQS | NSR | Standard | PM | Vendor | PRO | - | - | MS4 |
| NQS-P1070 |  | Delivery to station and receiving inspection - Al Qassim |  | 5d | 2028-04-09 | 2028-04-13 | NQS-P1060 | 286d | 0d | Contract cost (BOQ x payment milestones) [33989 SAR]; Progress weight (fair EPC distribution, SAR value) [130820 h] | 130,820 | NSR | NQS | NSR | Standard | PM | ETECHS | PRO | - | - | MS4 |
|  | NMJ | **Al Majma'ah (NSR)** |  |  | 2027-12-26 | 2028-06-08 |  |  |  |  |  |  |  |  |  |  |  |  |  |  |  |
| NMJ-P1100 |  | MS4 Material delivered (20%) - Al Majma'ah | milestone | 0d | 2028-06-08 | 2028-06-08 | NMJ-P1070 | 251d | 0d |  |  | NSR | NMJ | NSR | Standard | PM | ETECHS | MS | - | - | MS4 |

| ID | WBS | Activity | Type | Duration | Start | Finish | Predecessors | Total float | Free float | Resources | Cost | Area | Station | Railway | Priority | Discipline | Responsibility | EPC phase | Design stage | Submittal or approval | Payment milestone |
| --- | --- | --- | --- | --- | --- | --- | --- | --- | --- | --- | --- | --- | --- | --- | --- | --- | --- | --- | --- | --- | --- |
|  | CCT | **CCTV system** |  |  | 2027-12-26 | 2028-04-06 |  |  |  |  |  |  |  |  |  |  |  |  |  |  |  |
| NMJ-P1010 |  | Manufacture CCTV cameras and analytics - Al Majma'ah |  | 70d | 2027-12-26 | 2028-04-06 | NMJ-E1210 | 251d | 0d | Contract cost (BOQ x payment milestones) [104169 SAR]; Progress weight (fair EPC distribution, SAR value) [159960 h] | 159,960 | NSR | NMJ | NSR | Standard | CCTV | Vendor | PRO | - | - | MS4 |
|  | VMS | **Video management and video wall** |  |  | 2027-12-26 | 2028-04-06 |  |  |  |  |  |  |  |  |  |  |  |  |  |  |  |
| NMJ-P1020 |  | Manufacture video management servers, storage and video wall - Al Majma'ah |  | 70d | 2027-12-26 | 2028-04-06 | NMJ-E1210 | 251d | 0d | Contract cost (BOQ x payment milestones) [110385 SAR]; Progress weight (fair EPC distribution, SAR value) [169260 h] | 169,260 | NSR | NMJ | NSR | Standard | VMS | Vendor | PRO | - | - | MS4 |
|  | ACC | **Access control and intercom** |  |  | 2027-12-26 | 2028-04-06 |  |  |  |  |  |  |  |  |  |  |  |  |  |  |  |
| NMJ-P1030 |  | Manufacture access control and intercom equipment - Al Majma'ah |  | 70d | 2027-12-26 | 2028-04-06 | NMJ-E1210 | 251d | 0d | Contract cost (BOQ x payment milestones) [13547 SAR]; Progress weight (fair EPC distribution, SAR value) [21080 h] | 21,080 | NSR | NMJ | NSR | Standard | ACC | Vendor | PRO | - | - | MS4 |
|  | UPN | **UPS, network and cabinets** |  |  | 2027-12-26 | 2028-04-06 |  |  |  |  |  |  |  |  |  |  |  |  |  |  |  |
| NMJ-P1040 |  | Manufacture UPS, network switches and field cabinets - Al Majma'ah |  | 70d | 2027-12-26 | 2028-04-06 | NMJ-E1210 | 251d | 0d | Contract cost (BOQ x payment milestones) [281736 SAR]; Progress weight (fair EPC distribution, SAR value) [432760 h] | 432,760 | NSR | NMJ | NSR | Standard | UPSNET | Vendor | PRO | - | - | MS4 |
|  | LOG | **FAT and logistics** |  |  | 2028-04-09 | 2028-06-08 |  |  |  |  |  |  |  |  |  |  |  |  |  |  |  |
| NMJ-P1050 |  | Factory acceptance test at vendor premises - Al Majma'ah |  | 10d | 2028-04-09 | 2028-04-20 | NMJ-P1010, NMJ-P1020, NMJ-P1030, NMJ-P1040 | 251d | 0d | Contract cost (BOQ x payment milestones) [33989 SAR]; Progress weight (fair EPC distribution, SAR value) [130820 h] | 130,820 | NSR | NMJ | NSR | Standard | PM | ETECHS | PRO | - | - | MS4 |
| NMJ-P1060 |  | Shipping and customs clearance - Al Majma'ah |  | 25d | 2028-04-23 | 2028-06-01 | NMJ-P1050 | 251d | 0d | Contract cost (BOQ x payment milestones) [101967 SAR]; Progress weight (fair EPC distribution, SAR value) [261020 h] | 261,020 | NSR | NMJ | NSR | Standard | PM | Vendor | PRO | - | - | MS4 |
| NMJ-P1070 |  | Delivery to station and receiving inspection - Al Majma'ah |  | 5d | 2028-06-04 | 2028-06-08 | NMJ-P1060 | 251d | 0d | Contract cost (BOQ x payment milestones) [33989 SAR]; Progress weight (fair EPC distribution, SAR value) [130820 h] | 130,820 | NSR | NMJ | NSR | Standard | PM | ETECHS | PRO | - | - | MS4 |
|  | NHL | **Hail (NSR)** |  |  | 2028-07-24 | 2028-12-24 |  |  |  |  |  |  |  |  |  |  |  |  |  |  |  |
| NHL-P1100 |  | MS4 Material delivered (20%) - Hail | milestone | 0d | 2028-12-24 | 2028-12-24 | NHL-P1070 | 110d | 0d |  |  | NSR | NHL | NSR | Standard | PM | ETECHS | MS | - | - | MS4 |
|  | CCT | **CCTV system** |  |  | 2028-07-24 | 2028-10-29 |  |  |  |  |  |  |  |  |  |  |  |  |  |  |  |
| NHL-P1010 |  | Manufacture CCTV cameras and analytics - Hail |  | 70d | 2028-07-24 | 2028-10-29 | NHL-E1210 | 110d | 0d | Contract cost (BOQ x payment milestones) [104169 SAR]; Progress weight (fair EPC distribution, SAR value) [159960 h] | 159,960 | NSR | NHL | NSR | Standard | CCTV | Vendor | PRO | - | - | MS4 |
|  | VMS | **Video management and video wall** |  |  | 2028-07-24 | 2028-10-29 |  |  |  |  |  |  |  |  |  |  |  |  |  |  |  |
| NHL-P1020 |  | Manufacture video management servers, storage and video wall - Hail |  | 70d | 2028-07-24 | 2028-10-29 | NHL-E1210 | 110d | 0d | Contract cost (BOQ x payment milestones) [110385 SAR]; Progress weight (fair EPC distribution, SAR value) [169260 h] | 169,260 | NSR | NHL | NSR | Standard | VMS | Vendor | PRO | - | - | MS4 |
|  | ACC | **Access control and intercom** |  |  | 2028-07-24 | 2028-10-29 |  |  |  |  |  |  |  |  |  |  |  |  |  |  |  |
| NHL-P1030 |  | Manufacture access control and intercom equipment - Hail |  | 70d | 2028-07-24 | 2028-10-29 | NHL-E1210 | 110d | 0d | Contract cost (BOQ x payment milestones) [13547 SAR]; Progress weight (fair EPC distribution, SAR value) [21080 h] | 21,080 | NSR | NHL | NSR | Standard | ACC | Vendor | PRO | - | - | MS4 |
|  | UPN | **UPS, network and cabinets** |  |  | 2028-07-24 | 2028-10-29 |  |  |  |  |  |  |  |  |  |  |  |  |  |  |  |
| NHL-P1040 |  | Manufacture UPS, network switches and field cabinets - Hail |  | 70d | 2028-07-24 | 2028-10-29 | NHL-E1210 | 110d | 0d | Contract cost (BOQ x payment milestones) [281736 SAR]; Progress weight (fair EPC distribution, SAR value) [432760 h] | 432,760 | NSR | NHL | NSR | Standard | UPSNET | Vendor | PRO | - | - | MS4 |
|  | LOG | **FAT and logistics** |  |  | 2028-10-30 | 2028-12-24 |  |  |  |  |  |  |  |  |  |  |  |  |  |  |  |
| NHL-P1050 |  | Factory acceptance test at vendor premises - Hail |  | 10d | 2028-10-30 | 2028-11-12 | NHL-P1010, NHL-P1020, NHL-P1030, NHL-P1040 | 110d | 0d | Contract cost (BOQ x payment milestones) [33989 SAR]; Progress weight (fair EPC distribution, SAR value) [130820 h] | 130,820 | NSR | NHL | NSR | Standard | PM | ETECHS | PRO | - | - | MS4 |
| NHL-P1060 |  | Shipping and customs clearance - Hail |  | 25d | 2028-11-13 | 2028-12-17 | NHL-P1050 | 110d | 0d | Contract cost (BOQ x payment milestones) [101967 SAR]; Progress weight (fair EPC distribution, SAR value) [261020 h] | 261,020 | NSR | NHL | NSR | Standard | PM | Vendor | PRO | - | - | MS4 |
| NHL-P1070 |  | Delivery to station and receiving inspection - Hail |  | 5d | 2028-12-18 | 2028-12-24 | NHL-P1060 | 110d | 0d | Contract cost (BOQ x payment milestones) [33989 SAR]; Progress weight (fair EPC distribution, SAR value) [130820 h] | 130,820 | NSR | NHL | NSR | Standard | PM | ETECHS | PRO | - | - | MS4 |

| ID | WBS | Activity | Type | Duration | Start | Finish | Predecessors | Total float | Free float | Resources | Cost | Area | Station | Railway | Priority | EPC phase | Discipline | Responsibility | Design stage | Submittal or approval | Payment milestone |
| --- | --- | --- | --- | --- | --- | --- | --- | --- | --- | --- | --- | --- | --- | --- | --- | --- | --- | --- | --- | --- | --- |
|  | NJF | **Al Jouf (NSR)** |  |  | 2028-10-05 | 2029-03-15 |  |  |  |  |  |  |  |  |  |  |  |  |  |  |  |
| NJF-P1100 |  | MS4 Material delivered (20%) - Al Jouf | milestone | 0d | 2029-03-15 | 2029-03-15 | NJF-P1070 | 57d | 0d |  |  | NSR | NJF | NSR | Standard | MS | PM | ETECHS | - | - | MS4 |
|  | CCT | **CCTV system** |  |  | 2028-10-05 | 2029-01-10 |  |  |  |  |  |  |  |  |  |  |  |  |  |  |  |
| NJF-P1010 |  | Manufacture CCTV cameras and analytics - Al Jouf |  | 70d | 2028-10-05 | 2029-01-10 | NJF-E1210 | 57d | 0d | Contract cost (BOQ x payment milestones) [103843 SAR]; Progress weight (fair EPC distribution, SAR value) [159340 h] | 159,340 | NSR | NJF | NSR | Standard | PRO | CCTV | Vendor | - | - | MS4 |
|  | VMS | **Video management and video wall** |  |  | 2028-10-05 | 2029-01-10 |  |  |  |  |  |  |  |  |  |  |  |  |  |  |  |
| NJF-P1020 |  | Manufacture video management servers, storage and video wall - Al Jouf |  | 70d | 2028-10-05 | 2029-01-10 | NJF-E1210 | 57d | 0d | Contract cost (BOQ x payment milestones) [110039 SAR]; Progress weight (fair EPC distribution, SAR value) [169260 h] | 169,260 | NSR | NJF | NSR | Standard | PRO | VMS | Vendor | - | - | MS4 |
|  | ACC | **Access control and intercom** |  |  | 2028-10-05 | 2029-01-10 |  |  |  |  |  |  |  |  |  |  |  |  |  |  |  |
| NJF-P1030 |  | Manufacture access control and intercom equipment - Al Jouf |  | 70d | 2028-10-05 | 2029-01-10 | NJF-E1210 | 57d | 0d | Contract cost (BOQ x payment milestones) [13505 SAR]; Progress weight (fair EPC distribution, SAR value) [20460 h] | 20,460 | NSR | NJF | NSR | Standard | PRO | ACC | Vendor | - | - | MS4 |
|  | UPN | **UPS, network and cabinets** |  |  | 2028-10-05 | 2029-01-10 |  |  |  |  |  |  |  |  |  |  |  |  |  |  |  |
| NJF-P1040 |  | Manufacture UPS, network switches and field cabinets - Al Jouf |  | 70d | 2028-10-05 | 2029-01-10 | NJF-E1210 | 57d | 0d | Contract cost (BOQ x payment milestones) [286040 SAR]; Progress weight (fair EPC distribution, SAR value) [439580 h] | 439,580 | NSR | NJF | NSR | Standard | PRO | UPSNET | Vendor | - | - | MS4 |
|  | LOG | **FAT and logistics** |  |  | 2029-01-11 | 2029-03-15 |  |  |  |  |  |  |  |  |  |  |  |  |  |  |  |
| NJF-P1050 |  | Factory acceptance test at vendor premises - Al Jouf |  | 10d | 2029-01-11 | 2029-01-24 | NJF-P1010, NJF-P1020, NJF-P1030, NJF-P1040 | 57d | 0d | Contract cost (BOQ x payment milestones) [34228 SAR]; Progress weight (fair EPC distribution, SAR value) [131440 h] | 131,440 | NSR | NJF | NSR | Standard | PRO | PM | ETECHS | - | - | MS4 |
| NJF-P1060 |  | Shipping and customs clearance - Al Jouf |  | 25d | 2029-01-25 | 2029-03-08 | NJF-P1050 | 57d | 0d | Contract cost (BOQ x payment milestones) [102685 SAR]; Progress weight (fair EPC distribution, SAR value) [262880 h] | 262,880 | NSR | NJF | NSR | Standard | PRO | PM | Vendor | - | - | MS4 |
| NJF-P1070 |  | Delivery to station and receiving inspection - Al Jouf |  | 5d | 2029-03-11 | 2029-03-15 | NJF-P1060 | 57d | 0d | Contract cost (BOQ x payment milestones) [34228 SAR]; Progress weight (fair EPC distribution, SAR value) [131440 h] | 131,440 | NSR | NJF | NSR | Standard | PRO | PM | ETECHS | - | - | MS4 |
|  | NQR | **Al Qurayyat (NSR)** |  |  | 2028-11-23 | 2029-05-10 |  |  |  |  |  |  |  |  |  |  |  |  |  |  |  |
| NQR-P1100 |  | MS4 Material delivered (20%) - Al Qurayyat | milestone | 0d | 2029-05-10 | 2029-05-10 | NQR-P1070 | 22d | 0d |  |  | NSR | NQR | NSR | Standard | MS | PM | ETECHS | - | - | MS4 |
|  | CCT | **CCTV system** |  |  | 2028-11-23 | 2029-03-08 |  |  |  |  |  |  |  |  |  |  |  |  |  |  |  |
| NQR-P1010 |  | Manufacture CCTV cameras and analytics - Al Qurayyat |  | 70d | 2028-11-23 | 2029-03-08 | NQR-E1210 | 22d | 0d | Contract cost (BOQ x payment milestones) [104169 SAR]; Progress weight (fair EPC distribution, SAR value) [159960 h] | 159,960 | NSR | NQR | NSR | Standard | PRO | CCTV | Vendor | - | - | MS4 |
|  | VMS | **Video management and video wall** |  |  | 2028-11-23 | 2029-03-08 |  |  |  |  |  |  |  |  |  |  |  |  |  |  |  |
| NQR-P1020 |  | Manufacture video management servers, storage and video wall - Al Qurayyat |  | 70d | 2028-11-23 | 2029-03-08 | NQR-E1210 | 22d | 0d | Contract cost (BOQ x payment milestones) [110385 SAR]; Progress weight (fair EPC distribution, SAR value) [169260 h] | 169,260 | NSR | NQR | NSR | Standard | PRO | VMS | Vendor | - | - | MS4 |
|  | ACC | **Access control and intercom** |  |  | 2028-11-23 | 2029-03-08 |  |  |  |  |  |  |  |  |  |  |  |  |  |  |  |
| NQR-P1030 |  | Manufacture access control and intercom equipment - Al Qurayyat |  | 70d | 2028-11-23 | 2029-03-08 | NQR-E1210 | 22d | 0d | Contract cost (BOQ x payment milestones) [13547 SAR]; Progress weight (fair EPC distribution, SAR value) [21080 h] | 21,080 | NSR | NQR | NSR | Standard | PRO | ACC | Vendor | - | - | MS4 |
|  | UPN | **UPS, network and cabinets** |  |  | 2028-11-23 | 2029-03-08 |  |  |  |  |  |  |  |  |  |  |  |  |  |  |  |
| NQR-P1040 |  | Manufacture UPS, network switches and field cabinets - Al Qurayyat |  | 70d | 2028-11-23 | 2029-03-08 | NQR-E1210 | 22d | 0d | Contract cost (BOQ x payment milestones) [281736 SAR]; Progress weight (fair EPC distribution, SAR value) [432760 h] | 432,760 | NSR | NQR | NSR | Standard | PRO | UPSNET | Vendor | - | - | MS4 |

| ID | WBS | Activity | Type | Duration | Start | Finish | Predecessors | Total float | Free float | Resources | Cost | Area | Station | Railway | Priority | Discipline | Responsibility | EPC phase | Design stage | Submittal or approval | Payment milestone |
| --- | --- | --- | --- | --- | --- | --- | --- | --- | --- | --- | --- | --- | --- | --- | --- | --- | --- | --- | --- | --- | --- |
|  | LOG | **FAT and logistics** |  |  | 2029-03-11 | 2029-05-10 |  |  |  |  |  |  |  |  |  |  |  |  |  |  |  |
| NQR-P1050 |  | Factory acceptance test at vendor premises - Al Qurayyat |  | 10d | 2029-03-11 | 2029-03-22 | NQR-P1010, NQR-P1020, NQR-P1030, NQR-P1040 | 22d | 0d | Contract cost (BOQ x payment milestones) [33989 SAR]; Progress weight (fair EPC distribution, SAR value) [130820 h] | 130,820 | NSR | NQR | NSR | Standard | PM | ETECHS | PRO | - | - | MS4 |
| NQR-P1060 |  | Shipping and customs clearance - Al Qurayyat |  | 25d | 2029-03-25 | 2029-05-03 | NQR-P1050 | 22d | 0d | Contract cost (BOQ x payment milestones) [101967 SAR]; Progress weight (fair EPC distribution, SAR value) [261020 h] | 261,020 | NSR | NQR | NSR | Standard | PM | Vendor | PRO | - | - | MS4 |
| NQR-P1070 |  | Delivery to station and receiving inspection - Al Qurayyat |  | 5d | 2029-05-06 | 2029-05-10 | NQR-P1060 | 22d | 0d | Contract cost (BOQ x payment milestones) [33989 SAR]; Progress weight (fair EPC distribution, SAR value) [130820 h] | 130,820 | NSR | NQR | NSR | Standard | PM | ETECHS | PRO | - | - | MS4 |
|  | EWR | **EWR - East West Railway** |  |  | 2027-09-09 | 2028-11-28 |  |  |  |  |  |  |  |  |  |  |  |  |  |  |  |
|  | EDM | **Dammam (EWR)** |  |  | 2027-09-09 | 2028-02-10 |  |  |  |  |  |  |  |  |  |  |  |  |  |  |  |
| EDM-P1100 |  | MS4 Material delivered (20%) - Dammam | milestone | 0d | 2028-02-10 | 2028-02-10 | EDM-P1070 | 332d | 0d |  |  | EWR | EDM | EWR | Standard | PM | ETECHS | MS | - | - | MS4 |
|  | CCT | **CCTV system** |  |  | 2027-09-09 | 2027-12-16 |  |  |  |  |  |  |  |  |  |  |  |  |  |  |  |
| EDM-P1010 |  | Manufacture CCTV cameras and analytics - Dammam |  | 70d | 2027-09-09 | 2027-12-16 | EDM-E1210 | 332d | 0d | Contract cost (BOQ x payment milestones) [99436 SAR]; Progress weight (fair EPC distribution, SAR value) [152520 h] | 152,520 | EWR | EDM | EWR | Standard | CCTV | Vendor | PRO | - | - | MS4 |
|  | VMS | **Video management and video wall** |  |  | 2027-09-09 | 2027-12-16 |  |  |  |  |  |  |  |  |  |  |  |  |  |  |  |
| EDM-P1020 |  | Manufacture video management servers, storage and video wall - Dammam |  | 70d | 2027-09-09 | 2027-12-16 | EDM-E1210 | 332d | 0d | Contract cost (BOQ x payment milestones) [148015 SAR]; Progress weight (fair EPC distribution, SAR value) [227540 h] | 227,540 | EWR | EDM | EWR | Standard | VMS | Vendor | PRO | - | - | MS4 |
|  | ACC | **Access control and intercom** |  |  | 2027-09-09 | 2027-12-16 |  |  |  |  |  |  |  |  |  |  |  |  |  |  |  |
| EDM-P1030 |  | Manufacture access control and intercom equipment - Dammam |  | 70d | 2027-09-09 | 2027-12-16 | EDM-E1210 | 332d | 0d | Contract cost (BOQ x payment milestones) [15834 SAR]; Progress weight (fair EPC distribution, SAR value) [24180 h] | 24,180 | EWR | EDM | EWR | Standard | ACC | Vendor | PRO | - | - | MS4 |
|  | UPN | **UPS, network and cabinets** |  |  | 2027-09-09 | 2027-12-16 |  |  |  |  |  |  |  |  |  |  |  |  |  |  |  |
| EDM-P1040 |  | Manufacture UPS, network switches and field cabinets - Dammam |  | 70d | 2027-09-09 | 2027-12-16 | EDM-E1210 | 332d | 0d | Contract cost (BOQ x payment milestones) [214841 SAR]; Progress weight (fair EPC distribution, SAR value) [329840 h] | 329,840 | EWR | EDM | EWR | Standard | UPSNET | Vendor | PRO | - | - | MS4 |
|  | LOG | **FAT and logistics** |  |  | 2027-12-19 | 2028-02-10 |  |  |  |  |  |  |  |  |  |  |  |  |  |  |  |
| EDM-P1050 |  | Factory acceptance test at vendor premises - Dammam |  | 10d | 2027-12-19 | 2027-12-30 | EDM-P1010, EDM-P1020, EDM-P1030, EDM-P1040 | 332d | 0d | Contract cost (BOQ x payment milestones) [31875 SAR]; Progress weight (fair EPC distribution, SAR value) [122140 h] | 122,140 | EWR | EDM | EWR | Standard | PM | ETECHS | PRO | - | - | MS4 |
| EDM-P1060 |  | Shipping and customs clearance - Dammam |  | 25d | 2028-01-02 | 2028-02-03 | EDM-P1050 | 332d | 0d | Contract cost (BOQ x payment milestones) [95625 SAR]; Progress weight (fair EPC distribution, SAR value) [244900 h] | 244,900 | EWR | EDM | EWR | Standard | PM | Vendor | PRO | - | - | MS4 |
| EDM-P1070 |  | Delivery to station and receiving inspection - Dammam |  | 5d | 2028-02-06 | 2028-02-10 | EDM-P1060 | 332d | 0d | Contract cost (BOQ x payment milestones) [31875 SAR]; Progress weight (fair EPC distribution, SAR value) [122140 h] | 122,140 | EWR | EDM | EWR | Standard | PM | ETECHS | PRO | - | - | MS4 |
|  | EHF | **Hufuf (EWR)** |  |  | 2027-11-07 | 2028-04-13 |  |  |  |  |  |  |  |  |  |  |  |  |  |  |  |
| EHF-P1100 |  | MS4 Material delivered (20%) - Hufuf | milestone | 0d | 2028-04-13 | 2028-04-13 | EHF-P1070 | 292d | 0d |  |  | EWR | EHF | EWR | Standard | PM | ETECHS | MS | - | - | MS4 |
|  | CCT | **CCTV system** |  |  | 2027-11-07 | 2028-02-10 |  |  |  |  |  |  |  |  |  |  |  |  |  |  |  |
| EHF-P1010 |  | Manufacture CCTV cameras and analytics - Hufuf |  | 70d | 2027-11-07 | 2028-02-10 | EHF-E1210 | 292d | 0d | Contract cost (BOQ x payment milestones) [71254 SAR]; Progress weight (fair EPC distribution, SAR value) [109740 h] | 109,740 | EWR | EHF | EWR | Standard | CCTV | Vendor | PRO | - | - | MS4 |
|  | VMS | **Video management and video wall** |  |  | 2027-11-07 | 2028-02-10 |  |  |  |  |  |  |  |  |  |  |  |  |  |  |  |
| EHF-P1020 |  | Manufacture video management servers, storage and video wall - Hufuf |  | 70d | 2027-11-07 | 2028-02-10 | EHF-E1210 | 292d | 0d | Contract cost (BOQ x payment milestones) [129428 SAR]; Progress weight (fair EPC distribution, SAR value) [199020 h] | 199,020 | EWR | EHF | EWR | Standard | VMS | Vendor | PRO | - | - | MS4 |

| ID | WBS | Activity | Type | Duration | Start | Finish | Predecessors | Total float | Free float | Resources | Cost | Area | Station | Railway | Priority | Discipline | Responsibility | EPC phase | Design stage | Submittal or approval | Payment milestone |
| --- | --- | --- | --- | --- | --- | --- | --- | --- | --- | --- | --- | --- | --- | --- | --- | --- | --- | --- | --- | --- | --- |
|  | ACC | **Access control and intercom** |  |  | 2027-11-07 | 2028-02-10 |  |  |  |  |  |  |  |  |  |  |  |  |  |  |  |
| EHF-P1030 |  | Manufacture access control and intercom equipment - Hufuf |  | 70d | 2027-11-07 | 2028-02-10 | EHF-E1210 | 292d | 0d | Contract cost (BOQ x payment milestones) [16348 SAR]; Progress weight (fair EPC distribution, SAR value) [24800 h] | 24,800 | EWR | EHF | EWR | Standard | ACC | Vendor | PRO | - | - | MS4 |
|  | UPN | **UPS, network and cabinets** |  |  | 2027-11-07 | 2028-02-10 |  |  |  |  |  |  |  |  |  |  |  |  |  |  |  |
| EHF-P1040 |  | Manufacture UPS, network switches and field cabinets - Hufuf |  | 70d | 2027-11-07 | 2028-02-10 | EHF-E1210 | 292d | 0d | Contract cost (BOQ x payment milestones) [207246 SAR]; Progress weight (fair EPC distribution, SAR value) [318060 h] | 318,060 | EWR | EHF | EWR | Standard | UPSNET | Vendor | PRO | - | - | MS4 |
|  | LOG | **FAT and logistics** |  |  | 2028-02-13 | 2028-04-13 |  |  |  |  |  |  |  |  |  |  |  |  |  |  |  |
| EHF-P1050 |  | Factory acceptance test at vendor premises - Hufuf |  | 10d | 2028-02-13 | 2028-03-02 | EHF-P1010, EHF-P1020, EHF-P1030, EHF-P1040 | 292d | 0d | Contract cost (BOQ x payment milestones) [28285 SAR]; Progress weight (fair EPC distribution, SAR value) [108500 h] | 108,500 | EWR | EHF | EWR | Standard | PM | ETECHS | PRO | - | - | MS4 |
| EHF-P1060 |  | Shipping and customs clearance - Hufuf |  | 25d | 2028-03-05 | 2028-04-06 | EHF-P1050 | 292d | 0d | Contract cost (BOQ x payment milestones) [84855 SAR]; Progress weight (fair EPC distribution, SAR value) [217000 h] | 217,000 | EWR | EHF | EWR | Standard | PM | Vendor | PRO | - | - | MS4 |
| EHF-P1070 |  | Delivery to station and receiving inspection - Hufuf |  | 5d | 2028-04-09 | 2028-04-13 | EHF-P1060 | 292d | 0d | Contract cost (BOQ x payment milestones) [28285 SAR]; Progress weight (fair EPC distribution, SAR value) [108500 h] | 108,500 | EWR | EHF | EWR | Standard | PM | ETECHS | PRO | - | - | MS4 |
|  | EAB | **Abqaiq (EWR)** |  |  | 2028-06-28 | 2028-11-28 |  |  |  |  |  |  |  |  |  |  |  |  |  |  |  |
| EAB-P1100 |  | MS4 Material delivered (20%) - Abqaiq | milestone | 0d | 2028-11-28 | 2028-11-28 | EAB-P1070 | 138d | 0d |  |  | EWR | EAB | EWR | Standard | PM | ETECHS | MS | - | - | MS4 |
|  | CCT | **CCTV system** |  |  | 2028-06-28 | 2028-10-03 |  |  |  |  |  |  |  |  |  |  |  |  |  |  |  |
| EAB-P1010 |  | Manufacture CCTV cameras and analytics - Abqaiq |  | 70d | 2028-06-28 | 2028-10-03 | EAB-E1210 | 138d | 0d | Contract cost (BOQ x payment milestones) [36997 SAR]; Progress weight (fair EPC distribution, SAR value) [57040 h] | 57,040 | EWR | EAB | EWR | Standard | CCTV | Vendor | PRO | - | - | MS4 |
|  | VMS | **Video management and video wall** |  |  | 2028-06-28 | 2028-10-03 |  |  |  |  |  |  |  |  |  |  |  |  |  |  |  |
| EAB-P1020 |  | Manufacture video management servers, storage and video wall - Abqaiq |  | 70d | 2028-06-28 | 2028-10-03 | EAB-E1210 | 138d | 0d | Contract cost (BOQ x payment milestones) [95266 SAR]; Progress weight (fair EPC distribution, SAR value) [146320 h] | 146,320 | EWR | EAB | EWR | Standard | VMS | Vendor | PRO | - | - | MS4 |
|  | ACC | **Access control and intercom** |  |  | 2028-06-28 | 2028-10-03 |  |  |  |  |  |  |  |  |  |  |  |  |  |  |  |
| EAB-P1030 |  | Manufacture access control and intercom equipment - Abqaiq |  | 70d | 2028-06-28 | 2028-10-03 | EAB-E1210 | 138d | 0d | Contract cost (BOQ x payment milestones) [14683 SAR]; Progress weight (fair EPC distribution, SAR value) [22320 h] | 22,320 | EWR | EAB | EWR | Standard | ACC | Vendor | PRO | - | - | MS4 |
|  | UPN | **UPS, network and cabinets** |  |  | 2028-06-28 | 2028-10-03 |  |  |  |  |  |  |  |  |  |  |  |  |  |  |  |
| EAB-P1040 |  | Manufacture UPS, network switches and field cabinets - Abqaiq |  | 70d | 2028-06-28 | 2028-10-03 | EAB-E1210 | 138d | 0d | Contract cost (BOQ x payment milestones) [153905 SAR]; Progress weight (fair EPC distribution, SAR value) [236220 h] | 236,220 | EWR | EAB | EWR | Standard | UPSNET | Vendor | PRO | - | - | MS4 |
|  | LOG | **FAT and logistics** |  |  | 2028-10-04 | 2028-11-28 |  |  |  |  |  |  |  |  |  |  |  |  |  |  |  |
| EAB-P1050 |  | Factory acceptance test at vendor premises - Abqaiq |  | 10d | 2028-10-04 | 2028-10-17 | EAB-P1010, EAB-P1020, EAB-P1030, EAB-P1040 | 138d | 0d | Contract cost (BOQ x payment milestones) [20057 SAR]; Progress weight (fair EPC distribution, SAR value) [76880 h] | 76,880 | EWR | EAB | EWR | Standard | PM | ETECHS | PRO | - | - | MS4 |
| EAB-P1060 |  | Shipping and customs clearance - Abqaiq |  | 25d | 2028-10-18 | 2028-11-21 | EAB-P1050 | 138d | 0d | Contract cost (BOQ x payment milestones) [60170 SAR]; Progress weight (fair EPC distribution, SAR value) [153760 h] | 153,760 | EWR | EAB | EWR | Standard | PM | Vendor | PRO | - | - | MS4 |
| EAB-P1070 |  | Delivery to station and receiving inspection - Abqaiq |  | 5d | 2028-11-22 | 2028-11-28 | EAB-P1060 | 138d | 0d | Contract cost (BOQ x payment milestones) [20057 SAR]; Progress weight (fair EPC distribution, SAR value) [76880 h] | 76,880 | EWR | EAB | EWR | Standard | PM | ETECHS | PRO | - | - | MS4 |
|  | HHR | **HHR - Haramain High Speed Rail** |  |  | 2027-07-15 | 2029-01-02 |  |  |  |  |  |  |  |  |  |  |  |  |  |  |  |
|  | HJD | **Jeddah (HHR)** |  |  | 2027-07-15 | 2028-01-27 |  |  |  |  |  |  |  |  |  |  |  |  |  |  |  |
| HJD-P1100 |  | MS4 Material delivered (20%) - Jeddah | milestone | 0d | 2028-01-27 | 2028-01-27 | HJD-P1070 | 267d | 0d |  |  | HHR | HJD | HHR | Standard | PM | ETECHS | MS | - | - | MS4 |

| ID | WBS | Activity | Type | Duration | Start | Finish | Predecessors | Total float | Free float | Resources | Cost | Area | Station | Railway | Priority | Discipline | Responsibility | EPC phase | Design stage | Submittal or approval | Payment milestone |
| --- | --- | --- | --- | --- | --- | --- | --- | --- | --- | --- | --- | --- | --- | --- | --- | --- | --- | --- | --- | --- | --- |
|  | CCT | **CCTV system** |  |  | 2027-07-15 | 2027-11-18 |  |  |  |  |  |  |  |  |  |  |  |  |  |  |  |
| HJD-P1010 |  | Manufacture CCTV cameras and analytics - Jeddah |  | 90d | 2027-07-15 | 2027-11-18 | HJD-E1210 | 267d | 0d | Contract cost (BOQ x payment milestones) [396208 SAR]; Progress weight (fair EPC distribution, SAR value) [608840 h] | 608,840 | HHR | HJD | HHR | Standard | CCTV | Vendor | PRO | - | - | MS4 |
|  | VMS | **Video management and video wall** |  |  | 2027-07-15 | 2027-11-18 |  |  |  |  |  |  |  |  |  |  |  |  |  |  |  |
| HJD-P1020 |  | Manufacture video management servers, storage and video wall - Jeddah |  | 90d | 2027-07-15 | 2027-11-18 | HJD-E1210 | 267d | 0d | Contract cost (BOQ x payment milestones) [185712 SAR]; Progress weight (fair EPC distribution, SAR value) [285200 h] | 285,200 | HHR | HJD | HHR | Standard | VMS | Vendor | PRO | - | - | MS4 |
|  | ACC | **Access control and intercom** |  |  | 2027-07-15 | 2027-11-18 |  |  |  |  |  |  |  |  |  |  |  |  |  |  |  |
| HJD-P1030 |  | Manufacture access control and intercom equipment - Jeddah |  | 90d | 2027-07-15 | 2027-11-18 | HJD-E1210 | 267d | 0d | Contract cost (BOQ x payment milestones) [12555 SAR]; Progress weight (fair EPC distribution, SAR value) [19220 h] | 19,220 | HHR | HJD | HHR | Standard | ACC | Vendor | PRO | - | - | MS4 |
|  | UPN | **UPS, network and cabinets** |  |  | 2027-07-15 | 2027-11-18 |  |  |  |  |  |  |  |  |  |  |  |  |  |  |  |
| HJD-P1040 |  | Manufacture UPS, network switches and field cabinets - Jeddah |  | 90d | 2027-07-15 | 2027-11-18 | HJD-E1210 | 267d | 0d | Contract cost (BOQ x payment milestones) [838157 SAR]; Progress weight (fair EPC distribution, SAR value) [1287740 h] | 1,287,740 | HHR | HJD | HHR | Standard | UPSNET | Vendor | PRO | - | - | MS4 |
|  | LOG | **FAT and logistics** |  |  | 2027-11-21 | 2028-01-27 |  |  |  |  |  |  |  |  |  |  |  |  |  |  |  |
| HJD-P1050 |  | Factory acceptance test at vendor premises - Jeddah |  | 10d | 2027-11-21 | 2027-12-02 | HJD-P1010, HJD-P1020, HJD-P1030, HJD-P1040 | 267d | 0d | Contract cost (BOQ x payment milestones) [95509 SAR]; Progress weight (fair EPC distribution, SAR value) [367040 h] | 367,040 | HHR | HJD | HHR | Standard | PM | ETECHS | PRO | - | - | MS4 |
| HJD-P1060 |  | Shipping and customs clearance - Jeddah |  | 35d | 2027-12-05 | 2028-01-20 | HJD-P1050 | 267d | 0d | Contract cost (BOQ x payment milestones) [286526 SAR]; Progress weight (fair EPC distribution, SAR value) [734080 h] | 734,080 | HHR | HJD | HHR | Standard | PM | Vendor | PRO | - | - | MS4 |
| HJD-P1070 |  | Delivery to station and receiving inspection - Jeddah |  | 5d | 2028-01-23 | 2028-01-27 | HJD-P1060 | 267d | 0d | Contract cost (BOQ x payment milestones) [95509 SAR]; Progress weight (fair EPC distribution, SAR value) [367040 h] | 367,040 | HHR | HJD | HHR | Standard | PM | ETECHS | PRO | - | - | MS4 |
|  | HMK | **Makkah (HHR)** |  |  | 2028-02-06 | 2028-08-31 |  |  |  |  |  |  |  |  |  |  |  |  |  |  |  |
| HMK-P1100 |  | MS4 Material delivered (20%) - Makkah | milestone | 0d | 2028-08-31 | 2028-08-31 | HMK-P1070 | 106d | 0d |  |  | HHR | HMK | HHR | Standard | PM | ETECHS | MS | - | - | MS4 |
|  | CCT | **CCTV system** |  |  | 2028-02-06 | 2028-06-22 |  |  |  |  |  |  |  |  |  |  |  |  |  |  |  |
| HMK-P1010 |  | Manufacture CCTV cameras and analytics - Makkah |  | 90d | 2028-02-06 | 2028-06-22 | HMK-E1210 | 106d | 0d | Contract cost (BOQ x payment milestones) [473780 SAR]; Progress weight (fair EPC distribution, SAR value) [727880 h] | 727,880 | HHR | HMK | HHR | Standard | CCTV | Vendor | PRO | - | - | MS4 |
|  | VMS | **Video management and video wall** |  |  | 2028-02-06 | 2028-06-22 |  |  |  |  |  |  |  |  |  |  |  |  |  |  |  |
| HMK-P1020 |  | Manufacture video management servers, storage and video wall - Makkah |  | 90d | 2028-02-06 | 2028-06-22 | HMK-E1210 | 106d | 0d | Contract cost (BOQ x payment milestones) [158552 SAR]; Progress weight (fair EPC distribution, SAR value) [243660 h] | 243,660 | HHR | HMK | HHR | Standard | VMS | Vendor | PRO | - | - | MS4 |
|  | ACC | **Access control and intercom** |  |  | 2028-02-06 | 2028-06-22 |  |  |  |  |  |  |  |  |  |  |  |  |  |  |  |
| HMK-P1030 |  | Manufacture access control and intercom equipment - Makkah |  | 90d | 2028-02-06 | 2028-06-22 | HMK-E1210 | 106d | 0d | Contract cost (BOQ x payment milestones) [12657 SAR]; Progress weight (fair EPC distribution, SAR value) [19220 h] | 19,220 | HHR | HMK | HHR | Standard | ACC | Vendor | PRO | - | - | MS4 |
|  | UPN | **UPS, network and cabinets** |  |  | 2028-02-06 | 2028-06-22 |  |  |  |  |  |  |  |  |  |  |  |  |  |  |  |
| HMK-P1040 |  | Manufacture UPS, network switches and field cabinets - Makkah |  | 90d | 2028-02-06 | 2028-06-22 | HMK-E1210 | 106d | 0d | Contract cost (BOQ x payment milestones) [811525 SAR]; Progress weight (fair EPC distribution, SAR value) [1246820 h] | 1,246,820 | HHR | HMK | HHR | Standard | UPSNET | Vendor | PRO | - | - | MS4 |
|  | LOG | **FAT and logistics** |  |  | 2028-06-25 | 2028-08-31 |  |  |  |  |  |  |  |  |  |  |  |  |  |  |  |
| HMK-P1050 |  | Factory acceptance test at vendor premises - Makkah |  | 10d | 2028-06-25 | 2028-07-06 | HMK-P1010, HMK-P1020, HMK-P1030, HMK-P1040 | 106d | 0d | Contract cost (BOQ x payment milestones) [97101 SAR]; Progress weight (fair EPC distribution, SAR value) [372620 h] | 372,620 | HHR | HMK | HHR | Standard | PM | ETECHS | PRO | - | - | MS4 |
| HMK-P1060 |  | Shipping and customs clearance - Makkah |  | 35d | 2028-07-09 | 2028-08-24 | HMK-P1050 | 106d | 0d | Contract cost (BOQ x payment milestones) [291303 SAR]; Progress weight (fair EPC distribution, SAR value) [746480 h] | 746,480 | HHR | HMK | HHR | Standard | PM | Vendor | PRO | - | - | MS4 |
| HMK-P1070 |  | Delivery to station and receiving inspection - Makkah |  | 5d | 2028-08-27 | 2028-08-31 | HMK-P1060 | 106d | 0d | Contract cost (BOQ x payment milestones) [97101 SAR]; Progress weight (fair EPC distribution, SAR value) [372620 h] | 372,620 | HHR | HMK | HHR | Standard | PM | ETECHS | PRO | - | - | MS4 |

| ID | WBS | Activity | Type | Duration | Start | Finish | Predecessors | Total float | Free float | Resources | Cost | Area | Station | Railway | Priority | EPC phase | Discipline | Responsibility | Design stage | Submittal or approval | Payment milestone |
| --- | --- | --- | --- | --- | --- | --- | --- | --- | --- | --- | --- | --- | --- | --- | --- | --- | --- | --- | --- | --- | --- |
|  | HKA | **KAEC (HHR)** |  |  | 2028-06-21 | 2029-01-02 |  |  |  |  |  |  |  |  |  |  |  |  |  |  |  |
| HKA-P1100 |  | MS4 Material delivered (20%) - KAEC | milestone | 0d | 2029-01-02 | 2029-01-02 | HKA-P1070 | 58d | 0d |  |  | HHR | HKA | HHR | Standard | MS | PM | ETECHS | - | - | MS4 |
|  | CCT | **CCTV system** |  |  | 2028-06-21 | 2028-10-24 |  |  |  |  |  |  |  |  |  |  |  |  |  |  |  |
| HKA-P1010 |  | Manufacture CCTV cameras and analytics - KAEC |  | 90d | 2028-06-21 | 2028-10-24 | HKA-E1210 | 58d | 0d | Contract cost (BOQ x payment milestones) [263474 SAR]; Progress weight (fair EPC distribution, SAR value) [404860 h] | 404,860 | HHR | HKA | HHR | Standard | PRO | CCTV | Vendor | - | - | MS4 |
|  | VMS | **Video management and video wall** |  |  | 2028-06-21 | 2028-10-24 |  |  |  |  |  |  |  |  |  |  |  |  |  |  |  |
| HKA-P1020 |  | Manufacture video management servers, storage and video wall - KAEC |  | 90d | 2028-06-21 | 2028-10-24 | HKA-E1210 | 58d | 0d | Contract cost (BOQ x payment milestones) [111291 SAR]; Progress weight (fair EPC distribution, SAR value) [171120 h] | 171,120 | HHR | HKA | HHR | Standard | PRO | VMS | Vendor | - | - | MS4 |
|  | ACC | **Access control and intercom** |  |  | 2028-06-21 | 2028-10-24 |  |  |  |  |  |  |  |  |  |  |  |  |  |  |  |
| HKA-P1030 |  | Manufacture access control and intercom equipment - KAEC |  | 90d | 2028-06-21 | 2028-10-24 | HKA-E1210 | 58d | 0d | Contract cost (BOQ x payment milestones) [12074 SAR]; Progress weight (fair EPC distribution, SAR value) [18600 h] | 18,600 | HHR | HKA | HHR | Standard | PRO | ACC | Vendor | - | - | MS4 |
|  | UPN | **UPS, network and cabinets** |  |  | 2028-06-21 | 2028-10-24 |  |  |  |  |  |  |  |  |  |  |  |  |  |  |  |
| HKA-P1040 |  | Manufacture UPS, network switches and field cabinets - KAEC |  | 90d | 2028-06-21 | 2028-10-24 | HKA-E1210 | 58d | 0d | Contract cost (BOQ x payment milestones) [447818 SAR]; Progress weight (fair EPC distribution, SAR value) [687580 h] | 687,580 | HHR | HKA | HHR | Standard | PRO | UPSNET | Vendor | - | - | MS4 |
|  | LOG | **FAT and logistics** |  |  | 2028-10-25 | 2029-01-02 |  |  |  |  |  |  |  |  |  |  |  |  |  |  |  |
| HKA-P1050 |  | Factory acceptance test at vendor premises - KAEC |  | 10d | 2028-10-25 | 2028-11-07 | HKA-P1010, HKA-P1020, HKA-P1030, HKA-P1040 | 58d | 0d | Contract cost (BOQ x payment milestones) [55644 SAR]; Progress weight (fair EPC distribution, SAR value) [213900 h] | 213,900 | HHR | HKA | HHR | Standard | PRO | PM | ETECHS | - | - | MS4 |
| HKA-P1060 |  | Shipping and customs clearance - KAEC |  | 35d | 2028-11-08 | 2028-12-26 | HKA-P1050 | 58d | 0d | Contract cost (BOQ x payment milestones) [166931 SAR]; Progress weight (fair EPC distribution, SAR value) [427180 h] | 427,180 | HHR | HKA | HHR | Standard | PRO | PM | Vendor | - | - | MS4 |
| HKA-P1070 |  | Delivery to station and receiving inspection - KAEC |  | 5d | 2028-12-27 | 2029-01-02 | HKA-P1060 | 58d | 0d | Contract cost (BOQ x payment milestones) [55644 SAR]; Progress weight (fair EPC distribution, SAR value) [213900 h] | 213,900 | HHR | HKA | HHR | Standard | PRO | PM | ETECHS | - | - | MS4 |
|  | HMD | **Madinah (HHR)** |  |  | 2028-06-21 | 2029-01-02 |  |  |  |  |  |  |  |  |  |  |  |  |  |  |  |
| HMD-P1100 |  | MS4 Material delivered (20%) - Madinah | milestone | 0d | 2029-01-02 | 2029-01-02 | HMD-P1070 | 54d | 0d |  |  | HHR | HMD | HHR | Standard | MS | PM | ETECHS | - | - | MS4 |
|  | CCT | **CCTV system** |  |  | 2028-06-21 | 2028-10-24 |  |  |  |  |  |  |  |  |  |  |  |  |  |  |  |
| HMD-P1010 |  | Manufacture CCTV cameras and analytics - Madinah |  | 90d | 2028-06-21 | 2028-10-24 | HMD-E1210 | 54d | 0d | Contract cost (BOQ x payment milestones) [264932 SAR]; Progress weight (fair EPC distribution, SAR value) [406720 h] | 406,720 | HHR | HMD | HHR | Standard | PRO | CCTV | Vendor | - | - | MS4 |
|  | VMS | **Video management and video wall** |  |  | 2028-06-21 | 2028-10-24 |  |  |  |  |  |  |  |  |  |  |  |  |  |  |  |
| HMD-P1020 |  | Manufacture video management servers, storage and video wall - Madinah |  | 90d | 2028-06-21 | 2028-10-24 | HMD-E1210 | 54d | 0d | Contract cost (BOQ x payment milestones) [116027 SAR]; Progress weight (fair EPC distribution, SAR value) [177940 h] | 177,940 | HHR | HMD | HHR | Standard | PRO | VMS | Vendor | - | - | MS4 |
|  | ACC | **Access control and intercom** |  |  | 2028-06-21 | 2028-10-24 |  |  |  |  |  |  |  |  |  |  |  |  |  |  |  |
| HMD-P1030 |  | Manufacture access control and intercom equipment - Madinah |  | 90d | 2028-06-21 | 2028-10-24 | HMD-E1210 | 54d | 0d | Contract cost (BOQ x payment milestones) [12501 SAR]; Progress weight (fair EPC distribution, SAR value) [19220 h] | 19,220 | HHR | HMD | HHR | Standard | PRO | ACC | Vendor | - | - | MS4 |
|  | UPN | **UPS, network and cabinets** |  |  | 2028-06-21 | 2028-10-24 |  |  |  |  |  |  |  |  |  |  |  |  |  |  |  |
| HMD-P1040 |  | Manufacture UPS, network switches and field cabinets - Madinah |  | 90d | 2028-06-21 | 2028-10-24 | HMD-E1210 | 54d | 0d | Contract cost (BOQ x payment milestones) [440861 SAR]; Progress weight (fair EPC distribution, SAR value) [677040 h] | 677,040 | HHR | HMD | HHR | Standard | PRO | UPSNET | Vendor | - | - | MS4 |

| ID | WBS | Activity | Type | Duration | Start | Finish | Predecessors | Total float | Free float | Resources | Cost | Area | Station | Railway | Priority | Discipline | Responsibility | EPC phase | Design stage | Submittal or approval | Payment milestone |
| --- | --- | --- | --- | --- | --- | --- | --- | --- | --- | --- | --- | --- | --- | --- | --- | --- | --- | --- | --- | --- | --- |
|  | LOG | **FAT and logistics** |  |  | 2028-10-25 | 2029-01-02 |  |  |  |  |  |  |  |  |  |  |  |  |  |  |  |
| HMD-P1050 |  | Factory acceptance test at vendor premises - Madinah |  | 10d | 2028-10-25 | 2028-11-07 | HMD-P1010, HMD-P1020, HMD-P1030, HMD-P1040 | 54d | 0d | Contract cost (BOQ x payment milestones) [55621 SAR]; Progress weight (fair EPC distribution, SAR value) [213280 h] | 213,280 | HHR | HMD | HHR | Standard | PM | ETECHS | PRO | - | - | MS4 |
| HMD-P1060 |  | Shipping and customs clearance - Madinah |  | 35d | 2028-11-08 | 2028-12-26 | HMD-P1050 | 54d | 0d | Contract cost (BOQ x payment milestones) [166864 SAR]; Progress weight (fair EPC distribution, SAR value) [427180 h] | 427,180 | HHR | HMD | HHR | Standard | PM | Vendor | PRO | - | - | MS4 |
| HMD-P1070 |  | Delivery to station and receiving inspection - Madinah |  | 5d | 2028-12-27 | 2029-01-02 | HMD-P1060 | 54d | 0d | Contract cost (BOQ x payment milestones) [55621 SAR]; Progress weight (fair EPC distribution, SAR value) [213280 h] | 213,280 | HHR | HMD | HHR | Standard | PM | ETECHS | PRO | - | - | MS4 |
|  | CON | **Construction** |  |  | 2027-03-01 | 2029-07-01 |  |  |  |  |  |  |  |  |  |  |  |  |  |  |  |
|  | RYD | **Riyadh priority stations (NSR + EWR)** |  |  | 2027-03-01 | 2027-09-27 |  |  |  |  |  |  |  |  |  |  |  |  |  |  |  |
|  | NRY | **Riyadh (Thumamah) (NSR)** |  |  | 2027-03-01 | 2027-09-20 |  |  |  |  |  |  |  |  |  |  |  |  |  |  |  |
| NRY-C2100 |  | MS5 Installation complete (20%) - Riyadh (Thumamah) | milestone | 0d | 2027-09-20 | 2027-09-20 | NRY-C2020, NRY-C2030, NRY-C2040, NRY-C2050, NRY-C1020 | 464d | 0d |  |  | RYD | NRY | NSR | Riyadh priority | PM | ETECHS | MS | - | - | MS5 |
|  | CIV | **Civil works** |  |  | 2027-03-01 | 2027-07-11 |  |  |  |  |  |  |  |  |  |  |  |  |  |  |  |
| NRY-C1010 |  | Civil: platform trenches and duct banks - Riyadh (Thumamah) |  | 59d | 2027-03-01 | 2027-06-03 | NRY-E1210 | 501d | 0d | Contract cost (BOQ x payment milestones) [115940 SAR]; Progress weight (fair EPC distribution, SAR value) [267220 h] | 267,220 | RYD | NRY | NSR | Riyadh priority | CIVIL | ETECHS | CON | - | - | MS5 |
| NRY-C1020 |  | Civil: camera and ALPR pole foundations and poles - Riyadh (Thumamah) |  | 47d | 2027-04-29 | 2027-07-11 | NRY-C1010 SS+38d | 501d | 37d | Contract cost (BOQ x payment milestones) [94860 SAR]; Progress weight (fair EPC distribution, SAR value) [200260 h] | 200,260 | RYD | NRY | NSR | Riyadh priority | CIVIL | ETECHS | CON | - | - | MS5 |
|  | INS | **Installation** |  |  | 2027-08-02 | 2027-09-20 |  |  |  |  |  |  |  |  |  |  |  |  |  |  |  |
| NRY-C2010 |  | Install UPS, network switches and field cabinets - Riyadh (Thumamah) |  | 11d | 2027-08-02 | 2027-08-16 | NRY-P1100 | 464d | 0d | Contract cost (BOQ x payment milestones) [97072 SAR]; Progress weight (fair EPC distribution, SAR value) [100440 h] | 100,440 | RYD | NRY | NSR | Riyadh priority | UPSNET | ETECHS | CON | - | - | MS5 |
| NRY-C2020 |  | Cabling and termination (power, fibre, data) - Riyadh (Thumamah) |  | 18d | 2027-08-08 | 2027-08-31 | NRY-C2010 SS+4d, NRY-C1010 SS+43d | 464d | 0d | Contract cost (BOQ x payment milestones) [145607 SAR]; Progress weight (fair EPC distribution, SAR value) [200260 h] | 200,260 | RYD | NRY | NSR | Riyadh priority | CCTV | ETECHS | CON | - | - | MS5 |
| NRY-C2040 |  | Install video management, video wall and control-room equipment - Riyadh (Thumamah) |  | 12d | 2027-08-17 | 2027-09-01 | NRY-C2010 | 477d | 13d | Contract cost (BOQ x payment milestones) [72804 SAR]; Progress weight (fair EPC distribution, SAR value) [100440 h] | 100,440 | RYD | NRY | NSR | Riyadh priority | VMS | ETECHS | CON | - | - | MS5 |
| NRY-C2050 |  | Install access control and intercom - Riyadh (Thumamah) |  | 11d | 2027-08-23 | 2027-09-06 | NRY-C2010 FS+4d | 474d | 10d | Contract cost (BOQ x payment milestones) [48536 SAR]; Progress weight (fair EPC distribution, SAR value) [66960 h] | 66,960 | RYD | NRY | NSR | Riyadh priority | ACC | ETECHS | CON | - | - | MS5 |
| NRY-C2030 |  | Install and aim CCTV cameras - Riyadh (Thumamah) |  | 14d | 2027-09-01 | 2027-09-20 | NRY-C2020, NRY-C1020 | 464d | 0d | Contract cost (BOQ x payment milestones) [121339 SAR]; Progress weight (fair EPC distribution, SAR value) [166780 h] | 166,780 | RYD | NRY | NSR | Riyadh priority | CCTV | ETECHS | CON | - | - | MS5 |
|  | ERY | **Riyadh (Malaz) (EWR)** |  |  | 2027-03-22 | 2027-09-27 |  |  |  |  |  |  |  |  |  |  |  |  |  |  |  |
| ERY-C2100 |  | MS5 Installation complete (20%) - Riyadh (Malaz) | milestone | 0d | 2027-09-27 | 2027-09-27 | ERY-C2020, ERY-C2030, ERY-C2040, ERY-C2050, ERY-C1020 | 460d | 0d |  |  | RYD | ERY | EWR | Riyadh priority | PM | ETECHS | MS | - | - | MS5 |
|  | CIV | **Civil works** |  |  | 2027-03-22 | 2027-07-18 |  |  |  |  |  |  |  |  |  |  |  |  |  |  |  |
| ERY-C1010 |  | Civil: platform trenches and duct banks - Riyadh (Malaz) |  | 56d | 2027-03-22 | 2027-06-14 | ERY-E1210 | 498d | 0d | Contract cost (BOQ x payment milestones) [121042 SAR]; Progress weight (fair EPC distribution, SAR value) [237460 h] | 237,460 | RYD | ERY | EWR | Riyadh priority | CIVIL | ETECHS | CON | - | - | MS5 |
| ERY-C1020 |  | Civil: camera and ALPR pole foundations and poles - Riyadh (Malaz) |  | 44d | 2027-05-11 | 2027-07-18 | ERY-C1010 SS+36d | 498d | 38d | Contract cost (BOQ x payment milestones) [99034 SAR]; Progress weight (fair EPC distribution, SAR value) [177940 h] | 177,940 | RYD | ERY | EWR | Riyadh priority | CIVIL | ETECHS | CON | - | - | MS5 |
|  | INS | **Installation** |  |  | 2027-08-16 | 2027-09-27 |  |  |  |  |  |  |  |  |  |  |  |  |  |  |  |
| ERY-C2010 |  | Install UPS, network switches and field cabinets - Riyadh (Malaz) |  | 9d | 2027-08-16 | 2027-08-26 | ERY-P1100 | 460d | 0d | Contract cost (BOQ x payment milestones) [79646 SAR]; Progress weight (fair EPC distribution, SAR value) [89280 h] | 89,280 | RYD | ERY | EWR | Riyadh priority | UPSNET | ETECHS | CON | - | - | MS5 |
| ERY-C2020 |  | Cabling and termination (power, fibre, data) - Riyadh (Malaz) |  | 15d | 2027-08-19 | 2027-09-08 | ERY-C2010 SS+3d, ERY-C1010 SS+40d | 460d | 0d | Contract cost (BOQ x payment milestones) [119468 SAR]; Progress weight (fair EPC distribution, SAR value) [177940 h] | 177,940 | RYD | ERY | EWR | Riyadh priority | CCTV | ETECHS | CON | - | - | MS5 |
| ERY-C2040 |  | Install video management, video wall and control-room equipment - Riyadh (Malaz) |  | 11d | 2027-08-29 | 2027-09-12 | ERY-C2010 | 470d | 10d | Contract cost (BOQ x payment milestones) [59734 SAR]; Progress weight (fair EPC distribution, SAR value) [89280 h] | 89,280 | RYD | ERY | EWR | Riyadh priority | VMS | ETECHS | CON | - | - | MS5 |
| ERY-C2050 |  | Install access control and intercom - Riyadh (Malaz) |  | 9d | 2027-09-01 | 2027-09-13 | ERY-C2010 FS+3d | 469d | 9d | Contract cost (BOQ x payment milestones) [39823 SAR]; Progress weight (fair EPC distribution, SAR value) [59520 h] | 59,520 | RYD | ERY | EWR | Riyadh priority | ACC | ETECHS | CON | - | - | MS5 |
| ERY-C2030 |  | Install and aim CCTV cameras - Riyadh (Malaz) |  | 12d | 2027-09-09 | 2027-09-27 | ERY-C2020, ERY-C1020 | 460d | 0d | Contract cost (BOQ x payment milestones) [99557 SAR]; Progress weight (fair EPC distribution, SAR value) [148180 h] | 148,180 | RYD | ERY | EWR | Riyadh priority | CCTV | ETECHS | CON | - | - | MS5 |

| ID | WBS | Activity | Type | Duration | Start | Finish | Predecessors | Total float | Free float | Resources | Cost | Area | Station | Railway | Priority | EPC phase | Discipline | Responsibility | Design stage | Submittal or approval | Payment milestone |
| --- | --- | --- | --- | --- | --- | --- | --- | --- | --- | --- | --- | --- | --- | --- | --- | --- | --- | --- | --- | --- | --- |
|  | NSR | **NSR - North South Railway** |  |  | 2027-11-07 | 2029-07-01 |  |  |  |  |  |  |  |  |  |  |  |  |  |  |  |
|  | NQS | **Al Qassim (NSR)** |  |  | 2027-11-07 | 2028-06-11 |  |  |  |  |  |  |  |  |  |  |  |  |  |  |  |
| NQS-C2100 |  | MS5 Installation complete (20%) - Al Qassim | milestone | 0d | 2028-06-11 | 2028-06-11 | NQS-C2020, NQS-C2030, NQS-C2040, NQS-C2050, NQS-C1020 | 286d | 0d |  |  | NSR | NQS | NSR | Standard | MS | PM | ETECHS | - | - | MS5 |
|  | CIV | **Civil works** |  |  | 2027-11-07 | 2028-03-09 |  |  |  |  |  |  |  |  |  |  |  |  |  |  |  |
| NQS-C1010 |  | Civil: platform trenches and duct banks - Al Qassim |  | 59d | 2027-11-07 | 2028-01-26 | NQS-E1210 | 333d | 0d | Contract cost (BOQ x payment milestones) [115940 SAR]; Progress weight (fair EPC distribution, SAR value) [261020 h] | 261,020 | NSR | NQS | NSR | Standard | CON | CIVIL | ETECHS | - | - | MS5 |
| NQS-C1020 |  | Civil: camera and ALPR pole foundations and poles - Al Qassim |  | 47d | 2027-12-29 | 2028-03-09 | NQS-C1010 SS+38d | 333d | 47d | Contract cost (BOQ x payment milestones) [94860 SAR]; Progress weight (fair EPC distribution, SAR value) [195920 h] | 195,920 | NSR | NQS | NSR | Standard | CON | CIVIL | ETECHS | - | - | MS5 |
|  | INS | **Installation** |  |  | 2028-04-16 | 2028-06-11 |  |  |  |  |  |  |  |  |  |  |  |  |  |  |  |
| NQS-C2010 |  | Install UPS, network switches and field cabinets - Al Qassim |  | 11d | 2028-04-16 | 2028-05-07 | NQS-P1100 | 286d | 0d | Contract cost (BOQ x payment milestones) [93797 SAR]; Progress weight (fair EPC distribution, SAR value) [97960 h] | 97,960 | NSR | NQS | NSR | Standard | CON | UPSNET | ETECHS | - | - | MS5 |
| NQS-C2020 |  | Cabling and termination (power, fibre, data) - Al Qassim |  | 18d | 2028-04-20 | 2028-05-22 | NQS-C2010 SS+4d, NQS-C1010 SS+43d | 286d | 0d | Contract cost (BOQ x payment milestones) [140695 SAR]; Progress weight (fair EPC distribution, SAR value) [195920 h] | 195,920 | NSR | NQS | NSR | Standard | CON | CCTV | ETECHS | - | - | MS5 |
| NQS-C2040 |  | Install video management, video wall and control-room equipment - Al Qassim |  | 12d | 2028-05-08 | 2028-05-23 | NQS-C2010 | 299d | 13d | Contract cost (BOQ x payment milestones) [70348 SAR]; Progress weight (fair EPC distribution, SAR value) [97960 h] | 97,960 | NSR | NQS | NSR | Standard | CON | VMS | ETECHS | - | - | MS5 |
| NQS-C2050 |  | Install access control and intercom - Al Qassim |  | 11d | 2028-05-14 | 2028-05-28 | NQS-C2010 FS+4d | 296d | 10d | Contract cost (BOQ x payment milestones) [46898 SAR]; Progress weight (fair EPC distribution, SAR value) [65100 h] | 65,100 | NSR | NQS | NSR | Standard | CON | ACC | ETECHS | - | - | MS5 |
| NQS-C2030 |  | Install and aim CCTV cameras - Al Qassim |  | 14d | 2028-05-23 | 2028-06-11 | NQS-C2020, NQS-C1020 | 286d | 0d | Contract cost (BOQ x payment milestones) [117246 SAR]; Progress weight (fair EPC distribution, SAR value) [163060 h] | 163,060 | NSR | NQS | NSR | Standard | CON | CCTV | ETECHS | - | - | MS5 |
|  | NMJ | **Al Majma'ah (NSR)** |  |  | 2027-12-26 | 2028-07-30 |  |  |  |  |  |  |  |  |  |  |  |  |  |  |  |
| NMJ-C2100 |  | MS5 Installation complete (20%) - Al Majma'ah | milestone | 0d | 2028-07-30 | 2028-07-30 | NMJ-C2020, NMJ-C2030, NMJ-C2040, NMJ-C2050, NMJ-C1020 | 251d | 0d |  |  | NSR | NMJ | NSR | Standard | MS | PM | ETECHS | - | - | MS5 |
|  | CIV | **Civil works** |  |  | 2027-12-26 | 2028-04-27 |  |  |  |  |  |  |  |  |  |  |  |  |  |  |  |
| NMJ-C1010 |  | Civil: platform trenches and duct banks - Al Majma'ah |  | 59d | 2027-12-26 | 2028-03-22 | NMJ-E1210 | 298d | 0d | Contract cost (BOQ x payment milestones) [115940 SAR]; Progress weight (fair EPC distribution, SAR value) [261020 h] | 261,020 | NSR | NMJ | NSR | Standard | CON | CIVIL | ETECHS | - | - | MS5 |
| NMJ-C1020 |  | Civil: camera and ALPR pole foundations and poles - Al Majma'ah |  | 47d | 2028-02-16 | 2028-04-27 | NMJ-C1010 SS+38d | 298d | 47d | Contract cost (BOQ x payment milestones) [94860 SAR]; Progress weight (fair EPC distribution, SAR value) [195920 h] | 195,920 | NSR | NMJ | NSR | Standard | CON | CIVIL | ETECHS | - | - | MS5 |
|  | INS | **Installation** |  |  | 2028-06-11 | 2028-07-30 |  |  |  |  |  |  |  |  |  |  |  |  |  |  |  |
| NMJ-C2010 |  | Install UPS, network switches and field cabinets - Al Majma'ah |  | 11d | 2028-06-11 | 2028-06-25 | NMJ-P1100 | 251d | 0d | Contract cost (BOQ x payment milestones) [93797 SAR]; Progress weight (fair EPC distribution, SAR value) [97960 h] | 97,960 | NSR | NMJ | NSR | Standard | CON | UPSNET | ETECHS | - | - | MS5 |
| NMJ-C2020 |  | Cabling and termination (power, fibre, data) - Al Majma'ah |  | 18d | 2028-06-15 | 2028-07-10 | NMJ-C2010 SS+4d, NMJ-C1010 SS+43d | 251d | 0d | Contract cost (BOQ x payment milestones) [140695 SAR]; Progress weight (fair EPC distribution, SAR value) [195920 h] | 195,920 | NSR | NMJ | NSR | Standard | CON | CCTV | ETECHS | - | - | MS5 |
| NMJ-C2040 |  | Install video management, video wall and control-room equipment - Al Majma'ah |  | 12d | 2028-06-26 | 2028-07-11 | NMJ-C2010 | 264d | 13d | Contract cost (BOQ x payment milestones) [70348 SAR]; Progress weight (fair EPC distribution, SAR value) [97960 h] | 97,960 | NSR | NMJ | NSR | Standard | CON | VMS | ETECHS | - | - | MS5 |
| NMJ-C2050 |  | Install access control and intercom - Al Majma'ah |  | 11d | 2028-07-02 | 2028-07-16 | NMJ-C2010 FS+4d | 261d | 10d | Contract cost (BOQ x payment milestones) [46898 SAR]; Progress weight (fair EPC distribution, SAR value) [65100 h] | 65,100 | NSR | NMJ | NSR | Standard | CON | ACC | ETECHS | - | - | MS5 |
| NMJ-C2030 |  | Install and aim CCTV cameras - Al Majma'ah |  | 14d | 2028-07-11 | 2028-07-30 | NMJ-C2020, NMJ-C1020 | 251d | 0d | Contract cost (BOQ x payment milestones) [117246 SAR]; Progress weight (fair EPC distribution, SAR value) [163060 h] | 163,060 | NSR | NMJ | NSR | Standard | CON | CCTV | ETECHS | - | - | MS5 |
|  | NHL | **Hail (NSR)** |  |  | 2028-07-24 | 2029-02-19 |  |  |  |  |  |  |  |  |  |  |  |  |  |  |  |
| NHL-C2100 |  | MS5 Installation complete (20%) - Hail | milestone | 0d | 2029-02-19 | 2029-02-19 | NHL-C2020, NHL-C2030, NHL-C2040, NHL-C2050, NHL-C1020 | 110d | 0d |  |  | NSR | NHL | NSR | Standard | MS | PM | ETECHS | - | - | MS5 |

| ID | WBS | Activity | Type | Duration | Start | Finish | Predecessors | Total float | Free float | Resources | Cost | Area | Station | Railway | Priority | Discipline | EPC phase | Design stage | Submittal or approval | Responsibility | Payment milestone |
| --- | --- | --- | --- | --- | --- | --- | --- | --- | --- | --- | --- | --- | --- | --- | --- | --- | --- | --- | --- | --- | --- |
|  | CIV | **Civil works** |  |  | 2028-07-24 | 2028-11-19 |  |  |  |  |  |  |  |  |  |  |  |  |  |  |  |
| NHL-C1010 |  | Civil: platform trenches and duct banks - Hail |  | 59d | 2028-07-24 | 2028-10-12 | NHL-E1210 | 157d | 0d | Contract cost (BOQ x payment milestones) [115940 SAR]; Progress weight (fair EPC distribution, SAR value) [261020 h] | 261,020 | NSR | NHL | NSR | Standard | CIVIL | CON | - | - | ETECHS | MS5 |
| NHL-C1020 |  | Civil: camera and ALPR pole foundations and poles - Hail |  | 47d | 2028-09-14 | 2028-11-19 | NHL-C1010 SS+38d | 157d | 47d | Contract cost (BOQ x payment milestones) [94860 SAR]; Progress weight (fair EPC distribution, SAR value) [195920 h] | 195,920 | NSR | NHL | NSR | Standard | CIVIL | CON | - | - | ETECHS | MS5 |
|  | INS | **Installation** |  |  | 2028-12-25 | 2029-02-19 |  |  |  |  |  |  |  |  |  |  |  |  |  |  |  |
| NHL-C2010 |  | Install UPS, network switches and field cabinets - Hail |  | 11d | 2028-12-25 | 2029-01-08 | NHL-P1100 | 110d | 0d | Contract cost (BOQ x payment milestones) [93797 SAR]; Progress weight (fair EPC distribution, SAR value) [97960 h] | 97,960 | NSR | NHL | NSR | Standard | UPSNET | CON | - | - | ETECHS | MS5 |
| NHL-C2020 |  | Cabling and termination (power, fibre, data) - Hail |  | 18d | 2028-12-31 | 2029-01-23 | NHL-C2010 SS+4d, NHL-C1010 SS+43d | 110d | 0d | Contract cost (BOQ x payment milestones) [140695 SAR]; Progress weight (fair EPC distribution, SAR value) [195920 h] | 195,920 | NSR | NHL | NSR | Standard | CCTV | CON | - | - | ETECHS | MS5 |
| NHL-C2040 |  | Install video management, video wall and control-room equipment - Hail |  | 12d | 2029-01-09 | 2029-01-24 | NHL-C2010 | 123d | 13d | Contract cost (BOQ x payment milestones) [70348 SAR]; Progress weight (fair EPC distribution, SAR value) [97960 h] | 97,960 | NSR | NHL | NSR | Standard | VMS | CON | - | - | ETECHS | MS5 |
| NHL-C2050 |  | Install access control and intercom - Hail |  | 11d | 2029-01-15 | 2029-01-29 | NHL-C2010 FS+4d | 120d | 10d | Contract cost (BOQ x payment milestones) [46898 SAR]; Progress weight (fair EPC distribution, SAR value) [65100 h] | 65,100 | NSR | NHL | NSR | Standard | ACC | CON | - | - | ETECHS | MS5 |
| NHL-C2030 |  | Install and aim CCTV cameras - Hail |  | 14d | 2029-01-24 | 2029-02-19 | NHL-C2020, NHL-C1020 | 110d | 0d | Contract cost (BOQ x payment milestones) [117246 SAR]; Progress weight (fair EPC distribution, SAR value) [163060 h] | 163,060 | NSR | NHL | NSR | Standard | CCTV | CON | - | - | ETECHS | MS5 |
|  | NJF | **Al Jouf (NSR)** |  |  | 2028-10-05 | 2029-05-13 |  |  |  |  |  |  |  |  |  |  |  |  |  |  |  |
| NJF-C2100 |  | MS5 Installation complete (20%) - Al Jouf | milestone | 0d | 2029-05-13 | 2029-05-13 | NJF-C2020, NJF-C2030, NJF-C2040, NJF-C2050, NJF-C1020 | 57d | 0d |  |  | NSR | NJF | NSR | Standard | PM | MS | - | - | ETECHS | MS5 |
|  | CIV | **Civil works** |  |  | 2028-10-05 | 2029-01-31 |  |  |  |  |  |  |  |  |  |  |  |  |  |  |  |
| NJF-C1010 |  | Civil: platform trenches and duct banks - Al Jouf |  | 59d | 2028-10-05 | 2028-12-26 | NJF-E1210 | 104d | 0d | Contract cost (BOQ x payment milestones) [115940 SAR]; Progress weight (fair EPC distribution, SAR value) [262880 h] | 262,880 | NSR | NJF | NSR | Standard | CIVIL | CON | - | - | ETECHS | MS5 |
| NJF-C1020 |  | Civil: camera and ALPR pole foundations and poles - Al Jouf |  | 47d | 2028-11-28 | 2029-01-31 | NJF-C1010 SS+38d | 104d | 47d | Contract cost (BOQ x payment milestones) [94860 SAR]; Progress weight (fair EPC distribution, SAR value) [197160 h] | 197,160 | NSR | NJF | NSR | Standard | CIVIL | CON | - | - | ETECHS | MS5 |
|  | INS | **Installation** |  |  | 2029-03-18 | 2029-05-13 |  |  |  |  |  |  |  |  |  |  |  |  |  |  |  |
| NJF-C2010 |  | Install UPS, network switches and field cabinets - Al Jouf |  | 11d | 2029-03-18 | 2029-04-01 | NJF-P1100 | 57d | 0d | Contract cost (BOQ x payment milestones) [94754 SAR]; Progress weight (fair EPC distribution, SAR value) [98580 h] | 98,580 | NSR | NJF | NSR | Standard | UPSNET | CON | - | - | ETECHS | MS5 |
| NJF-C2020 |  | Cabling and termination (power, fibre, data) - Al Jouf |  | 18d | 2029-03-22 | 2029-04-16 | NJF-C2010 SS+4d, NJF-C1010 SS+43d | 57d | 0d | Contract cost (BOQ x payment milestones) [142131 SAR]; Progress weight (fair EPC distribution, SAR value) [197160 h] | 197,160 | NSR | NJF | NSR | Standard | CCTV | CON | - | - | ETECHS | MS5 |
| NJF-C2040 |  | Install video management, video wall and control-room equipment - Al Jouf |  | 12d | 2029-04-02 | 2029-04-17 | NJF-C2010 | 70d | 13d | Contract cost (BOQ x payment milestones) [71065 SAR]; Progress weight (fair EPC distribution, SAR value) [98580 h] | 98,580 | NSR | NJF | NSR | Standard | VMS | CON | - | - | ETECHS | MS5 |
| NJF-C2050 |  | Install access control and intercom - Al Jouf |  | 11d | 2029-04-08 | 2029-04-29 | NJF-C2010 FS+4d | 67d | 10d | Contract cost (BOQ x payment milestones) [47377 SAR]; Progress weight (fair EPC distribution, SAR value) [65720 h] | 65,720 | NSR | NJF | NSR | Standard | ACC | CON | - | - | ETECHS | MS5 |
| NJF-C2030 |  | Install and aim CCTV cameras - Al Jouf |  | 14d | 2029-04-17 | 2029-05-13 | NJF-C2020, NJF-C1020 | 57d | 0d | Contract cost (BOQ x payment milestones) [118442 SAR]; Progress weight (fair EPC distribution, SAR value) [164300 h] | 164,300 | NSR | NJF | NSR | Standard | CCTV | CON | - | - | ETECHS | MS5 |
|  | NQR | **Al Qurayyat (NSR)** |  |  | 2028-11-23 | 2029-07-01 |  |  |  |  |  |  |  |  |  |  |  |  |  |  |  |
| NQR-C2100 |  | MS5 Installation complete (20%) - Al Qurayyat | milestone | 0d | 2029-07-01 | 2029-07-01 | NQR-C2020, NQR-C2030, NQR-C2040, NQR-C2050, NQR-C1020 | 22d | 0d |  |  | NSR | NQR | NSR | Standard | PM | MS | - | - | ETECHS | MS5 |
|  | CIV | **Civil works** |  |  | 2028-11-23 | 2029-03-29 |  |  |  |  |  |  |  |  |  |  |  |  |  |  |  |
| NQR-C1010 |  | Civil: platform trenches and duct banks - Al Qurayyat |  | 59d | 2028-11-23 | 2029-02-20 | NQR-E1210 | 69d | 0d | Contract cost (BOQ x payment milestones) [115940 SAR]; Progress weight (fair EPC distribution, SAR value) [261020 h] | 261,020 | NSR | NQR | NSR | Standard | CIVIL | CON | - | - | ETECHS | MS5 |
| NQR-C1020 |  | Civil: camera and ALPR pole foundations and poles - Al Qurayyat |  | 47d | 2029-01-16 | 2029-03-29 | NQR-C1010 SS+38d | 69d | 47d | Contract cost (BOQ x payment milestones) [94860 SAR]; Progress weight (fair EPC distribution, SAR value) [195920 h] | 195,920 | NSR | NQR | NSR | Standard | CIVIL | CON | - | - | ETECHS | MS5 |

| ID | WBS | Activity | Type | Duration | Start | Finish | Predecessors | Total float | Free float | Resources | Cost | Area | Station | Railway | Priority | Discipline | EPC phase | Design stage | Submittal or approval | Responsibility | Payment milestone |
| --- | --- | --- | --- | --- | --- | --- | --- | --- | --- | --- | --- | --- | --- | --- | --- | --- | --- | --- | --- | --- | --- |
|  | INS | **Installation** |  |  | 2029-05-13 | 2029-07-01 |  |  |  |  |  |  |  |  |  |  |  |  |  |  |  |
| NQR-C2010 |  | Install UPS, network switches and field cabinets - Al Qurayyat |  | 11d | 2029-05-13 | 2029-05-27 | NQR-P1100 | 22d | 0d | Contract cost (BOQ x payment milestones) [93797 SAR]; Progress weight (fair EPC distribution, SAR value) [97960 h] | 97,960 | NSR | NQR | NSR | Standard | UPSNET | CON | - | - | ETECHS | MS5 |
| NQR-C2020 |  | Cabling and termination (power, fibre, data) - Al Qurayyat |  | 18d | 2029-05-17 | 2029-06-11 | NQR-C2010 SS+4d, NQR-C1010 SS+43d | 22d | 0d | Contract cost (BOQ x payment milestones) [140695 SAR]; Progress weight (fair EPC distribution, SAR value) [195920 h] | 195,920 | NSR | NQR | NSR | Standard | CCTV | CON | - | - | ETECHS | MS5 |
| NQR-C2040 |  | Install video management, video wall and control-room equipment - Al Qurayyat |  | 12d | 2029-05-28 | 2029-06-12 | NQR-C2010 | 35d | 13d | Contract cost (BOQ x payment milestones) [70348 SAR]; Progress weight (fair EPC distribution, SAR value) [97960 h] | 97,960 | NSR | NQR | NSR | Standard | VMS | CON | - | - | ETECHS | MS5 |
| NQR-C2050 |  | Install access control and intercom - Al Qurayyat |  | 11d | 2029-06-03 | 2029-06-17 | NQR-C2010 FS+4d | 32d | 10d | Contract cost (BOQ x payment milestones) [46898 SAR]; Progress weight (fair EPC distribution, SAR value) [65100 h] | 65,100 | NSR | NQR | NSR | Standard | ACC | CON | - | - | ETECHS | MS5 |
| NQR-C2030 |  | Install and aim CCTV cameras - Al Qurayyat |  | 14d | 2029-06-12 | 2029-07-01 | NQR-C2020, NQR-C1020 | 22d | 0d | Contract cost (BOQ x payment milestones) [117246 SAR]; Progress weight (fair EPC distribution, SAR value) [163060 h] | 163,060 | NSR | NQR | NSR | Standard | CCTV | CON | - | - | ETECHS | MS5 |
|  | EWR | **EWR - East West Railway** |  |  | 2027-09-09 | 2029-01-03 |  |  |  |  |  |  |  |  |  |  |  |  |  |  |  |
|  | EDM | **Dammam (EWR)** |  |  | 2027-09-09 | 2028-03-30 |  |  |  |  |  |  |  |  |  |  |  |  |  |  |  |
| EDM-C2100 |  | MS5 Installation complete (20%) - Dammam | milestone | 0d | 2028-03-30 | 2028-03-30 | EDM-C2020, EDM-C2030, EDM-C2040, EDM-C2050, EDM-C1020 | 332d | 0d |  |  | EWR | EDM | EWR | Standard | PM | MS | - | - | ETECHS | MS5 |
|  | CIV | **Civil works** |  |  | 2027-09-09 | 2027-12-30 |  |  |  |  |  |  |  |  |  |  |  |  |  |  |  |
| EDM-C1010 |  | Civil: platform trenches and duct banks - Dammam |  | 56d | 2027-09-09 | 2027-11-28 | EDM-E1210 | 380d | 0d | Contract cost (BOQ x payment milestones) [121040 SAR]; Progress weight (fair EPC distribution, SAR value) [244900 h] | 244,900 | EWR | EDM | EWR | Standard | CIVIL | CON | - | - | ETECHS | MS5 |
| EDM-C1020 |  | Civil: camera and ALPR pole foundations and poles - Dammam |  | 44d | 2027-11-01 | 2027-12-30 | EDM-C1010 SS+36d | 380d | 48d | Contract cost (BOQ x payment milestones) [99032 SAR]; Progress weight (fair EPC distribution, SAR value) [183520 h] | 183,520 | EWR | EDM | EWR | Standard | CIVIL | CON | - | - | ETECHS | MS5 |
|  | INS | **Installation** |  |  | 2028-02-13 | 2028-03-30 |  |  |  |  |  |  |  |  |  |  |  |  |  |  |  |
| EDM-C2010 |  | Install UPS, network switches and field cabinets - Dammam |  | 9d | 2028-02-13 | 2028-03-01 | EDM-P1100 | 332d | 0d | Contract cost (BOQ x payment milestones) [83486 SAR]; Progress weight (fair EPC distribution, SAR value) [91760 h] | 91,760 | EWR | EDM | EWR | Standard | UPSNET | CON | - | - | ETECHS | MS5 |
| EDM-C2020 |  | Cabling and termination (power, fibre, data) - Dammam |  | 15d | 2028-02-16 | 2028-03-14 | EDM-C2010 SS+3d, EDM-C1010 SS+40d | 332d | 0d | Contract cost (BOQ x payment milestones) [125229 SAR]; Progress weight (fair EPC distribution, SAR value) [183520 h] | 183,520 | EWR | EDM | EWR | Standard | CCTV | CON | - | - | ETECHS | MS5 |
| EDM-C2040 |  | Install video management, video wall and control-room equipment - Dammam |  | 11d | 2028-03-02 | 2028-03-16 | EDM-C2010 | 342d | 10d | Contract cost (BOQ x payment milestones) [62615 SAR]; Progress weight (fair EPC distribution, SAR value) [91760 h] | 91,760 | EWR | EDM | EWR | Standard | VMS | CON | - | - | ETECHS | MS5 |
| EDM-C2050 |  | Install access control and intercom - Dammam |  | 9d | 2028-03-07 | 2028-03-19 | EDM-C2010 FS+3d | 341d | 9d | Contract cost (BOQ x payment milestones) [41743 SAR]; Progress weight (fair EPC distribution, SAR value) [61380 h] | 61,380 | EWR | EDM | EWR | Standard | ACC | CON | - | - | ETECHS | MS5 |
| EDM-C2030 |  | Install and aim CCTV cameras - Dammam |  | 12d | 2028-03-15 | 2028-03-30 | EDM-C2020, EDM-C1020 | 332d | 0d | Contract cost (BOQ x payment milestones) [104358 SAR]; Progress weight (fair EPC distribution, SAR value) [153140 h] | 153,140 | EWR | EDM | EWR | Standard | CCTV | CON | - | - | ETECHS | MS5 |
|  | EHF | **Hufuf (EWR)** |  |  | 2027-11-07 | 2028-06-01 |  |  |  |  |  |  |  |  |  |  |  |  |  |  |  |
| EHF-C2100 |  | MS5 Installation complete (20%) - Hufuf | milestone | 0d | 2028-06-01 | 2028-06-01 | EHF-C2020, EHF-C2030, EHF-C2040, EHF-C2050, EHF-C1020 | 292d | 0d |  |  | EWR | EHF | EWR | Standard | PM | MS | - | - | ETECHS | MS5 |
|  | CIV | **Civil works** |  |  | 2027-11-07 | 2028-02-17 |  |  |  |  |  |  |  |  |  |  |  |  |  |  |  |
| EHF-C1010 |  | Civil: platform trenches and duct banks - Hufuf |  | 53d | 2027-11-07 | 2028-01-18 | EHF-E1210 | 345d | 0d | Contract cost (BOQ x payment milestones) [113805 SAR]; Progress weight (fair EPC distribution, SAR value) [217000 h] | 217,000 | EWR | EHF | EWR | Standard | CIVIL | CON | - | - | ETECHS | MS5 |
| EHF-C1020 |  | Civil: camera and ALPR pole foundations and poles - Hufuf |  | 41d | 2027-12-23 | 2028-02-17 | EHF-C1010 SS+34d | 345d | 53d | Contract cost (BOQ x payment milestones) [93113 SAR]; Progress weight (fair EPC distribution, SAR value) [163060 h] | 163,060 | EWR | EHF | EWR | Standard | CIVIL | CON | - | - | ETECHS | MS5 |
|  | INS | **Installation** |  |  | 2028-04-16 | 2028-06-01 |  |  |  |  |  |  |  |  |  |  |  |  |  |  |  |
| EHF-C2010 |  | Install UPS, network switches and field cabinets - Hufuf |  | 9d | 2028-04-16 | 2028-04-26 | EHF-P1100 | 292d | 0d | Contract cost (BOQ x payment milestones) [71756 SAR]; Progress weight (fair EPC distribution, SAR value) [81220 h] | 81,220 | EWR | EHF | EWR | Standard | UPSNET | CON | - | - | ETECHS | MS5 |
| EHF-C2020 |  | Cabling and termination (power, fibre, data) - Hufuf |  | 15d | 2028-04-19 | 2028-05-16 | EHF-C2010 SS+3d, EHF-C1010 SS+38d | 292d | 0d | Contract cost (BOQ x payment milestones) [107635 SAR]; Progress weight (fair EPC distribution, SAR value) [163060 h] | 163,060 | EWR | EHF | EWR | Standard | CCTV | CON | - | - | ETECHS | MS5 |
| EHF-C2040 |  | Install video management, video wall and control-room equipment - Hufuf |  | 11d | 2028-04-27 | 2028-05-18 | EHF-C2010 | 302d | 10d | Contract cost (BOQ x payment milestones) [53817 SAR]; Progress weight (fair EPC distribution, SAR value) [81220 h] | 81,220 | EWR | EHF | EWR | Standard | VMS | CON | - | - | ETECHS | MS5 |
| EHF-C2050 |  | Install access control and intercom - Hufuf |  | 9d | 2028-05-09 | 2028-05-21 | EHF-C2010 FS+3d | 301d | 9d | Contract cost (BOQ x payment milestones) [35878 SAR]; Progress weight (fair EPC distribution, SAR value) [54560 h] | 54,560 | EWR | EHF | EWR | Standard | ACC | CON | - | - | ETECHS | MS5 |
| EHF-C2030 |  | Install and aim CCTV cameras - Hufuf |  | 12d | 2028-05-17 | 2028-06-01 | EHF-C2020, EHF-C1020 | 292d | 0d | Contract cost (BOQ x payment milestones) [89695 SAR]; Progress weight (fair EPC distribution, SAR value) [135780 h] | 135,780 | EWR | EHF | EWR | Standard | CCTV | CON | - | - | ETECHS | MS5 |

| ID | WBS | Activity | Type | Duration | Start | Finish | Predecessors | Total float | Free float | Resources | Cost | Area | Station | Railway | Priority | EPC phase | Discipline | Responsibility | Design stage | Submittal or approval | Payment milestone |
| --- | --- | --- | --- | --- | --- | --- | --- | --- | --- | --- | --- | --- | --- | --- | --- | --- | --- | --- | --- | --- | --- |
|  | EAB | **Abqaiq (EWR)** |  |  | 2028-06-28 | 2029-01-03 |  |  |  |  |  |  |  |  |  |  |  |  |  |  |  |
| EAB-C2100 |  | MS5 Installation complete (20%) - Abqaiq | milestone | 0d | 2029-01-03 | 2029-01-03 | EAB-C2020, EAB-C2030, EAB-C2040, EAB-C2050, EAB-C1020 | 138d | 0d |  |  | EWR | EAB | EWR | Standard | MS | PM | ETECHS | - | - | MS5 |
|  | CIV | **Civil works** |  |  | 2028-06-28 | 2028-09-12 |  |  |  |  |  |  |  |  |  |  |  |  |  |  |  |
| EAB-C1010 |  | Civil: platform trenches and duct banks - Abqaiq |  | 39d | 2028-06-28 | 2028-08-21 | EAB-E1210 | 209d | 0d | Contract cost (BOQ x payment milestones) [64837 SAR]; Progress weight (fair EPC distribution, SAR value) [153760 h] | 153,760 | EWR | EAB | EWR | Standard | CON | CIVIL | ETECHS | - | - | MS5 |
| EAB-C1020 |  | Civil: camera and ALPR pole foundations and poles - Abqaiq |  | 30d | 2028-08-02 | 2028-09-12 | EAB-C1010 SS+25d | 209d | 71d | Contract cost (BOQ x payment milestones) [53048 SAR]; Progress weight (fair EPC distribution, SAR value) [115320 h] | 115,320 | EWR | EAB | EWR | Standard | CON | CIVIL | ETECHS | - | - | MS5 |
|  | INS | **Installation** |  |  | 2028-11-29 | 2029-01-03 |  |  |  |  |  |  |  |  |  |  |  |  |  |  |  |
| EAB-C2010 |  | Install UPS, network switches and field cabinets - Abqaiq |  | 8d | 2028-11-29 | 2028-12-10 | EAB-P1100 | 138d | 0d | Contract cost (BOQ x payment milestones) [56650 SAR]; Progress weight (fair EPC distribution, SAR value) [57660 h] | 57,660 | EWR | EAB | EWR | Standard | CON | UPSNET | ETECHS | - | - | MS5 |
| EAB-C2020 |  | Cabling and termination (power, fibre, data) - Abqaiq |  | 13d | 2028-12-04 | 2028-12-20 | EAB-C2010 SS+3d, EAB-C1010 SS+28d | 138d | 0d | Contract cost (BOQ x payment milestones) [84975 SAR]; Progress weight (fair EPC distribution, SAR value) [115320 h] | 115,320 | EWR | EAB | EWR | Standard | CON | CCTV | ETECHS | - | - | MS5 |
| EAB-C2040 |  | Install video management, video wall and control-room equipment - Abqaiq |  | 9d | 2028-12-11 | 2028-12-21 | EAB-C2010 | 147d | 9d | Contract cost (BOQ x payment milestones) [42488 SAR]; Progress weight (fair EPC distribution, SAR value) [57660 h] | 57,660 | EWR | EAB | EWR | Standard | CON | VMS | ETECHS | - | - | MS5 |
| EAB-C2050 |  | Install access control and intercom - Abqaiq |  | 8d | 2028-12-14 | 2028-12-25 | EAB-C2010 FS+3d | 145d | 7d | Contract cost (BOQ x payment milestones) [28325 SAR]; Progress weight (fair EPC distribution, SAR value) [38440 h] | 38,440 | EWR | EAB | EWR | Standard | CON | ACC | ETECHS | - | - | MS5 |
| EAB-C2030 |  | Install and aim CCTV cameras - Abqaiq |  | 10d | 2028-12-21 | 2029-01-03 | EAB-C2020, EAB-C1020 | 138d | 0d | Contract cost (BOQ x payment milestones) [70813 SAR]; Progress weight (fair EPC distribution, SAR value) [96100 h] | 96,100 | EWR | EAB | EWR | Standard | CON | CCTV | ETECHS | - | - | MS5 |
|  | HHR | **HHR - Haramain High Speed Rail** |  |  | 2027-07-15 | 2029-04-18 |  |  |  |  |  |  |  |  |  |  |  |  |  |  |  |
|  | HJD | **Jeddah (HHR)** |  |  | 2027-07-15 | 2028-06-15 |  |  |  |  |  |  |  |  |  |  |  |  |  |  |  |
| HJD-C2100 |  | MS5 Installation complete (20%) - Jeddah | milestone | 0d | 2028-06-15 | 2028-06-15 | HJD-C2020, HJD-C2030, HJD-C2040, HJD-C2050, HJD-C1020 | 267d | 0d |  |  | HHR | HJD | HHR | Standard | MS | PM | ETECHS | - | - | MS5 |
|  | CIV | **Civil works** |  |  | 2027-07-15 | 2027-10-14 |  |  |  |  |  |  |  |  |  |  |  |  |  |  |  |
| HJD-C1010 |  | Civil: platform trenches and duct banks - Jeddah |  | 46d | 2027-07-15 | 2027-09-16 | HJD-E1210 | 383d | 0d | Contract cost (BOQ x payment milestones) [98722 SAR]; Progress weight (fair EPC distribution, SAR value) [733460 h] | 733,460 | HHR | HJD | HHR | Standard | CON | CIVIL | ETECHS | - | - | MS5 |
| HJD-C1020 |  | Civil: camera and ALPR pole foundations and poles - Jeddah |  | 36d | 2027-08-25 | 2027-10-14 | HJD-C1010 SS+29d | 396d | 129d | Contract cost (BOQ x payment milestones) [80772 SAR]; Progress weight (fair EPC distribution, SAR value) [549940 h] | 549,940 | HHR | HJD | HHR | Standard | CON | CIVIL | ETECHS | - | - | MS5 |
|  | INS | **Installation** |  |  | 2028-01-30 | 2028-06-15 |  |  |  |  |  |  |  |  |  |  |  |  |  |  |  |
| HJD-C2010 |  | Install UPS, network switches and field cabinets - Jeddah |  | 27d | 2028-01-30 | 2028-03-13 | HJD-P1100 | 267d | 0d | Contract cost (BOQ x payment milestones) [346136 SAR]; Progress weight (fair EPC distribution, SAR value) [275280 h] | 275,280 | HHR | HJD | HHR | Standard | CON | UPSNET | ETECHS | - | - | MS5 |
| HJD-C2020 |  | Cabling and termination (power, fibre, data) - Jeddah |  | 45d | 2028-02-10 | 2028-04-19 | HJD-C2010 SS+9d, HJD-C1010 SS+33d | 267d | 0d | Contract cost (BOQ x payment milestones) [519205 SAR]; Progress weight (fair EPC distribution, SAR value) [549940 h] | 549,940 | HHR | HJD | HHR | Standard | CON | CCTV | ETECHS | - | - | MS5 |
| HJD-C2040 |  | Install video management, video wall and control-room equipment - Jeddah |  | 31d | 2028-03-14 | 2028-04-25 | HJD-C2010 | 299d | 32d | Contract cost (BOQ x payment milestones) [259602 SAR]; Progress weight (fair EPC distribution, SAR value) [275280 h] | 275,280 | HHR | HJD | HHR | Standard | CON | VMS | ETECHS | - | - | MS5 |
| HJD-C2050 |  | Install access control and intercom - Jeddah |  | 27d | 2028-03-27 | 2028-05-09 | HJD-C2010 FS+9d | 294d | 27d | Contract cost (BOQ x payment milestones) [173068 SAR]; Progress weight (fair EPC distribution, SAR value) [183520 h] | 183,520 | HHR | HJD | HHR | Standard | CON | ACC | ETECHS | - | - | MS5 |
| HJD-C2030 |  | Install and aim CCTV cameras - Jeddah |  | 36d | 2028-04-20 | 2028-06-15 | HJD-C2020, HJD-C1020 | 267d | 0d | Contract cost (BOQ x payment milestones) [432670 SAR]; Progress weight (fair EPC distribution, SAR value) [458180 h] | 458,180 | HHR | HJD | HHR | Standard | CON | CCTV | ETECHS | - | - | MS5 |
|  | HMK | **Makkah (HHR)** |  |  | 2028-02-06 | 2029-01-28 |  |  |  |  |  |  |  |  |  |  |  |  |  |  |  |
| HMK-C2100 |  | MS5 Installation complete (20%) - Makkah | milestone | 0d | 2029-01-28 | 2029-01-28 | HMK-C2020, HMK-C2030, HMK-C2040, HMK-C2050, HMK-C1020 | 106d | 0d |  |  | HHR | HMK | HHR | Standard | MS | PM | ETECHS | - | - | MS5 |

| ID | WBS | Activity | Type | Duration | Start | Finish | Predecessors | Total float | Free float | Resources | Cost | Area | Station | Railway | Priority | Discipline | EPC phase | Design stage | Submittal or approval | Responsibility | Payment milestone |
| --- | --- | --- | --- | --- | --- | --- | --- | --- | --- | --- | --- | --- | --- | --- | --- | --- | --- | --- | --- | --- | --- |
|  | CIV | **Civil works** |  |  | 2028-02-06 | 2028-05-28 |  |  |  |  |  |  |  |  |  |  |  |  |  |  |  |
| HMK-C1010 |  | Civil: platform trenches and duct banks - Makkah |  | 49d | 2028-02-06 | 2028-04-19 | HMK-E1210 | 222d | 0d | Contract cost (BOQ x payment milestones) [108168 SAR]; Progress weight (fair EPC distribution, SAR value) [746480 h] | 746,480 | HHR | HMK | HHR | Standard | CIVIL | CON | - | - | ETECHS | MS5 |
| HMK-C1020 |  | Civil: camera and ALPR pole foundations and poles - Makkah |  | 39d | 2028-03-28 | 2028-05-28 | HMK-C1010 SS+32d | 239d | 133d | Contract cost (BOQ x payment milestones) [88501 SAR]; Progress weight (fair EPC distribution, SAR value) [559240 h] | 559,240 | HHR | HMK | HHR | Standard | CIVIL | CON | - | - | ETECHS | MS5 |
|  | INS | **Installation** |  |  | 2028-09-03 | 2029-01-28 |  |  |  |  |  |  |  |  |  |  |  |  |  |  |  |
| HMK-C2010 |  | Install UPS, network switches and field cabinets - Makkah |  | 32d | 2028-09-03 | 2028-10-16 | HMK-P1100 | 106d | 0d | Contract cost (BOQ x payment milestones) [349070 SAR]; Progress weight (fair EPC distribution, SAR value) [279620 h] | 279,620 | HHR | HMK | HHR | Standard | UPSNET | CON | - | - | ETECHS | MS5 |
| HMK-C2020 |  | Cabling and termination (power, fibre, data) - Makkah |  | 53d | 2028-09-18 | 2028-11-29 | HMK-C2010 SS+11d, HMK-C1010 SS+35d | 106d | 0d | Contract cost (BOQ x payment milestones) [523605 SAR]; Progress weight (fair EPC distribution, SAR value) [559240 h] | 559,240 | HHR | HMK | HHR | Standard | CCTV | CON | - | - | ETECHS | MS5 |
| HMK-C2040 |  | Install video management, video wall and control-room equipment - Makkah |  | 37d | 2028-10-17 | 2028-12-06 | HMK-C2010 | 143d | 37d | Contract cost (BOQ x payment milestones) [261802 SAR]; Progress weight (fair EPC distribution, SAR value) [279620 h] | 279,620 | HHR | HMK | HHR | Standard | VMS | CON | - | - | ETECHS | MS5 |
| HMK-C2050 |  | Install access control and intercom - Makkah |  | 32d | 2028-11-01 | 2028-12-14 | HMK-C2010 FS+11d | 137d | 31d | Contract cost (BOQ x payment milestones) [174535 SAR]; Progress weight (fair EPC distribution, SAR value) [186620 h] | 186,620 | HHR | HMK | HHR | Standard | ACC | CON | - | - | ETECHS | MS5 |
| HMK-C2030 |  | Install and aim CCTV cameras - Makkah |  | 42d | 2028-11-30 | 2029-01-28 | HMK-C2020, HMK-C1020 | 106d | 0d | Contract cost (BOQ x payment milestones) [436337 SAR]; Progress weight (fair EPC distribution, SAR value) [466240 h] | 466,240 | HHR | HMK | HHR | Standard | CCTV | CON | - | - | ETECHS | MS5 |
|  | HKA | **KAEC (HHR)** |  |  | 2028-06-21 | 2029-04-12 |  |  |  |  |  |  |  |  |  |  |  |  |  |  |  |
| HKA-C2100 |  | MS5 Installation complete (20%) - KAEC | milestone | 0d | 2029-04-12 | 2029-04-12 | HKA-C2020, HKA-C2030, HKA-C2040, HKA-C2050, HKA-C1020 | 58d | 0d |  |  | HHR | HKA | HHR | Standard | PM | MS | - | - | ETECHS | MS5 |
|  | CIV | **Civil works** |  |  | 2028-06-21 | 2028-08-22 |  |  |  |  |  |  |  |  |  |  |  |  |  |  |  |
| HKA-C1010 |  | Civil: platform trenches and duct banks - KAEC |  | 31d | 2028-06-21 | 2028-08-02 | HKA-E1210 | 182d | 0d | Contract cost (BOQ x payment milestones) [35395 SAR]; Progress weight (fair EPC distribution, SAR value) [427180 h] | 427,180 | HHR | HKA | HHR | Standard | CIVIL | CON | - | - | ETECHS | MS5 |
| HKA-C1020 |  | Civil: camera and ALPR pole foundations and poles - KAEC |  | 25d | 2028-07-19 | 2028-08-22 | HKA-C1010 SS+20d | 193d | 135d | Contract cost (BOQ x payment milestones) [28960 SAR]; Progress weight (fair EPC distribution, SAR value) [320540 h] | 320,540 | HHR | HKA | HHR | Standard | CIVIL | CON | - | - | ETECHS | MS5 |
|  | INS | **Installation** |  |  | 2029-01-03 | 2029-04-12 |  |  |  |  |  |  |  |  |  |  |  |  |  |  |  |
| HKA-C2010 |  | Install UPS, network switches and field cabinets - KAEC |  | 20d | 2029-01-03 | 2029-01-30 | HKA-P1100 | 58d | 0d | Contract cost (BOQ x payment milestones) [209704 SAR]; Progress weight (fair EPC distribution, SAR value) [159960 h] | 159,960 | HHR | HKA | HHR | Standard | UPSNET | CON | - | - | ETECHS | MS5 |
| HKA-C2020 |  | Cabling and termination (power, fibre, data) - KAEC |  | 33d | 2029-01-14 | 2029-03-07 | HKA-C2010 SS+7d, HKA-C1010 SS+23d | 58d | 0d | Contract cost (BOQ x payment milestones) [314556 SAR]; Progress weight (fair EPC distribution, SAR value) [320540 h] | 320,540 | HHR | HKA | HHR | Standard | CCTV | CON | - | - | ETECHS | MS5 |
| HKA-C2040 |  | Install video management, video wall and control-room equipment - KAEC |  | 23d | 2029-01-31 | 2029-03-12 | HKA-C2010 | 81d | 23d | Contract cost (BOQ x payment milestones) [157278 SAR]; Progress weight (fair EPC distribution, SAR value) [159960 h] | 159,960 | HHR | HKA | HHR | Standard | VMS | CON | - | - | ETECHS | MS5 |
| HKA-C2050 |  | Install access control and intercom - KAEC |  | 20d | 2029-02-18 | 2029-03-18 | HKA-C2010 FS+7d | 77d | 19d | Contract cost (BOQ x payment milestones) [104852 SAR]; Progress weight (fair EPC distribution, SAR value) [106640 h] | 106,640 | HHR | HKA | HHR | Standard | ACC | CON | - | - | ETECHS | MS5 |
| HKA-C2030 |  | Install and aim CCTV cameras - KAEC |  | 26d | 2029-03-08 | 2029-04-12 | HKA-C2020, HKA-C1020 | 58d | 0d | Contract cost (BOQ x payment milestones) [262130 SAR]; Progress weight (fair EPC distribution, SAR value) [267220 h] | 267,220 | HHR | HKA | HHR | Standard | CCTV | CON | - | - | ETECHS | MS5 |
|  | HMD | **Madinah (HHR)** |  |  | 2028-06-21 | 2029-04-18 |  |  |  |  |  |  |  |  |  |  |  |  |  |  |  |
| HMD-C2100 |  | MS5 Installation complete (20%) - Madinah | milestone | 0d | 2029-04-18 | 2029-04-18 | HMD-C2020, HMD-C2030, HMD-C2040, HMD-C2050, HMD-C1020 | 54d | 0d |  |  | HHR | HMD | HHR | Standard | PM | MS | - | - | ETECHS | MS5 |
|  | CIV | **Civil works** |  |  | 2028-06-21 | 2028-08-30 |  |  |  |  |  |  |  |  |  |  |  |  |  |  |  |
| HMD-C1010 |  | Civil: platform trenches and duct banks - Madinah |  | 35d | 2028-06-21 | 2028-08-08 | HMD-E1210 | 176d | 0d | Contract cost (BOQ x payment milestones) [55071 SAR]; Progress weight (fair EPC distribution, SAR value) [427180 h] | 427,180 | HHR | HMD | HHR | Standard | CIVIL | CON | - | - | ETECHS | MS5 |
| HMD-C1020 |  | Civil: camera and ALPR pole foundations and poles - Madinah |  | 28d | 2028-07-24 | 2028-08-30 | HMD-C1010 SS+23d | 185d | 131d | Contract cost (BOQ x payment milestones) [45058 SAR]; Progress weight (fair EPC distribution, SAR value) [320540 h] | 320,540 | HHR | HMD | HHR | Standard | CIVIL | CON | - | - | ETECHS | MS5 |

| ID | WBS | Activity | Type | Duration | Start | Finish | Predecessors | Total float | Free float | Resources | Cost | Area | Station | Railway | Priority | Discipline | EPC phase | Design stage | Submittal or approval | Responsibility | Payment milestone |
| --- | --- | --- | --- | --- | --- | --- | --- | --- | --- | --- | --- | --- | --- | --- | --- | --- | --- | --- | --- | --- | --- |
|  | INS | **Installation** |  |  | 2029-01-03 | 2029-04-18 |  |  |  |  |  |  |  |  |  |  |  |  |  |  |  |
| HMD-C2010 |  | Install UPS, network switches and field cabinets - Madinah |  | 21d | 2029-01-03 | 2029-01-31 | HMD-P1100 | 54d | 0d | Contract cost (BOQ x payment milestones) [202459 SAR]; Progress weight (fair EPC distribution, SAR value) [159960 h] | 159,960 | HHR | HMD | HHR | Standard | UPSNET | CON | - | - | ETECHS | MS5 |
| HMD-C2020 |  | Cabling and termination (power, fibre, data) - Madinah |  | 35d | 2029-01-14 | 2029-03-11 | HMD-C2010 SS+7d, HMD-C1010 SS+25d | 54d | 0d | Contract cost (BOQ x payment milestones) [303689 SAR]; Progress weight (fair EPC distribution, SAR value) [320540 h] | 320,540 | HHR | HMD | HHR | Standard | CCTV | CON | - | - | ETECHS | MS5 |
| HMD-C2040 |  | Install video management, video wall and control-room equipment - Madinah |  | 25d | 2029-02-01 | 2029-03-15 | HMD-C2010 | 78d | 24d | Contract cost (BOQ x payment milestones) [151845 SAR]; Progress weight (fair EPC distribution, SAR value) [159960 h] | 159,960 | HHR | HMD | HHR | Standard | VMS | CON | - | - | ETECHS | MS5 |
| HMD-C2050 |  | Install access control and intercom - Madinah |  | 21d | 2029-02-19 | 2029-03-20 | HMD-C2010 FS+7d | 75d | 21d | Contract cost (BOQ x payment milestones) [101230 SAR]; Progress weight (fair EPC distribution, SAR value) [106640 h] | 106,640 | HHR | HMD | HHR | Standard | ACC | CON | - | - | ETECHS | MS5 |
| HMD-C2030 |  | Install and aim CCTV cameras - Madinah |  | 28d | 2029-03-12 | 2029-04-18 | HMD-C2020, HMD-C1020 | 54d | 0d | Contract cost (BOQ x payment milestones) [253074 SAR]; Progress weight (fair EPC distribution, SAR value) [267220 h] | 267,220 | HHR | HMD | HHR | Standard | CCTV | CON | - | - | ETECHS | MS5 |
|  | COM | **Commissioning and Handover** |  |  | 2027-09-21 | 2029-09-16 |  |  |  |  |  |  |  |  |  |  |  |  |  |  |  |
|  | RYD | **Riyadh priority stations (NSR + EWR)** |  |  | 2027-09-21 | 2027-12-13 |  |  |  |  |  |  |  |  |  |  |  |  |  |  |  |
|  | NRY | **Riyadh (Thumamah) (NSR)** |  |  | 2027-09-21 | 2027-12-07 |  |  |  |  |  |  |  |  |  |  |  |  |  |  |  |
| NRY-T1100 |  | MS6 SAT complete (10%) - Riyadh (Thumamah) | milestone | 0d | 2027-10-12 | 2027-10-12 | NRY-T1020 | 494d | 30d |  |  | RYD | NRY | NSR | Riyadh priority | TC | MS | - | - | SAR | MS6 |
| NRY-T3100 |  | MS7 Station accepted - final acceptance and handover (10%) - Riyadh (Thumamah) | milestone | 0d | 2027-12-07 | 2027-12-07 | NRY-T3010 | 464d | 442d |  |  | RYD | NRY | NSR | Riyadh priority | TC | MS | - | - | SAR | MS7 |
|  | TST | **Testing and commissioning** |  |  | 2027-09-21 | 2027-10-12 |  |  |  |  |  |  |  |  |  |  |  |  |  |  |  |
| NRY-T1010 |  | Pre-commissioning and loop checks - Riyadh (Thumamah) |  | 6d | 2027-09-21 | 2027-09-29 | NRY-C2100 | 464d | 0d | Contract cost (BOQ x payment milestones) [139231 SAR]; Progress weight (fair EPC distribution, SAR value) [100440 h] | 100,440 | RYD | NRY | NSR | Riyadh priority | TC | COM | - | - | ETECHS | MS6 |
| NRY-T1020 |  | Site acceptance test (SAT) and commissioning - Riyadh (Thumamah) |  | 9d | 2027-09-30 | 2027-10-12 | NRY-T1010 | 464d | 0d | Contract cost (BOQ x payment milestones) [208847 SAR]; Progress weight (fair EPC distribution, SAR value) [133920 h] | 133,920 | RYD | NRY | NSR | Riyadh priority | TC | COM | - | - | ETECHS | MS6 |
|  | TRN | **Training** |  |  | 2027-10-13 | 2027-10-26 |  |  |  |  |  |  |  |  |  |  |  |  |  |  |  |
| NRY-T2010 |  | Operator and maintenance training - Riyadh (Thumamah) |  | 10d | 2027-10-13 | 2027-10-26 | NRY-T1020 | 484d | 20d | Contract cost (BOQ x payment milestones) [52212 SAR]; Progress weight (fair EPC distribution, SAR value) [66960 h] | 66,960 | RYD | NRY | NSR | Riyadh priority | TC | COM | - | - | ETECHS | MS7 |
|  | TOA | **Trial operation and acceptance** |  |  | 2027-10-13 | 2027-12-07 |  |  |  |  |  |  |  |  |  |  |  |  |  |  |  |
| NRY-T2020 |  | Trial operation (maximum 45 days) - Riyadh (Thumamah) |  | 30d | 2027-10-13 | 2027-11-23 | NRY-T1020 | 464d | 0d | Contract cost (BOQ x payment milestones) [121828 SAR]; Progress weight (fair EPC distribution, SAR value) [100440 h] | 100,440 | RYD | NRY | NSR | Riyadh priority | TC | COM | - | - | SAR | MS7 |
| NRY-T3010 |  | Taking-over application, SAR review and handover - Riyadh (Thumamah) |  | 10d | 2027-11-24 | 2027-12-07 | NRY-T1100, NRY-T2010, NRY-T2020, NRY-E1140 | 464d | 0d | Contract cost (BOQ x payment milestones) [104424 SAR]; Progress weight (fair EPC distribution, SAR value) [100440 h] | 100,440 | RYD | NRY | NSR | Riyadh priority | TC | COM | - | - | SAR | MS7 |
|  | ERY | **Riyadh (Malaz) (EWR)** |  |  | 2027-09-28 | 2027-12-13 |  |  |  |  |  |  |  |  |  |  |  |  |  |  |  |
| ERY-T1100 |  | MS6 SAT complete (10%) - Riyadh (Malaz) | milestone | 0d | 2027-10-18 | 2027-10-18 | ERY-T1020 | 490d | 30d |  |  | RYD | ERY | EWR | Riyadh priority | TC | MS | - | - | SAR | MS6 |
| ERY-T3100 |  | MS7 Station accepted - final acceptance and handover (10%) - Riyadh (Malaz) | milestone | 0d | 2027-12-13 | 2027-12-13 | ERY-T3010 | 460d | 438d |  |  | RYD | ERY | EWR | Riyadh priority | TC | MS | - | - | SAR | MS7 |
|  | TST | **Testing and commissioning** |  |  | 2027-09-28 | 2027-10-18 |  |  |  |  |  |  |  |  |  |  |  |  |  |  |  |
| ERY-T1010 |  | Pre-commissioning and loop checks - Riyadh (Malaz) |  | 6d | 2027-09-28 | 2027-10-05 | ERY-C2100 | 460d | 0d | Contract cost (BOQ x payment milestones) [123661 SAR]; Progress weight (fair EPC distribution, SAR value) [89280 h] | 89,280 | RYD | ERY | EWR | Riyadh priority | TC | COM | - | - | ETECHS | MS6 |
| ERY-T1020 |  | Site acceptance test (SAT) and commissioning - Riyadh (Malaz) |  | 9d | 2027-10-06 | 2027-10-18 | ERY-T1010 | 460d | 0d | Contract cost (BOQ x payment milestones) [185491 SAR]; Progress weight (fair EPC distribution, SAR value) [118420 h] | 118,420 | RYD | ERY | EWR | Riyadh priority | TC | COM | - | - | ETECHS | MS6 |

| ID | WBS | Activity | Type | Duration | Start | Finish | Predecessors | Total float | Free float | Resources | Cost | Area | Station | Railway | Priority | Discipline | Responsibility | EPC phase | Design stage | Submittal or approval | Payment milestone |
| --- | --- | --- | --- | --- | --- | --- | --- | --- | --- | --- | --- | --- | --- | --- | --- | --- | --- | --- | --- | --- | --- |
|  | TRN | **Training** |  |  | 2027-10-19 | 2027-11-01 |  |  |  |  |  |  |  |  |  |  |  |  |  |  |  |
| ERY-T2010 |  | Operator and maintenance training - Riyadh (Malaz) |  | 10d | 2027-10-19 | 2027-11-01 | ERY-T1020 | 480d | 20d | Contract cost (BOQ x payment milestones) [46373 SAR]; Progress weight (fair EPC distribution, SAR value) [59520 h] | 59,520 | RYD | ERY | EWR | Riyadh priority | TC | ETECHS | COM | - | - | MS7 |
|  | TOA | **Trial operation and acceptance** |  |  | 2027-10-19 | 2027-12-13 |  |  |  |  |  |  |  |  |  |  |  |  |  |  |  |
| ERY-T2020 |  | Trial operation (maximum 45 days) - Riyadh (Malaz) |  | 30d | 2027-10-19 | 2027-11-29 | ERY-T1020 | 460d | 0d | Contract cost (BOQ x payment milestones) [108203 SAR]; Progress weight (fair EPC distribution, SAR value) [89280 h] | 89,280 | RYD | ERY | EWR | Riyadh priority | TC | SAR | COM | - | - | MS7 |
| ERY-T3010 |  | Taking-over application, SAR review and handover - Riyadh (Malaz) |  | 10d | 2027-11-30 | 2027-12-13 | ERY-T1100, ERY-T2010, ERY-T2020, ERY-E1140 | 460d | 0d | Contract cost (BOQ x payment milestones) [92746 SAR]; Progress weight (fair EPC distribution, SAR value) [89280 h] | 89,280 | RYD | ERY | EWR | Riyadh priority | TC | SAR | COM | - | - | MS7 |
|  | NSR | **NSR - North South Railway** |  |  | 2028-06-12 | 2029-09-16 |  |  |  |  |  |  |  |  |  |  |  |  |  |  |  |
|  | NQS | **Al Qassim (NSR)** |  |  | 2028-06-12 | 2028-08-27 |  |  |  |  |  |  |  |  |  |  |  |  |  |  |  |
| NQS-T1100 |  | MS6 SAT complete (10%) - Al Qassim | milestone | 0d | 2028-07-02 | 2028-07-02 | NQS-T1020 | 316d | 30d |  |  | NSR | NQS | NSR | Standard | TC | SAR | MS | - | - | MS6 |
| NQS-T3100 |  | MS7 Station accepted - final acceptance and handover (10%) - Al Qassim | milestone | 0d | 2028-08-27 | 2028-08-27 | NQS-T3010 | 286d | 264d |  |  | NSR | NQS | NSR | Standard | TC | SAR | MS | - | - | MS7 |
|  | TST | **Testing and commissioning** |  |  | 2028-06-12 | 2028-07-02 |  |  |  |  |  |  |  |  |  |  |  |  |  |  |  |
| NQS-T1010 |  | Pre-commissioning and loop checks - Al Qassim |  | 6d | 2028-06-12 | 2028-06-19 | NQS-C2100 | 286d | 0d | Contract cost (BOQ x payment milestones) [135957 SAR]; Progress weight (fair EPC distribution, SAR value) [97960 h] | 97,960 | NSR | NQS | NSR | Standard | TC | ETECHS | COM | - | - | MS6 |
| NQS-T1020 |  | Site acceptance test (SAT) and commissioning - Al Qassim |  | 9d | 2028-06-20 | 2028-07-02 | NQS-T1010 | 286d | 0d | Contract cost (BOQ x payment milestones) [203935 SAR]; Progress weight (fair EPC distribution, SAR value) [130820 h] | 130,820 | NSR | NQS | NSR | Standard | TC | ETECHS | COM | - | - | MS6 |
|  | TRN | **Training** |  |  | 2028-07-03 | 2028-07-16 |  |  |  |  |  |  |  |  |  |  |  |  |  |  |  |
| NQS-T2010 |  | Operator and maintenance training - Al Qassim |  | 10d | 2028-07-03 | 2028-07-16 | NQS-T1020 | 306d | 20d | Contract cost (BOQ x payment milestones) [50984 SAR]; Progress weight (fair EPC distribution, SAR value) [65100 h] | 65,100 | NSR | NQS | NSR | Standard | TC | ETECHS | COM | - | - | MS7 |
|  | TOA | **Trial operation and acceptance** |  |  | 2028-07-03 | 2028-08-27 |  |  |  |  |  |  |  |  |  |  |  |  |  |  |  |
| NQS-T2020 |  | Trial operation (maximum 45 days) - Al Qassim |  | 30d | 2028-07-03 | 2028-08-13 | NQS-T1020 | 286d | 0d | Contract cost (BOQ x payment milestones) [118962 SAR]; Progress weight (fair EPC distribution, SAR value) [97960 h] | 97,960 | NSR | NQS | NSR | Standard | TC | SAR | COM | - | - | MS7 |
| NQS-T3010 |  | Taking-over application, SAR review and handover - Al Qassim |  | 10d | 2028-08-14 | 2028-08-27 | NQS-T1100, NQS-T2010, NQS-T2020, NQS-E1140 | 286d | 0d | Contract cost (BOQ x payment milestones) [101967 SAR]; Progress weight (fair EPC distribution, SAR value) [97960 h] | 97,960 | NSR | NQS | NSR | Standard | TC | SAR | COM | - | - | MS7 |
|  | NMJ | **Al Majma'ah (NSR)** |  |  | 2028-07-31 | 2028-10-15 |  |  |  |  |  |  |  |  |  |  |  |  |  |  |  |
| NMJ-T1100 |  | MS6 SAT complete (10%) - Al Majma'ah | milestone | 0d | 2028-08-20 | 2028-08-20 | NMJ-T1020 | 281d | 30d |  |  | NSR | NMJ | NSR | Standard | TC | SAR | MS | - | - | MS6 |
| NMJ-T3100 |  | MS7 Station accepted - final acceptance and handover (10%) - Al Majma'ah | milestone | 0d | 2028-10-15 | 2028-10-15 | NMJ-T3010 | 251d | 229d |  |  | NSR | NMJ | NSR | Standard | TC | SAR | MS | - | - | MS7 |
|  | TST | **Testing and commissioning** |  |  | 2028-07-31 | 2028-08-20 |  |  |  |  |  |  |  |  |  |  |  |  |  |  |  |
| NMJ-T1010 |  | Pre-commissioning and loop checks - Al Majma'ah |  | 6d | 2028-07-31 | 2028-08-07 | NMJ-C2100 | 251d | 0d | Contract cost (BOQ x payment milestones) [135957 SAR]; Progress weight (fair EPC distribution, SAR value) [97960 h] | 97,960 | NSR | NMJ | NSR | Standard | TC | ETECHS | COM | - | - | MS6 |
| NMJ-T1020 |  | Site acceptance test (SAT) and commissioning - Al Majma'ah |  | 9d | 2028-08-08 | 2028-08-20 | NMJ-T1010 | 251d | 0d | Contract cost (BOQ x payment milestones) [203935 SAR]; Progress weight (fair EPC distribution, SAR value) [130820 h] | 130,820 | NSR | NMJ | NSR | Standard | TC | ETECHS | COM | - | - | MS6 |
|  | TRN | **Training** |  |  | 2028-08-21 | 2028-09-03 |  |  |  |  |  |  |  |  |  |  |  |  |  |  |  |
| NMJ-T2010 |  | Operator and maintenance training - Al Majma'ah |  | 10d | 2028-08-21 | 2028-09-03 | NMJ-T1020 | 271d | 20d | Contract cost (BOQ x payment milestones) [50984 SAR]; Progress weight (fair EPC distribution, SAR value) [65100 h] | 65,100 | NSR | NMJ | NSR | Standard | TC | ETECHS | COM | - | - | MS7 |

| ID | WBS | Activity | Type | Duration | Start | Finish | Predecessors | Total float | Free float | Resources | Cost | Area | Station | Railway | Priority | Discipline | Responsibility | EPC phase | Design stage | Submittal or approval | Payment milestone |
| --- | --- | --- | --- | --- | --- | --- | --- | --- | --- | --- | --- | --- | --- | --- | --- | --- | --- | --- | --- | --- | --- |
|  | TOA | **Trial operation and acceptance** |  |  | 2028-08-21 | 2028-10-15 |  |  |  |  |  |  |  |  |  |  |  |  |  |  |  |
| NMJ-T2020 |  | Trial operation (maximum 45 days) - Al Majma'ah |  | 30d | 2028-08-21 | 2028-10-01 | NMJ-T1020 | 251d | 0d | Contract cost (BOQ x payment milestones) [118962 SAR]; Progress weight (fair EPC distribution, SAR value) [97960 h] | 97,960 | NSR | NMJ | NSR | Standard | TC | SAR | COM | - | - | MS7 |
| NMJ-T3010 |  | Taking-over application, SAR review and handover - Al Majma'ah |  | 10d | 2028-10-02 | 2028-10-15 | NMJ-T1100, NMJ-T2010, NMJ-T2020, NMJ-E1140 | 251d | 0d | Contract cost (BOQ x payment milestones) [101967 SAR]; Progress weight (fair EPC distribution, SAR value) [97960 h] | 97,960 | NSR | NMJ | NSR | Standard | TC | SAR | COM | - | - | MS7 |
|  | NHL | **Hail (NSR)** |  |  | 2029-02-20 | 2029-05-15 |  |  |  |  |  |  |  |  |  |  |  |  |  |  |  |
| NHL-T1100 |  | MS6 SAT complete (10%) - Hail | milestone | 0d | 2029-03-13 | 2029-03-13 | NHL-T1020 | 140d | 30d |  |  | NSR | NHL | NSR | Standard | TC | SAR | MS | - | - | MS6 |
| NHL-T3100 |  | MS7 Station accepted - final acceptance and handover (10%) - Hail | milestone | 0d | 2029-05-15 | 2029-05-15 | NHL-T3010 | 110d | 88d |  |  | NSR | NHL | NSR | Standard | TC | SAR | MS | - | - | MS7 |
|  | TST | **Testing and commissioning** |  |  | 2029-02-20 | 2029-03-13 |  |  |  |  |  |  |  |  |  |  |  |  |  |  |  |
| NHL-T1010 |  | Pre-commissioning and loop checks - Hail |  | 6d | 2029-02-20 | 2029-02-28 | NHL-C2100 | 110d | 0d | Contract cost (BOQ x payment milestones) [135957 SAR]; Progress weight (fair EPC distribution, SAR value) [97960 h] | 97,960 | NSR | NHL | NSR | Standard | TC | ETECHS | COM | - | - | MS6 |
| NHL-T1020 |  | Site acceptance test (SAT) and commissioning - Hail |  | 9d | 2029-03-01 | 2029-03-13 | NHL-T1010 | 110d | 0d | Contract cost (BOQ x payment milestones) [203935 SAR]; Progress weight (fair EPC distribution, SAR value) [130820 h] | 130,820 | NSR | NHL | NSR | Standard | TC | ETECHS | COM | - | - | MS6 |
|  | TRN | **Training** |  |  | 2029-03-14 | 2029-03-27 |  |  |  |  |  |  |  |  |  |  |  |  |  |  |  |
| NHL-T2010 |  | Operator and maintenance training - Hail |  | 10d | 2029-03-14 | 2029-03-27 | NHL-T1020 | 130d | 20d | Contract cost (BOQ x payment milestones) [50984 SAR]; Progress weight (fair EPC distribution, SAR value) [65100 h] | 65,100 | NSR | NHL | NSR | Standard | TC | ETECHS | COM | - | - | MS7 |
|  | TOA | **Trial operation and acceptance** |  |  | 2029-03-14 | 2029-05-15 |  |  |  |  |  |  |  |  |  |  |  |  |  |  |  |
| NHL-T2020 |  | Trial operation (maximum 45 days) - Hail |  | 30d | 2029-03-14 | 2029-05-01 | NHL-T1020 | 110d | 0d | Contract cost (BOQ x payment milestones) [118962 SAR]; Progress weight (fair EPC distribution, SAR value) [97960 h] | 97,960 | NSR | NHL | NSR | Standard | TC | SAR | COM | - | - | MS7 |
| NHL-T3010 |  | Taking-over application, SAR review and handover - Hail |  | 10d | 2029-05-02 | 2029-05-15 | NHL-T1100, NHL-T2010, NHL-T2020, NHL-E1140 | 110d | 0d | Contract cost (BOQ x payment milestones) [101967 SAR]; Progress weight (fair EPC distribution, SAR value) [97960 h] | 97,960 | NSR | NHL | NSR | Standard | TC | SAR | COM | - | - | MS7 |
|  | NJF | **Al Jouf (NSR)** |  |  | 2029-05-14 | 2029-07-29 |  |  |  |  |  |  |  |  |  |  |  |  |  |  |  |
| NJF-T1100 |  | MS6 SAT complete (10%) - Al Jouf | milestone | 0d | 2029-06-03 | 2029-06-03 | NJF-T1020 | 87d | 30d |  |  | NSR | NJF | NSR | Standard | TC | SAR | MS | - | - | MS6 |
| NJF-T3100 |  | MS7 Station accepted - final acceptance and handover (10%) - Al Jouf | milestone | 0d | 2029-07-29 | 2029-07-29 | NJF-T3010 | 57d | 35d |  |  | NSR | NJF | NSR | Standard | TC | SAR | MS | - | - | MS7 |
|  | TST | **Testing and commissioning** |  |  | 2029-05-14 | 2029-06-03 |  |  |  |  |  |  |  |  |  |  |  |  |  |  |  |
| NJF-T1010 |  | Pre-commissioning and loop checks - Al Jouf |  | 6d | 2029-05-14 | 2029-05-21 | NJF-C2100 | 57d | 0d | Contract cost (BOQ x payment milestones) [136914 SAR]; Progress weight (fair EPC distribution, SAR value) [98580 h] | 98,580 | NSR | NJF | NSR | Standard | TC | ETECHS | COM | - | - | MS6 |
| NJF-T1020 |  | Site acceptance test (SAT) and commissioning - Al Jouf |  | 9d | 2029-05-22 | 2029-06-03 | NJF-T1010 | 57d | 0d | Contract cost (BOQ x payment milestones) [205371 SAR]; Progress weight (fair EPC distribution, SAR value) [131440 h] | 131,440 | NSR | NJF | NSR | Standard | TC | ETECHS | COM | - | - | MS6 |
|  | TRN | **Training** |  |  | 2029-06-04 | 2029-06-17 |  |  |  |  |  |  |  |  |  |  |  |  |  |  |  |
| NJF-T2010 |  | Operator and maintenance training - Al Jouf |  | 10d | 2029-06-04 | 2029-06-17 | NJF-T1020 | 77d | 20d | Contract cost (BOQ x payment milestones) [51343 SAR]; Progress weight (fair EPC distribution, SAR value) [65720 h] | 65,720 | NSR | NJF | NSR | Standard | TC | ETECHS | COM | - | - | MS7 |
|  | TOA | **Trial operation and acceptance** |  |  | 2029-06-04 | 2029-07-29 |  |  |  |  |  |  |  |  |  |  |  |  |  |  |  |
| NJF-T2020 |  | Trial operation (maximum 45 days) - Al Jouf |  | 30d | 2029-06-04 | 2029-07-15 | NJF-T1020 | 57d | 0d | Contract cost (BOQ x payment milestones) [119800 SAR]; Progress weight (fair EPC distribution, SAR value) [98580 h] | 98,580 | NSR | NJF | NSR | Standard | TC | SAR | COM | - | - | MS7 |
| NJF-T3010 |  | Taking-over application, SAR review and handover - Al Jouf |  | 10d | 2029-07-16 | 2029-07-29 | NJF-T1100, NJF-T2010, NJF-T2020, NJF-E1140 | 57d | 0d | Contract cost (BOQ x payment milestones) [102685 SAR]; Progress weight (fair EPC distribution, SAR value) [98580 h] | 98,580 | NSR | NJF | NSR | Standard | TC | SAR | COM | - | - | MS7 |

| ID | WBS | Activity | Type | Duration | Start | Finish | Predecessors | Total float | Free float | Resources | Cost | Area | Station | Railway | Priority | EPC phase | Discipline | Responsibility | Design stage | Submittal or approval | Payment milestone |
| --- | --- | --- | --- | --- | --- | --- | --- | --- | --- | --- | --- | --- | --- | --- | --- | --- | --- | --- | --- | --- | --- |
|  | NQR | **Al Qurayyat (NSR)** |  |  | 2029-07-02 | 2029-09-16 |  |  |  |  |  |  |  |  |  |  |  |  |  |  |  |
| NQR-T1100 |  | MS6 SAT complete (10%) - Al Qurayyat | milestone | 0d | 2029-07-22 | 2029-07-22 | NQR-T1020 | 52d | 30d |  |  | NSR | NQR | NSR | Standard | MS | TC | SAR | - | - | MS6 |
| NQR-T3100 |  | MS7 Station accepted - final acceptance and handover (10%) - Al Qurayyat | milestone | 0d | 2029-09-16 | 2029-09-16 | NQR-T3010 | 22d | 0d |  |  | NSR | NQR | NSR | Standard | MS | TC | SAR | - | - | MS7 |
|  | TST | **Testing and commissioning** |  |  | 2029-07-02 | 2029-07-22 |  |  |  |  |  |  |  |  |  |  |  |  |  |  |  |
| NQR-T1010 |  | Pre-commissioning and loop checks - Al Qurayyat |  | 6d | 2029-07-02 | 2029-07-09 | NQR-C2100 | 22d | 0d | Contract cost (BOQ x payment milestones) [135957 SAR]; Progress weight (fair EPC distribution, SAR value) [97960 h] | 97,960 | NSR | NQR | NSR | Standard | COM | TC | ETECHS | - | - | MS6 |
| NQR-T1020 |  | Site acceptance test (SAT) and commissioning - Al Qurayyat |  | 9d | 2029-07-10 | 2029-07-22 | NQR-T1010 | 22d | 0d | Contract cost (BOQ x payment milestones) [203935 SAR]; Progress weight (fair EPC distribution, SAR value) [130820 h] | 130,820 | NSR | NQR | NSR | Standard | COM | TC | ETECHS | - | - | MS6 |
|  | TRN | **Training** |  |  | 2029-07-23 | 2029-08-05 |  |  |  |  |  |  |  |  |  |  |  |  |  |  |  |
| NQR-T2010 |  | Operator and maintenance training - Al Qurayyat |  | 10d | 2029-07-23 | 2029-08-05 | NQR-T1020 | 42d | 20d | Contract cost (BOQ x payment milestones) [50984 SAR]; Progress weight (fair EPC distribution, SAR value) [65100 h] | 65,100 | NSR | NQR | NSR | Standard | COM | TC | ETECHS | - | - | MS7 |
|  | TOA | **Trial operation and acceptance** |  |  | 2029-07-23 | 2029-09-16 |  |  |  |  |  |  |  |  |  |  |  |  |  |  |  |
| NQR-T2020 |  | Trial operation (maximum 45 days) - Al Qurayyat |  | 30d | 2029-07-23 | 2029-09-02 | NQR-T1020 | 22d | 0d | Contract cost (BOQ x payment milestones) [118962 SAR]; Progress weight (fair EPC distribution, SAR value) [97960 h] | 97,960 | NSR | NQR | NSR | Standard | COM | TC | SAR | - | - | MS7 |
| NQR-T3010 |  | Taking-over application, SAR review and handover - Al Qurayyat |  | 10d | 2029-09-03 | 2029-09-16 | NQR-T1100, NQR-T2010, NQR-T2020, NQR-E1140 | 22d | 0d | Contract cost (BOQ x payment milestones) [101967 SAR]; Progress weight (fair EPC distribution, SAR value) [97960 h] | 97,960 | NSR | NQR | NSR | Standard | COM | TC | SAR | - | - | MS7 |
|  | EWR | **EWR - East West Railway** |  |  | 2028-04-02 | 2029-03-29 |  |  |  |  |  |  |  |  |  |  |  |  |  |  |  |
|  | EDM | **Dammam (EWR)** |  |  | 2028-04-02 | 2028-06-22 |  |  |  |  |  |  |  |  |  |  |  |  |  |  |  |
| EDM-T1100 |  | MS6 SAT complete (10%) - Dammam | milestone | 0d | 2028-04-20 | 2028-04-20 | EDM-T1020 | 362d | 30d |  |  | EWR | EDM | EWR | Standard | MS | TC | SAR | - | - | MS6 |
| EDM-T3100 |  | MS7 Station accepted - final acceptance and handover (10%) - Dammam | milestone | 0d | 2028-06-22 | 2028-06-22 | EDM-T3010 | 332d | 310d |  |  | EWR | EDM | EWR | Standard | MS | TC | SAR | - | - | MS7 |
|  | TST | **Testing and commissioning** |  |  | 2028-04-02 | 2028-04-20 |  |  |  |  |  |  |  |  |  |  |  |  |  |  |  |
| EDM-T1010 |  | Pre-commissioning and loop checks - Dammam |  | 6d | 2028-04-02 | 2028-04-09 | EDM-C2100 | 332d | 0d | Contract cost (BOQ x payment milestones) [127500 SAR]; Progress weight (fair EPC distribution, SAR value) [91760 h] | 91,760 | EWR | EDM | EWR | Standard | COM | TC | ETECHS | - | - | MS6 |
| EDM-T1020 |  | Site acceptance test (SAT) and commissioning - Dammam |  | 9d | 2028-04-10 | 2028-04-20 | EDM-T1010 | 332d | 0d | Contract cost (BOQ x payment milestones) [191251 SAR]; Progress weight (fair EPC distribution, SAR value) [122140 h] | 122,140 | EWR | EDM | EWR | Standard | COM | TC | ETECHS | - | - | MS6 |
|  | TRN | **Training** |  |  | 2028-04-23 | 2028-05-11 |  |  |  |  |  |  |  |  |  |  |  |  |  |  |  |
| EDM-T2010 |  | Operator and maintenance training - Dammam |  | 10d | 2028-04-23 | 2028-05-11 | EDM-T1020 | 352d | 20d | Contract cost (BOQ x payment milestones) [47813 SAR]; Progress weight (fair EPC distribution, SAR value) [61380 h] | 61,380 | EWR | EDM | EWR | Standard | COM | TC | ETECHS | - | - | MS7 |
|  | TOA | **Trial operation and acceptance** |  |  | 2028-04-23 | 2028-06-22 |  |  |  |  |  |  |  |  |  |  |  |  |  |  |  |
| EDM-T2020 |  | Trial operation (maximum 45 days) - Dammam |  | 30d | 2028-04-23 | 2028-06-08 | EDM-T1020 | 332d | 0d | Contract cost (BOQ x payment milestones) [111563 SAR]; Progress weight (fair EPC distribution, SAR value) [91760 h] | 91,760 | EWR | EDM | EWR | Standard | COM | TC | SAR | - | - | MS7 |
| EDM-T3010 |  | Taking-over application, SAR review and handover - Dammam |  | 10d | 2028-06-11 | 2028-06-22 | EDM-T1100, EDM-T2010, EDM-T2020, EDM-E1140 | 332d | 0d | Contract cost (BOQ x payment milestones) [95625 SAR]; Progress weight (fair EPC distribution, SAR value) [91760 h] | 91,760 | EWR | EDM | EWR | Standard | COM | TC | SAR | - | - | MS7 |
|  | EHF | **Hufuf (EWR)** |  |  | 2028-06-04 | 2028-08-17 |  |  |  |  |  |  |  |  |  |  |  |  |  |  |  |
| EHF-T1100 |  | MS6 SAT complete (10%) - Hufuf | milestone | 0d | 2028-06-22 | 2028-06-22 | EHF-T1020 | 322d | 30d |  |  | EWR | EHF | EWR | Standard | MS | TC | SAR | - | - | MS6 |
| EHF-T3100 |  | MS7 Station accepted - final acceptance and handover (10%) - Hufuf | milestone | 0d | 2028-08-17 | 2028-08-17 | EHF-T3010 | 292d | 270d |  |  | EWR | EHF | EWR | Standard | MS | TC | SAR | - | - | MS7 |

| ID | WBS | Activity | Type | Duration | Start | Finish | Predecessors | Total float | Free float | Resources | Cost | Area | Station | Railway | Priority | Discipline | Responsibility | EPC phase | Design stage | Submittal or approval | Payment milestone |
| --- | --- | --- | --- | --- | --- | --- | --- | --- | --- | --- | --- | --- | --- | --- | --- | --- | --- | --- | --- | --- | --- |
|  | TST | **Testing and commissioning** |  |  | 2028-06-04 | 2028-06-22 |  |  |  |  |  |  |  |  |  |  |  |  |  |  |  |
| EHF-T1010 |  | Pre-commissioning and loop checks - Hufuf |  | 6d | 2028-06-04 | 2028-06-11 | EHF-C2100 | 292d | 0d | Contract cost (BOQ x payment milestones) [113140 SAR]; Progress weight (fair EPC distribution, SAR value) [81220 h] | 81,220 | EWR | EHF | EWR | Standard | TC | ETECHS | COM | - | - | MS6 |
| EHF-T1020 |  | Site acceptance test (SAT) and commissioning - Hufuf |  | 9d | 2028-06-12 | 2028-06-22 | EHF-T1010 | 292d | 0d | Contract cost (BOQ x payment milestones) [169710 SAR]; Progress weight (fair EPC distribution, SAR value) [108500 h] | 108,500 | EWR | EHF | EWR | Standard | TC | ETECHS | COM | - | - | MS6 |
|  | TRN | **Training** |  |  | 2028-06-25 | 2028-07-06 |  |  |  |  |  |  |  |  |  |  |  |  |  |  |  |
| EHF-T2010 |  | Operator and maintenance training - Hufuf |  | 10d | 2028-06-25 | 2028-07-06 | EHF-T1020 | 312d | 20d | Contract cost (BOQ x payment milestones) [42428 SAR]; Progress weight (fair EPC distribution, SAR value) [54560 h] | 54,560 | EWR | EHF | EWR | Standard | TC | ETECHS | COM | - | - | MS7 |
|  | TOA | **Trial operation and acceptance** |  |  | 2028-06-25 | 2028-08-17 |  |  |  |  |  |  |  |  |  |  |  |  |  |  |  |
| EHF-T2020 |  | Trial operation (maximum 45 days) - Hufuf |  | 30d | 2028-06-25 | 2028-08-03 | EHF-T1020 | 292d | 0d | Contract cost (BOQ x payment milestones) [98998 SAR]; Progress weight (fair EPC distribution, SAR value) [81220 h] | 81,220 | EWR | EHF | EWR | Standard | TC | SAR | COM | - | - | MS7 |
| EHF-T3010 |  | Taking-over application, SAR review and handover - Hufuf |  | 10d | 2028-08-06 | 2028-08-17 | EHF-T1100, EHF-T2010, EHF-T2020, EHF-E1140 | 292d | 0d | Contract cost (BOQ x payment milestones) [84855 SAR]; Progress weight (fair EPC distribution, SAR value) [81220 h] | 81,220 | EWR | EHF | EWR | Standard | TC | SAR | COM | - | - | MS7 |
|  | EAB | **Abqaiq (EWR)** |  |  | 2029-01-04 | 2029-03-29 |  |  |  |  |  |  |  |  |  |  |  |  |  |  |  |
| EAB-T1100 |  | MS6 SAT complete (10%) - Abqaiq | milestone | 0d | 2029-01-24 | 2029-01-24 | EAB-T1020 | 168d | 30d |  |  | EWR | EAB | EWR | Standard | TC | SAR | MS | - | - | MS6 |
| EAB-T3100 |  | MS7 Station accepted - final acceptance and handover (10%) - Abqaiq | milestone | 0d | 2029-03-29 | 2029-03-29 | EAB-T3010 | 138d | 116d |  |  | EWR | EAB | EWR | Standard | TC | SAR | MS | - | - | MS7 |
|  | TST | **Testing and commissioning** |  |  | 2029-01-04 | 2029-01-24 |  |  |  |  |  |  |  |  |  |  |  |  |  |  |  |
| EAB-T1010 |  | Pre-commissioning and loop checks - Abqaiq |  | 6d | 2029-01-04 | 2029-01-11 | EAB-C2100 | 138d | 0d | Contract cost (BOQ x payment milestones) [80227 SAR]; Progress weight (fair EPC distribution, SAR value) [57660 h] | 57,660 | EWR | EAB | EWR | Standard | TC | ETECHS | COM | - | - | MS6 |
| EAB-T1020 |  | Site acceptance test (SAT) and commissioning - Abqaiq |  | 9d | 2029-01-14 | 2029-01-24 | EAB-T1010 | 138d | 0d | Contract cost (BOQ x payment milestones) [120341 SAR]; Progress weight (fair EPC distribution, SAR value) [76880 h] | 76,880 | EWR | EAB | EWR | Standard | TC | ETECHS | COM | - | - | MS6 |
|  | TRN | **Training** |  |  | 2029-01-25 | 2029-02-07 |  |  |  |  |  |  |  |  |  |  |  |  |  |  |  |
| EAB-T2010 |  | Operator and maintenance training - Abqaiq |  | 10d | 2029-01-25 | 2029-02-07 | EAB-T1020 | 158d | 20d | Contract cost (BOQ x payment milestones) [30085 SAR]; Progress weight (fair EPC distribution, SAR value) [38440 h] | 38,440 | EWR | EAB | EWR | Standard | TC | ETECHS | COM | - | - | MS7 |
|  | TOA | **Trial operation and acceptance** |  |  | 2029-01-25 | 2029-03-29 |  |  |  |  |  |  |  |  |  |  |  |  |  |  |  |
| EAB-T2020 |  | Trial operation (maximum 45 days) - Abqaiq |  | 30d | 2029-01-25 | 2029-03-15 | EAB-T1020 | 138d | 0d | Contract cost (BOQ x payment milestones) [70199 SAR]; Progress weight (fair EPC distribution, SAR value) [57660 h] | 57,660 | EWR | EAB | EWR | Standard | TC | SAR | COM | - | - | MS7 |
| EAB-T3010 |  | Taking-over application, SAR review and handover - Abqaiq |  | 10d | 2029-03-18 | 2029-03-29 | EAB-T1100, EAB-T2010, EAB-T2020, EAB-E1140 | 138d | 0d | Contract cost (BOQ x payment milestones) [60170 SAR]; Progress weight (fair EPC distribution, SAR value) [57660 h] | 57,660 | EWR | EAB | EWR | Standard | TC | SAR | COM | - | - | MS7 |
|  | HHR | **HHR - Haramain High Speed Rail** |  |  | 2028-06-18 | 2029-08-01 |  |  |  |  |  |  |  |  |  |  |  |  |  |  |  |
|  | HJD | **Jeddah (HHR)** |  |  | 2028-06-18 | 2028-09-21 |  |  |  |  |  |  |  |  |  |  |  |  |  |  |  |
| HJD-T1100 |  | MS6 SAT complete (10%) - Jeddah | milestone | 0d | 2028-07-20 | 2028-07-20 | HJD-T1020 | 297d | 30d |  |  | HHR | HJD | HHR | Standard | TC | SAR | MS | - | - | MS6 |
| HJD-T3100 |  | MS7 Station accepted - final acceptance and handover (10%) - Jeddah | milestone | 0d | 2028-09-21 | 2028-09-21 | HJD-T3010 | 267d | 245d |  |  | HHR | HJD | HHR | Standard | TC | SAR | MS | - | - | MS7 |
|  | TST | **Testing and commissioning** |  |  | 2028-06-18 | 2028-07-20 |  |  |  |  |  |  |  |  |  |  |  |  |  |  |  |
| HJD-T1010 |  | Pre-commissioning and loop checks - Jeddah |  | 10d | 2028-06-18 | 2028-06-29 | HJD-C2100 | 267d | 0d | Contract cost (BOQ x payment milestones) [382035 SAR]; Progress weight (fair EPC distribution, SAR value) [275280 h] | 275,280 | HHR | HJD | HHR | Standard | TC | ETECHS | COM | - | - | MS6 |
| HJD-T1020 |  | Site acceptance test (SAT) and commissioning - Jeddah |  | 15d | 2028-07-02 | 2028-07-20 | HJD-T1010 | 267d | 0d | Contract cost (BOQ x payment milestones) [573053 SAR]; Progress weight (fair EPC distribution, SAR value) [367040 h] | 367,040 | HHR | HJD | HHR | Standard | TC | ETECHS | COM | - | - | MS6 |

| ID | WBS | Activity | Type | Duration | Start | Finish | Predecessors | Total float | Free float | Resources | Cost | Area | Station | Railway | Priority | Discipline | Responsibility | EPC phase | Design stage | Submittal or approval | Payment milestone |
| --- | --- | --- | --- | --- | --- | --- | --- | --- | --- | --- | --- | --- | --- | --- | --- | --- | --- | --- | --- | --- | --- |
|  | TRN | **Training** |  |  | 2028-07-23 | 2028-08-03 |  |  |  |  |  |  |  |  |  |  |  |  |  |  |  |
| HJD-T2010 |  | Operator and maintenance training - Jeddah |  | 10d | 2028-07-23 | 2028-08-03 | HJD-T1020 | 287d | 20d | Contract cost (BOQ x payment milestones) [143263 SAR]; Progress weight (fair EPC distribution, SAR value) [183520 h] | 183,520 | HHR | HJD | HHR | Standard | TC | ETECHS | COM | - | - | MS7 |
|  | TOA | **Trial operation and acceptance** |  |  | 2028-07-23 | 2028-09-21 |  |  |  |  |  |  |  |  |  |  |  |  |  |  |  |
| HJD-T2020 |  | Trial operation (maximum 45 days) - Jeddah |  | 30d | 2028-07-23 | 2028-08-31 | HJD-T1020 | 267d | 0d | Contract cost (BOQ x payment milestones) [334281 SAR]; Progress weight (fair EPC distribution, SAR value) [275280 h] | 275,280 | HHR | HJD | HHR | Standard | TC | SAR | COM | - | - | MS7 |
| HJD-T3010 |  | Taking-over application, SAR review and handover - Jeddah |  | 15d | 2028-09-03 | 2028-09-21 | HJD-T1100, HJD-T2010, HJD-T2020, HJD-E1140 | 267d | 0d | Contract cost (BOQ x payment milestones) [286526 SAR]; Progress weight (fair EPC distribution, SAR value) [275280 h] | 275,280 | HHR | HJD | HHR | Standard | TC | SAR | COM | - | - | MS7 |
|  | HMK | **Makkah (HHR)** |  |  | 2029-01-29 | 2029-05-21 |  |  |  |  |  |  |  |  |  |  |  |  |  |  |  |
| HMK-T1100 |  | MS6 SAT complete (10%) - Makkah | milestone | 0d | 2029-03-12 | 2029-03-12 | HMK-T1020 | 136d | 30d |  |  | HHR | HMK | HHR | Standard | TC | SAR | MS | - | - | MS6 |
| HMK-T3100 |  | MS7 Station accepted - final acceptance and handover (10%) - Makkah | milestone | 0d | 2029-05-21 | 2029-05-21 | HMK-T3010 | 106d | 84d |  |  | HHR | HMK | HHR | Standard | TC | SAR | MS | - | - | MS7 |
|  | TST | **Testing and commissioning** |  |  | 2029-01-29 | 2029-03-12 |  |  |  |  |  |  |  |  |  |  |  |  |  |  |  |
| HMK-T1010 |  | Pre-commissioning and loop checks - Makkah |  | 10d | 2029-01-29 | 2029-02-18 | HMK-C2100 | 106d | 0d | Contract cost (BOQ x payment milestones) [388404 SAR]; Progress weight (fair EPC distribution, SAR value) [279620 h] | 279,620 | HHR | HMK | HHR | Standard | TC | ETECHS | COM | - | - | MS6 |
| HMK-T1020 |  | Site acceptance test (SAT) and commissioning - Makkah |  | 15d | 2029-02-19 | 2029-03-12 | HMK-T1010 | 106d | 0d | Contract cost (BOQ x payment milestones) [582606 SAR]; Progress weight (fair EPC distribution, SAR value) [372620 h] | 372,620 | HHR | HMK | HHR | Standard | TC | ETECHS | COM | - | - | MS6 |
|  | TRN | **Training** |  |  | 2029-03-13 | 2029-03-26 |  |  |  |  |  |  |  |  |  |  |  |  |  |  |  |
| HMK-T2010 |  | Operator and maintenance training - Makkah |  | 10d | 2029-03-13 | 2029-03-26 | HMK-T1020 | 126d | 20d | Contract cost (BOQ x payment milestones) [145651 SAR]; Progress weight (fair EPC distribution, SAR value) [186620 h] | 186,620 | HHR | HMK | HHR | Standard | TC | ETECHS | COM | - | - | MS7 |
|  | TOA | **Trial operation and acceptance** |  |  | 2029-03-13 | 2029-05-21 |  |  |  |  |  |  |  |  |  |  |  |  |  |  |  |
| HMK-T2020 |  | Trial operation (maximum 45 days) - Makkah |  | 30d | 2029-03-13 | 2029-04-30 | HMK-T1020 | 106d | 0d | Contract cost (BOQ x payment milestones) [339853 SAR]; Progress weight (fair EPC distribution, SAR value) [279620 h] | 279,620 | HHR | HMK | HHR | Standard | TC | SAR | COM | - | - | MS7 |
| HMK-T3010 |  | Taking-over application, SAR review and handover - Makkah |  | 15d | 2029-05-01 | 2029-05-21 | HMK-T1100, HMK-T2010, HMK-T2020, HMK-E1140 | 106d | 0d | Contract cost (BOQ x payment milestones) [291303 SAR]; Progress weight (fair EPC distribution, SAR value) [279620 h] | 279,620 | HHR | HMK | HHR | Standard | TC | SAR | COM | - | - | MS7 |
|  | HKA | **KAEC (HHR)** |  |  | 2029-04-15 | 2029-07-26 |  |  |  |  |  |  |  |  |  |  |  |  |  |  |  |
| HKA-T1100 |  | MS6 SAT complete (10%) - KAEC | milestone | 0d | 2029-05-24 | 2029-05-24 | HKA-T1020 | 88d | 30d |  |  | HHR | HKA | HHR | Standard | TC | SAR | MS | - | - | MS6 |
| HKA-T3100 |  | MS7 Station accepted - final acceptance and handover (10%) - KAEC | milestone | 0d | 2029-07-26 | 2029-07-26 | HKA-T3010 | 58d | 36d |  |  | HHR | HKA | HHR | Standard | TC | SAR | MS | - | - | MS7 |
|  | TST | **Testing and commissioning** |  |  | 2029-04-15 | 2029-05-24 |  |  |  |  |  |  |  |  |  |  |  |  |  |  |  |
| HKA-T1010 |  | Pre-commissioning and loop checks - KAEC |  | 10d | 2029-04-15 | 2029-05-03 | HKA-C2100 | 58d | 0d | Contract cost (BOQ x payment milestones) [222575 SAR]; Progress weight (fair EPC distribution, SAR value) [159960 h] | 159,960 | HHR | HKA | HHR | Standard | TC | ETECHS | COM | - | - | MS6 |
| HKA-T1020 |  | Site acceptance test (SAT) and commissioning - KAEC |  | 15d | 2029-05-06 | 2029-05-24 | HKA-T1010 | 58d | 0d | Contract cost (BOQ x payment milestones) [333863 SAR]; Progress weight (fair EPC distribution, SAR value) [213900 h] | 213,900 | HHR | HKA | HHR | Standard | TC | ETECHS | COM | - | - | MS6 |
|  | TRN | **Training** |  |  | 2029-05-27 | 2029-06-07 |  |  |  |  |  |  |  |  |  |  |  |  |  |  |  |
| HKA-T2010 |  | Operator and maintenance training - KAEC |  | 10d | 2029-05-27 | 2029-06-07 | HKA-T1020 | 78d | 20d | Contract cost (BOQ x payment milestones) [83466 SAR]; Progress weight (fair EPC distribution, SAR value) [106640 h] | 106,640 | HHR | HKA | HHR | Standard | TC | ETECHS | COM | - | - | MS7 |

| ID | WBS | Activity | Type | Duration | Start | Finish | Predecessors | Total float | Free float | Resources | Cost | Area | Station | Railway | Priority | Discipline | Responsibility | EPC phase | Design stage | Submittal or approval | Payment milestone |
| --- | --- | --- | --- | --- | --- | --- | --- | --- | --- | --- | --- | --- | --- | --- | --- | --- | --- | --- | --- | --- | --- |
|  | TOA | **Trial operation and acceptance** |  |  | 2029-05-27 | 2029-07-26 |  |  |  |  |  |  |  |  |  |  |  |  |  |  |  |
| HKA-T2020 |  | Trial operation (maximum 45 days) - KAEC |  | 30d | 2029-05-27 | 2029-07-05 | HKA-T1020 | 58d | 0d | Contract cost (BOQ x payment milestones) [194753 SAR]; Progress weight (fair EPC distribution, SAR value) [159960 h] | 159,960 | HHR | HKA | HHR | Standard | TC | SAR | COM | - | - | MS7 |
| HKA-T3010 |  | Taking-over application, SAR review and handover - KAEC |  | 15d | 2029-07-08 | 2029-07-26 | HKA-T1100, HKA-T2010, HKA-T2020, HKA-E1140 | 58d | 0d | Contract cost (BOQ x payment milestones) [166931 SAR]; Progress weight (fair EPC distribution, SAR value) [159960 h] | 159,960 | HHR | HKA | HHR | Standard | TC | SAR | COM | - | - | MS7 |
|  | HMD | **Madinah (HHR)** |  |  | 2029-04-19 | 2029-08-01 |  |  |  |  |  |  |  |  |  |  |  |  |  |  |  |
| HMD-T1100 |  | MS6 SAT complete (10%) - Madinah | milestone | 0d | 2029-05-30 | 2029-05-30 | HMD-T1020 | 84d | 30d |  |  | HHR | HMD | HHR | Standard | TC | SAR | MS | - | - | MS6 |
| HMD-T3100 |  | MS7 Station accepted - final acceptance and handover (10%) - Madinah | milestone | 0d | 2029-08-01 | 2029-08-01 | HMD-T3010 | 54d | 32d |  |  | HHR | HMD | HHR | Standard | TC | SAR | MS | - | - | MS7 |
|  | TST | **Testing and commissioning** |  |  | 2029-04-19 | 2029-05-30 |  |  |  |  |  |  |  |  |  |  |  |  |  |  |  |
| HMD-T1010 |  | Pre-commissioning and loop checks - Madinah |  | 10d | 2029-04-19 | 2029-05-09 | HMD-C2100 | 54d | 0d | Contract cost (BOQ x payment milestones) [222485 SAR]; Progress weight (fair EPC distribution, SAR value) [159960 h] | 159,960 | HHR | HMD | HHR | Standard | TC | ETECHS | COM | - | - | MS6 |
| HMD-T1020 |  | Site acceptance test (SAT) and commissioning - Madinah |  | 15d | 2029-05-10 | 2029-05-30 | HMD-T1010 | 54d | 0d | Contract cost (BOQ x payment milestones) [333728 SAR]; Progress weight (fair EPC distribution, SAR value) [213280 h] | 213,280 | HHR | HMD | HHR | Standard | TC | ETECHS | COM | - | - | MS6 |
|  | TRN | **Training** |  |  | 2029-05-31 | 2029-06-13 |  |  |  |  |  |  |  |  |  |  |  |  |  |  |  |
| HMD-T2010 |  | Operator and maintenance training - Madinah |  | 10d | 2029-05-31 | 2029-06-13 | HMD-T1020 | 74d | 20d | Contract cost (BOQ x payment milestones) [83432 SAR]; Progress weight (fair EPC distribution, SAR value) [106640 h] | 106,640 | HHR | HMD | HHR | Standard | TC | ETECHS | COM | - | - | MS7 |
|  | TOA | **Trial operation and acceptance** |  |  | 2029-05-31 | 2029-08-01 |  |  |  |  |  |  |  |  |  |  |  |  |  |  |  |
| HMD-T2020 |  | Trial operation (maximum 45 days) - Madinah |  | 30d | 2029-05-31 | 2029-07-11 | HMD-T1020 | 54d | 0d | Contract cost (BOQ x payment milestones) [194675 SAR]; Progress weight (fair EPC distribution, SAR value) [159960 h] | 159,960 | HHR | HMD | HHR | Standard | TC | SAR | COM | - | - | MS7 |
| HMD-T3010 |  | Taking-over application, SAR review and handover - Madinah |  | 15d | 2029-07-12 | 2029-08-01 | HMD-T1100, HMD-T2010, HMD-T2020, HMD-E1140 | 54d | 0d | Contract cost (BOQ x payment milestones) [166864 SAR]; Progress weight (fair EPC distribution, SAR value) [159960 h] | 159,960 | HHR | HMD | HHR | Standard | TC | SAR | COM | - | - | MS7 |

## Activity codes

| Code | Value | Meaning |
| --- | --- | --- |
| Area | PRJ | Project level |
| Area | RYD | Riyadh priority |
| Design stage | - | Not a design stage |
| Design stage | As-built | As-built and O&M |
| Design stage | Concept | Concept design |
| Design stage | Detailed | Detailed design |
| Design stage | HCIS | HCIS documentation |
| Design stage | IFC | IFC and shop drawings |
| Design stage | Preliminary | Preliminary design |
| Design stage | Survey | Site survey |
| Discipline | ACC | Access control and intercom |
| Discipline | CCTV | CCTV system |
| Discipline | CIVIL | Civil works |
| Discipline | DOCS | Design documentation |
| Discipline | PM | Project management and logistics |
| Discipline | TC | Testing, commissioning and handover |
| Discipline | UPSNET | UPS, network and cabinets |
| Discipline | VMS | Video management and wall |
| EPC phase | COM | Commissioning and handover |
| EPC phase | CON | Construction |
| EPC phase | ENG | Engineering |
| EPC phase | MS | Milestone |
| EPC phase | PMG | Project management |
| EPC phase | PRO | Procurement |
| Payment milestone | - | Not a payment milestone |
| Payment milestone | MS1 | MS1 Mobilization |
| Payment milestone | MS2 | MS2 Engineering submittal |
| Payment milestone | MS3 | MS3 SAR approval of engineering |
| Payment milestone | MS4 | MS4 Material delivery |
| Payment milestone | MS5 | MS5 Installation |
| Payment milestone | MS6 | MS6 Testing and commissioning (SAT) |
| Payment milestone | MS7 | MS7 Final acceptance and handover |
| Railway | ALL | All railways |
| Responsibility | SAR/HCIS | SAR and HCIS |
| Station | EAB | Abqaiq (EWR) |
| Station | EDM | Dammam (EWR) |
| Station | EHF | Hufuf (EWR) |
| Station | ERY | Riyadh (Malaz) (EWR) |
| Station | HJD | Jeddah (HHR) |
| Station | HKA | KAEC (HHR) |
| Station | HMD | Madinah (HHR) |
| Station | HMK | Makkah (HHR) |
| Station | NHL | Hail (NSR) |
| Station | NJF | Al Jouf (NSR) |
| Station | NMJ | Al Majma'ah (NSR) |
| Station | NQR | Al Qurayyat (NSR) |
| Station | NQS | Al Qassim (NSR) |
| Station | NRY | Riyadh (Thumamah) (NSR) |
| Station | PRJ | Project level |
| Submittal or approval | - | Not applicable |
